# SRRII Production Schedule

How a schedule from MS Project changed from version to version. A marks actual dates.

## Version 1 (data date 2002-10-28, saved 2003-02-17, file Simpsons2 Production Schedule13.6.mpp)

| ID | WBS | Task | Duration | Start | Finish | Predecessors | Complete | Total float | Constraint |
| --- | --- | --- | --- | --- | --- | --- | --- | --- | --- |
| 2 | 1 | **DESIGN TASKS** | 200.88d? | 2002-04-16 A | 2003-01-22 |  | 22% | 118.12d |  |
| 3 | 2 | **Milestone 7 (May 15th)** | 20d | 2002-04-16 A | 2002-05-14 |  | 38% | 299d |  |
| 4 |  | All mission gameplay design (1st pass) | 4d | 2002-04-16 | 2002-04-22 |  |  | 299d |  |
| 5 |  | Updated camera design | 4d | 2002-04-22 | 2002-04-26 | 4 |  | 299d |  |
| 6 |  | Collate updated design doc, and write MS report | 4d | 2002-04-26 | 2002-05-02 | 5 |  | 299d |  |
| 7 |  | Final mission scripter section (INTERNAL, not for FOX) | 4d | 2002-05-02 | 2002-05-08 | 6 |  | 299d |  |
| 8 |  | Final collectibles section (INTERNAL, not for FOX) | 4d | 2002-05-08 | 2002-05-14 | 7 |  | 299d |  |
| 9 |  | Finalize dialog template/naming conventions (INTERNAL, not for FOX) | 5d | 2002-04-16 A | 2002-04-23 |  | 75% | 310.25d |  |
| 10 |  | Front End design, including all TRC requirements | 5d | 2002-04-23 A | 2002-04-30 | 9 | 75% | 306.5d |  |
| 11 |  | Controller design | 10d | 2002-04-30 A | 2002-05-14 | 10 | 75% | 299d |  |
| 12 | 3 | **Milestone 8 (April 15th)** | 20d | 2002-05-16 | 2002-06-14 |  |  | 277d |  |
| 13 |  | All mission gameplay design (2nd pass) | 4d | 2002-05-16 | 2002-05-23 |  |  | 277d | start no earlier than 2002-05-16 |
| 14 |  | Final Multiplayer design | 4d | 2002-05-23 | 2002-05-29 | 13 |  | 277d |  |
| 15 |  | Collate updated design doc, and write MS report | 4d | 2002-05-29 | 2002-06-04 | 14 |  | 277d |  |
| 16 |  | Initial driving engine review (INTERNAL, not for FOX) | 4d | 2002-06-04 | 2002-06-10 | 15 |  | 277d |  |
| 17 |  | 1st pass camera tuning (INTERNAL, not for FOX) | 4d | 2002-06-10 | 2002-06-14 | 16 |  | 277d |  |
| 18 |  | Final Characters/Vehicles section | 2d | 2002-05-16 | 2002-05-21 |  |  | 277d | start no earlier than 2002-05-16 |
| 19 |  | Final Front End design | 3d | 2002-05-21 | 2002-05-24 | 18 |  | 277d |  |
| 20 |  | Final Gameplay Controls section | 4d | 2002-05-24 | 2002-05-30 | 19 |  | 277d |  |
| 21 |  | Final Presentation section | 3d | 2002-05-30 | 2002-06-04 | 20 |  | 277d |  |
| 22 |  | Final Interface (HUD) section | 3d | 2002-06-04 | 2002-06-07 | 21 |  | 277d |  |
| 23 |  | 1st pass camera tuning (INTERNAL, not for FOX) | 5d | 2002-06-07 | 2002-06-14 | 22 |  | 277d |  |
| 24 | 4 | **Milestone 9 (July 15th)** | 20d | 2002-06-17 | 2002-07-15 |  |  | 256d |  |
| 25 |  | Driving engine tuning | 5d | 2002-06-17 | 2002-06-24 |  |  | 256d | start no earlier than 2002-06-17 |
| 26 |  | 1st Pass Tuning for 8 cars | 5d | 2002-06-24 | 2002-07-01 | 25 |  | 256d |  |
| 27 |  | Test world builder/trigger volume pipeline (INTERNAL, not for FOX) | 5d | 2002-07-01 | 2002-07-08 | 26 |  | 256d |  |
| 28 |  | Test mission scripter (INTERNAL, not for FOX) | 5d | 2002-07-08 | 2002-07-15 | 27 |  | 256d |  |
| 29 |  | 1st pass Collision Tuning | 8d | 2002-06-17 | 2002-06-27 |  |  | 256d | start no earlier than 2002-06-17 |
| 30 |  | 1st pass Damage States Tuning | 4d | 2002-06-27 | 2002-07-03 | 29 |  | 256d |  |
| 31 |  | 1st pass controller tuning | 8d | 2002-07-03 | 2002-07-15 | 30 |  | 256d |  |
| 32 | 5 | **Milestone 10 (Aug 15th)** | 1d? | 2002-04-16 | 2002-04-17 |  |  | 318d |  |
| 33 |  | Designer Track Sign-Off | 1d? | 2002-04-16 | 2002-04-17 |  |  | 317d |  |
| 34 |  | Test of All Mission Types (1st Pass) | 1d? | 2002-04-16 | 2002-04-17 |  |  | 317d |  |
| 35 |  | 1st Pass Tuning for 8 Vehicles | 1d? | 2002-04-16 | 2002-04-17 |  |  | 317d |  |
| 36 |  | Start Creating Real Mission Data | 1d? | 2002-04-16 | 2002-04-17 |  |  | 317d |  |
| 37 |  | Controller Tuning (1st Pass) | 1d? | 2002-04-16 | 2002-04-17 |  |  | 317d |  |
| 38 |  | Camera Tuning (1st Pass) | 1d? | 2002-04-16 | 2002-04-17 |  |  | 317d |  |
| 39 | 6 | **Milestone 11 (Sep 15th)** | 1d? | 2002-04-16 | 2002-04-17 |  |  | 318d |  |
| 40 |  | Global AI Tuning (1st Pass) | 1d? | 2002-04-16 | 2002-04-17 |  |  | 317d |  |
| 41 |  | Multiplayer Data Placed | 1d? | 2002-04-16 | 2002-04-17 |  |  | 317d |  |
| 42 |  | Traffic System Tuning (1st Pass) | 1d? | 2002-04-16 | 2002-04-17 |  |  | 317d |  |
| 43 |  | Collectibles/Conversation Tuning (1st Pass) | 1d? | 2002-04-16 | 2002-04-17 |  |  | 317d |  |
| 44 |  | Counter Measures Tuning (1st Pass) | 1d? | 2002-04-16 | 2002-04-17 |  |  | 317d |  |
| 45 | 7 | **Milestone 12 (Oct 15th)** | 15d? | 2002-04-16 | 2002-05-07 |  |  | 304d |  |
| 46 |  | improve gameplay in level 1 missions | 5d | 2002-04-16 | 2002-04-23 |  |  | 308d |  |
| 47 |  | all mission data for level 4 complete | 1d? | 2002-04-23 | 2002-04-24 | 46 |  | 308d |  |
| 48 |  | all mission data for level 7 complete | 3d | 2002-04-24 | 2002-04-29 | 47 |  | 308d |  |
| 49 |  | improvements to vehicle AI | 1d? | 2002-04-29 | 2002-04-30 | 48 |  | 308d |  |
| 50 |  | final AI traffic behaviour implemented | 1d? | 2002-04-30 | 2002-05-01 | 49 |  | 308d |  |
| 51 |  | Sound file naming-rest of today and part of tomorrow | 2d | 2002-04-16 | 2002-04-18 |  |  | 304d |  |
| 52 |  | Sound file naming-rest of today and part of tomorrow | 1d? | 2002-04-18 | 2002-04-19 | 51 |  | 304d |  |
| 53 |  | Finish level 4 (with Joe) 1 day | 3d | 2002-04-19 | 2002-04-24 | 52 |  | 304d |  |
| 54 |  | Finish level 7 (with Joe) 3 days | 5d | 2002-04-24 | 2002-05-01 | 53 |  | 304d |  |
| 55 |  | Develope/tune level 1 1 week | 1d? | 2002-05-01 | 2002-05-02 | 54 |  | 304d |  |
| 56 |  | Dialogue for Homer 1 day | 1d? | 2002-05-02 | 2002-05-03 | 55 |  | 304d |  |
| 57 |  | Dialogue for Bart (if time) 1 day | 1d? | 2002-05-03 | 2002-05-06 | 56 |  | 304d |  |
| 58 |  | Dynamically loading textures- dependent on coder support. | 1d? | 2002-05-06 | 2002-05-07 | 57 |  | 304d |  |
| 59 | 7.14 | **Level Art - Downtown** | 11d? | 2002-04-16 | 2002-05-01 |  |  | 305d |  |
| 60 |  | all hailing points placed in the level | 1d? | 2002-04-16 | 2002-04-17 |  |  | 305d |  |
| 61 |  | all food icons placed in the level | 1d? | 2002-04-17 | 2002-04-18 | 60 |  | 305d |  |
| 62 |  | all destructible cameras placed in the level | 1d? | 2002-04-18 | 2002-04-19 | 61 |  | 305d |  |
| 63 |  | all death volumes placed in the level | 1d? | 2002-04-19 | 2002-04-22 | 62 |  | 305d |  |
| 64 |  | all pedestrians placed in the level | 3d | 2002-04-22 | 2002-04-25 | 63 |  | 305d |  |
| 65 |  | Placement of track data | 3d | 2002-04-25 | 2002-04-30 | 64 |  | 305d |  |
| 66 |  | Collector Cards | 1d? | 2002-04-30 | 2002-05-01 | 65 |  | 305d |  |
| 67 | 7.15 | **Level Art -- Suburbs** | 1d? | 2002-05-01 | 2002-05-02 | 66 |  | 305d |  |
| 68 |  | all pedestrians placed in the level | 1d? | 2002-05-01 | 2002-05-02 |  |  | 305d |  |
| 69 |  | changing placement of card in level1 | 1d? | 2002-05-02 | 2002-05-03 | 68 |  | 305d |  |
| 70 |  | placement of static cameras for entering and exiting interiors | 1d? | 2002-05-03 | 2002-05-06 | 69 |  | 305d |  |
| 71 |  | design what happens when user character gets hit by car | 0.5d | 2002-04-16 | 2002-04-16 |  |  | 304.5d |  |

| ID | WBS | Task | Duration | Start | Finish | Predecessors | Complete | Total float | Constraint |
| --- | --- | --- | --- | --- | --- | --- | --- | --- | --- |
| 72 |  | first pass engine sounds -- on-going with sound | 1d? | 2002-04-16 | 2002-04-17 | 71 |  | 304.5d |  |
| 73 |  | environmental/ambient sounds working in all levels -- on-going with sound | 6d | 2002-04-17 | 2002-04-25 | 72 |  | 304.5d |  |
| 74 |  | environmental/ambient sounds working in all available interiors -- on-going with sound | 5d | 2002-04-25 | 2002-05-02 | 73 |  | 304.5d |  |
| 75 |  | design for camera collisions and occlusion | 1d? | 2002-05-02 | 2002-05-03 | 74 |  | 304.5d |  |
| 76 |  | address collector card/camera placement design issues | 1d? | 2002-05-03 | 2002-05-06 | 75 |  | 304.5d |  |
| 77 | 8 | **Milestone 13 (Nov 15th)** | 33.5d? | 2002-10-16 A | 2002-12-02 |  | 60% | 155.5d |  |
| 78 |  | Metagame Design | 0d | 2002-10-16 A | 2002-10-16 A |  | 100% |  | start no earlier than 2002-10-16 |
| 79 |  | Rewards Design | 0d | 2002-10-18 A | 2002-10-18 A | 78 | 100% |  |  |
| 80 | 1.7.3 | **Driving Mini-Games** | 5d? | 2002-10-22 A | 2002-10-29 | 79 | 20% | 180d |  |
| 81 |  | Driving Mini-Games Design | 1d? | 2002-10-22 A | 2002-10-23 A |  | 100% |  | start no earlier than 2002-10-16 |
| 82 |  | Mini-Track #1 Design | 1d? | 2002-10-23 | 2002-10-24 | 81 |  | 180d |  |
| 83 |  | Mini-Track #2 Design | 1d | 2002-10-24 | 2002-10-25 | 82 |  | 180d |  |
| 84 |  | Mini-Track #3 Design | 1d | 2002-10-25 | 2002-10-28 | 83 |  | 180d |  |
| 85 |  | Gameplay Design | 1d | 2002-10-28 | 2002-10-29 | 84 |  | 180d |  |
| 86 |  | Reward Design | 0d | 2002-10-22 A | 2002-10-22 A | 79 | 100% |  |  |
| 87 |  | HUD/Overlay Design | 2d | 2002-10-24 A | 2002-10-28 A | 86 | 100% |  |  |
| 88 |  | FMV Design Revisions for cut Mini-Boss encounters | 0d? | 2002-10-28 A | 2002-10-28 A | 87 | 100% |  |  |
| 89 |  | Presentation High-Level Design | 3d | 2002-10-29 A | 2002-11-01 | 88 | 50% | 176d |  |
| 90 |  | Collectables Design | 1d? | 2002-11-01 | 2002-11-04 | 89 |  | 176d |  |
| 91 |  | Collector Card High-Level Design | 3d | 2002-10-16 A | 2002-10-21 A |  | 100% |  | start no earlier than 2002-10-16 |
| 92 |  | Collector Card Game Design | 3d | 2002-10-21 A | 2002-10-24 A | 91 | 100% |  |  |
| 93 |  | AI Design for Collector Card Game | 2d | 2002-10-24 A | 2002-10-28 A | 92 | 100% |  |  |
| 94 |  | 2D Brainstorming | 2d | 2002-10-28 A | 2002-10-30 A | 93 | 100% |  |  |
| 95 |  | 2D Game Design | 4d | 2002-10-30 A | 2002-11-05 A | 94 | 100% |  |  |
| 96 | 1.7.14 | **Dialogue** | 11d | 2002-11-05 A | 2002-11-20 | 95 | 82% | 164d |  |
| 97 |  | Write Dialog for Driving Mini-Games | 2d | 2002-11-05 A | 2002-11-07 A |  | 100% |  |  |
| 98 |  | Write Dialog for 2D Games | 2d | 2002-11-07 | 2002-11-11 | 97 |  | 171d |  |
| 99 |  | Write Dialog for Collector Card Game | 2d | 2002-11-11 A | 2002-11-13 A | 98 | 100% |  |  |
| 100 |  | Revise Dialog for Missions in Level 1 and 2 | 1d | 2002-11-13 A | 2002-11-14 A | 99 | 100% |  |  |
| 101 |  | Revise Dialog for Mission in Level 3, 4, 5, 6 and 7 | 3d | 2002-11-14 A | 2002-11-19 A | 100 | 100% |  |  |
| 102 |  | Revise Dialog for Boss Missions | 1d | 2002-11-19 A | 2002-11-20 A | 101 | 100% |  |  |
| 103 |  | High-Level Design Revision for Driving Model | 3d | 2002-10-29 A | 2002-11-01 A | 85 | 100% |  |  |
| 104 |  | Tune Vehicle #1 (MS13) | 1.5d | 2002-11-01 A | 2002-11-04 A | 103 | 100% |  |  |
| 105 |  | Tune Vehicle #2 (MS13) | 0d | 2002-11-04 A | 2002-11-04 A | 104 | 100% |  |  |
| 106 |  | Tune Vehicle #3 (MS13) | 0d | 2002-11-05 A | 2002-11-05 A | 105 | 100% |  |  |
| 107 |  | Tune Vehicle #4 (MS13) | 0.5d | 2002-11-05 | 2002-11-05 | 106 |  | 167.1d |  |
| 108 |  | Tune Vehicle #5 (MS13) | 0.5d | 2002-11-05 | 2002-11-06 | 107 |  | 167.1d |  |
| 109 |  | Tune Vehicle #6 (MS13) | 0.5d | 2002-11-06 | 2002-11-06 | 108 |  | 167.1d |  |
| 110 |  | High-Level Design Revisions to AI (MS13) | 3d | 2002-11-07 A | 2002-11-12 | 109 | 60% | 164.8d |  |
| 111 |  | Traffic AI Tuning (MS13) | 1d | 2002-11-12 | 2002-11-13 | 110 |  | 164.8d |  |
| 112 |  | Pedestrian AI Tuning | 1d | 2002-11-13 | 2002-11-14 | 111 |  | 164.8d |  |
| 113 |  | Racing AI Tuning (MS13) | 2d | 2002-11-14 | 2002-11-18 | 112 |  | 164.8d |  |
| 114 |  | Design Secondary Mission Objectives | 2d | 2002-11-18 A | 2002-11-20 | 113 | 40% | 164d |  |
| 115 |  | First High-Level Design Revisions to Seaside | 1d? | 2002-11-20 A | 2002-11-21 A | 114 | 100% |  |  |
| 116 |  | Revise Mission Design | 3d | 2002-11-21 A | 2002-11-26 A | 115 | 100% |  |  |
| 117 |  | Implement Level #2 -- Mission #1 - 7 | 3.5d | 2002-10-16 A | 2002-10-21 A |  | 100% |  | start no earlier than 2002-10-16 |
| 118 |  | Implement Level #3 -- Mission #1 | 2d | 2002-10-21 A | 2002-10-23 | 117 | 80% | 177.05d |  |
| 119 |  | Implement Level #3 -- Mission #2 | 2d | 2002-10-23 A | 2002-10-25 | 118 | 50% | 176.05d |  |
| 120 |  | Implement Level #3 -- Mission #3 | 1d | 2002-10-25 A | 2002-10-28 | 119 | 50% | 175.55d |  |
| 121 |  | Implement Level #3 -- Mission #4 | 1d | 2002-10-28 A | 2002-10-29 | 120 | 50% | 175.05d |  |
| 122 |  | Implement Level #3 -- Mission #5 | 1d | 2002-10-29 | 2002-10-30 | 121 |  | 175.05d |  |
| 123 |  | Implement Level #3 -- Mission #6 | 0.5d | 2002-10-30 | 2002-10-31 | 122 |  | 175.05d |  |
| 124 |  | Implement Level #3 -- Mission #7 | 0.5d | 2002-10-31 | 2002-10-31 | 123 |  | 175.05d |  |
| 125 |  | Implement Level #4 -- Mission #1 - 7 | 3.5d | 2002-10-31 A | 2002-11-06 | 124 | 30% | 174d |  |
| 126 |  | High-Level Design Revision to Jumping Puzzles | 3d | 2002-10-16 A | 2002-10-21 A |  | 100% |  | start no earlier than 2002-10-16 |
| 127 |  | Build Level #2 -- Jumping Puzzle #1 - 7 | 3.5d | 2002-10-21 A | 2002-10-24 | 126 | 90% | 174.03d |  |
| 128 |  | Build Level #3 -- Jumping Puzzle #1 | 3.5d | 2002-10-24 A | 2002-10-30 | 127 | 15% | 173.5d |  |
| 129 |  | Build Level #4 -- Jumping Puzzle #1 | 3.5d | 2002-10-30 | 2002-11-04 | 128 |  | 173.5d |  |
| 130 |  | Build Revised Mini-Boss Jumping Puzzle #1 | 2d | 2002-11-04 | 2002-11-06 | 129 |  | 173.5d |  |
| 131 |  | Design Revision to Special Effects | 2d | 2002-11-04 A | 2002-11-06 A | 90 | 100% |  |  |
| 132 |  | Design New Vehicles | 2d | 2002-11-06 A | 2002-11-08 A | 131 | 100% |  |  |
| 133 |  | Design Alternate Clothing | 2d | 2002-11-08 A | 2002-11-12 A | 132 | 100% |  |  |
| 134 |  | Traffic Placement -- Level #2 | 2d | 2002-11-06 A | 2002-11-08 A | 130 | 100% |  |  |
| 135 |  | Traffic Placement -- Level #3 | 2d | 2002-11-08 A | 2002-11-12 | 134 | 90% | 167.5d |  |
| 136 |  | Traffic Placement -- Level #4 | 2d | 2002-11-12 | 2002-11-14 | 135 |  | 167.5d |  |
| 137 |  | Pedestrian Placement -- Level #1 | 1d | 2002-11-14 A | 2002-11-15 A | 136 | 100% |  |  |
| 138 |  | Pedestrian Placement -- Level #2 | 1d | 2002-11-15 A | 2002-11-18 A | 137 | 100% |  |  |
| 139 |  | Pedestrian Placement -- Level #3 | 1d | 2002-11-18 | 2002-11-19 | 138 |  | 164.5d |  |
| 140 |  | Food Placement -- Level #1 | 0.5d | 2002-11-19 A | 2002-11-20 A | 139 | 100% |  |  |
| 141 |  | Food Placement -- Level #2 | 0.5d | 2002-11-20 A | 2002-11-20 A | 140 | 100% |  |  |

| ID | WBS | Task | Duration | Start | Finish | Predecessors | Complete | Total float | Constraint |
| --- | --- | --- | --- | --- | --- | --- | --- | --- | --- |
| 142 |  | Food Placement -- Level #3 | 0.5d | 2002-11-20 A | 2002-11-21 A | 141 | 100% |  |  |
| 143 |  | Camera Placement -- Level #1 | 1d | 2002-11-21 | 2002-11-22 | 142 |  | 156.55d |  |
| 144 |  | Camera Placement -- Level #2 | 1d | 2002-11-22 | 2002-11-25 | 143 |  | 156.55d |  |
| 145 |  | Camera Placement -- Level #3 | 1d | 2002-11-25 | 2002-11-26 | 144 |  | 156.55d |  |
| 146 |  | Special Collectable Placement -- Level #1 | 1d | 2002-11-26 | 2002-11-27 | 145 |  | 156.55d |  |
| 147 |  | Special Collectable Placement -- Level #2 | 1d | 2002-11-27 A | 2002-11-28 | 146 | 90% | 155.65d |  |
| 148 |  | Special Collectable Placement -- Level #3 | 1d | 2002-11-28 A | 2002-11-29 | 147 | 15% | 155.5d |  |
| 149 |  | On-Foot Camera Tuning -- Level #1 | 0.5d | 2002-11-29 | 2002-11-29 | 148 |  | 155.5d |  |
| 150 |  | On-Foot Camera Tuning -- Level #2 | 0.5d | 2002-11-29 | 2002-12-02 | 149 |  | 155.5d |  |
| 151 |  | On-Foot Camera Tuning -- Level #3 | 0.5d | 2002-12-02 | 2002-12-02 | 150 |  | 155.5d |  |
| 152 |  | Driving Gameplay Camera Design | 1d? | 2002-11-26 | 2002-11-27 | 116 |  | 158d |  |
| 153 |  | Driving Gameplay Camera Tuning Template | 1d? | 2002-11-27 | 2002-11-28 | 152 |  | 158d |  |
| 154 |  | Presentation Camera Design | 1d? | 2002-11-12 | 2002-11-13 | 133 |  | 169d |  |
| 155 | 8 | **Milestone 14 (Dec 15th)** | 154d? | 2002-04-16 | 2002-11-19 |  |  | 165d |  |
| 163 |  | Dialogue Piping & Event Creation | 1d | 2002-11-18 | 2002-11-19 |  |  | 165d | start no earlier than 2002-11-18 |
| 174 |  | Dialogue Piping & Event Creation | 1d? | 2002-11-18 | 2002-11-19 |  |  | 165d | start no earlier than 2002-11-18 |
| 228 |  | Milestone 15 - Alpha (Jan 15th) | 1d? | 2002-04-16 | 2002-04-17 |  |  | 317d |  |
| 229 |  | Milestone 16 - (Feb 15th) | 1d? | 2002-04-16 | 2002-04-17 |  |  | 317d |  |
| 230 |  | Milestone 17 - (March 15th) | 1d? | 2002-04-16 | 2002-04-17 |  |  | 317d |  |
| 231 |  | Milestone 18 - (April 15th) | 1d? | 2003-01-22 | 2003-01-22 |  |  | 117.12d | start no earlier than 2003-01-22 |
| 232 |  | Milestone 19 - (May 15th) | 1d? | 2003-01-22 | 2003-01-22 |  |  | 117.12d | start no earlier than 2003-01-22 |
| 233 |  | Milestone 20 - (June 15th) | 1d? | 2003-01-22 | 2003-01-22 |  |  | 117.12d | start no earlier than 2003-01-22 |
| 236 | 10 | **ART TASKS** | 280d? | 2002-04-16 A | 2003-05-12 |  | 18% | 39d |  |
| 237 | 11 | **Milestone 7 (May 15th)** | 21d | 2002-04-16 A | 2002-05-15 |  | 55% | 298d |  |
| 238 |  | Preliminary FE Concept Design | 21d | 2002-04-16 | 2002-05-15 |  |  | 298d |  |
| 239 | 11.2 | **World Building** | 20d | 2002-04-16 A | 2002-05-14 |  | 54% | 299d |  |
| 240 | 11.2.1 | **Level 3-Design & Preliminary Construction** | 10d | 2002-04-16 A | 2002-04-30 |  | 73% | 309d |  |
| 241 |  | Landmarks (Block out) | 4d | 2002-04-16 A | 2002-04-22 A |  | 100% |  |  |
| 242 |  | Landmarks (1st textures) | 3d | 2002-04-22 A | 2002-04-25 | 241 | 25% | 301.25d |  |
| 243 |  | Props | 3d | 2002-04-25 A | 2002-04-30 | 242 | 75% | 299d |  |
| 244 |  | Track (diagram/plan) | 3d | 2002-04-16 A | 2002-04-19 A |  | 100% |  |  |
| 245 |  | Track (initial layout) | 4d | 2002-04-19 A | 2002-04-25 A | 244 | 100% |  |  |
| 246 |  | Track (revision/1st pass) | 3d | 2002-04-25 A | 2002-04-30 | 245 | 20% | 309d |  |
| 247 | 11.2.2 | **Level 4-Design & Preliminary Construction** | 10d | 2002-04-30 A | 2002-05-14 |  | 35% | 299d |  |
| 248 |  | Landmarks (Block out) | 4d | 2002-04-30 | 2002-05-06 | 243 |  | 299d |  |
| 249 |  | Landmarks (1st textures) | 3d | 2002-05-06 | 2002-05-09 | 248 |  | 299d |  |
| 250 |  | Props | 3d | 2002-05-09 | 2002-05-14 | 249 |  | 299d |  |
| 251 |  | Track (diagram/plan) | 3d | 2002-04-30 A | 2002-05-03 A | 246 | 100% |  |  |
| 252 |  | Track (initial layout) | 4d | 2002-05-03 A | 2002-05-09 A | 251 | 100% |  |  |
| 253 |  | Track (revision/1st pass) | 3d | 2002-05-09 | 2002-05-14 | 252 |  | 299d |  |
| 254 | 11.3 | **Characters** | 21d | 2002-04-16 A | 2002-05-15 |  | 89% | 298d |  |
| 255 |  | 8 Redo Characters w/ LOD's | 15d | 2002-04-16 A | 2002-05-07 A |  | 100% |  |  |
| 256 |  | Redo Skeletons on 8 main and 8 redo characters. | 6d | 2002-05-07 A | 2002-05-15 | 255 | 60% | 298d |  |
| 257 | 11.4 | **Animations** | 21d | 2002-04-16 A | 2002-05-15 |  | 76% | 298d |  |
| 258 |  | E3 Promo Demo | 11d | 2002-04-16 A | 2002-05-01 A |  | 100% |  |  |
| 259 |  | All Animations for 1 Walker | 10d | 2002-05-01 A | 2002-05-15 | 258 | 50% | 298d |  |
| 260 | 12 | **Milestone 8 (June 15th)** | 43d? | 2002-04-16 | 2002-06-17 |  |  | 276d |  |
| 261 |  | FE Concept Design (1st pass) | 20d | 2002-05-16 | 2002-06-14 |  |  | 277d | start no earlier than 2002-05-16 |
| 262 |  | Final art design | 20d | 2002-05-16 | 2002-06-14 |  |  | 277d | start no earlier than 2002-05-16 |
| 263 | 12.3 | **World Building** | 1d? | 2002-04-16 | 2002-04-17 |  |  | 318d |  |
| 264 |  | Level 4 - 1st Pass | 1d? | 2002-04-16 | 2002-04-17 |  |  | 317d |  |
| 265 |  | Level 3 - 1st Pass | 1d? | 2002-04-16 | 2002-04-17 |  |  | 317d |  |
| 266 | 12.4 | **Characters** | 21d | 2002-05-16 | 2002-06-17 |  |  | 276d |  |
| 267 |  | 4 New Characters w/ LOD's | 21d | 2002-05-16 | 2002-06-17 |  |  | 276d | start no earlier than 2002-05-16 |
| 268 | 12.5 | **Vehicles** | 21d | 2002-05-16 | 2002-06-17 |  |  | 276d |  |
| 269 |  | 4 Main Vehicles | 21d | 2002-05-16 | 2002-06-17 |  |  | 276d | start no earlier than 2002-05-16 |
| 270 | 12.6 | **Animations** | 21d | 2002-05-16 | 2002-06-17 |  |  | 276d |  |
| 271 |  | All Animations for 3 or 4 Walkers | 21d | 2002-05-16 | 2002-06-17 |  |  | 276d | start no earlier than 2002-05-16 |
| 272 |  | FMV Storyboards Complete | 21d | 2002-05-16 | 2002-06-17 |  |  | 275d | start no earlier than 2002-05-16 |
| 273 | 13 | **Milestone 9 (July 15th)** | 1d? | 2002-04-16 | 2002-04-17 |  |  | 318d |  |
| 274 |  | Level 3 & 4 - 1st Pass | 1d? | 2002-04-16 | 2002-04-17 |  |  | 317d |  |
| 275 |  | 8 FMV Characters | 1d? | 2002-04-16 | 2002-04-17 |  |  | 317d |  |
| 276 |  | 8 Main Vehicles | 1d? | 2002-04-16 | 2002-04-17 |  |  | 317d |  |
| 277 |  | All Animations for 2 Walkers | 1d? | 2002-04-16 | 2002-04-17 |  |  | 317d |  |
| 278 |  | All Driver Animations for 5 body types | 1d? | 2002-04-16 | 2002-04-17 |  |  | 317d |  |
| 279 |  | All passenger animations for 3 body types | 1d? | 2002-04-16 | 2002-04-17 |  |  | 317d |  |
| 280 |  | HUD Design Concepts | 1d? | 2002-04-16 | 2002-04-17 |  |  | 317d |  |
| 281 | 14 | **Milestone 10 (Aug 15th)** | 1d? | 2002-04-16 | 2002-04-17 |  |  | 318d |  |
| 282 |  | Levels 1 & 2 - 2nd Pass (send to FOX for Art Review) | 1d? | 2002-04-16 | 2002-04-17 |  |  | 317d |  |
| 283 |  | 6 New Characters w/ LOD's | 1d? | 2002-04-16 | 2002-04-17 |  |  | 317d |  |

| ID | WBS | Task | Duration | Start | Finish | Predecessors | Complete | Total float | Constraint |
| --- | --- | --- | --- | --- | --- | --- | --- | --- | --- |
| 284 |  | 4 FMV Characters | 1d? | 2002-04-16 | 2002-04-17 |  |  | 317d |  |
| 285 |  | All Boss Animations | 1d? | 2002-04-16 | 2002-04-17 |  |  | 317d |  |
| 286 |  | All Passenger Animations for 2 body types | 1d? | 2002-04-16 | 2002-04-17 |  |  | 317d |  |
| 287 |  | All pedestrian aninmations for 5 body types | 1d? | 2002-04-16 | 2002-04-17 |  |  | 317d |  |
| 288 |  | FMV/NIS Modeling (1 week per 4 modelers) | 1d? | 2002-04-16 | 2002-04-17 |  |  | 317d |  |
| 289 |  | Start FMV's/NIS's | 1d? | 2002-04-16 | 2002-04-17 |  |  | 317d |  |
| 290 |  | <New Animator #2> | 1d? | 2002-04-16 | 2002-04-17 |  |  | 317d |  |
| 291 | 15 | **Milestone 11 (Sep 15th)** | 1d? | 2002-04-16 | 2002-04-17 |  |  | 318d |  |
| 292 |  | Levels 3 & 4 - 2nd Pass | 1d? | 2002-04-16 | 2002-04-17 |  |  | 317d |  |
| 293 |  | 6 New Characters w/ LOD's | 1d? | 2002-04-16 | 2002-04-17 |  |  | 317d |  |
| 294 |  | 4 Redo Characters | 1d? | 2002-04-16 | 2002-04-17 |  |  | 317d |  |
| 295 |  | FMV/NIS Modeling (1 week per 4 modelers) | 1d? | 2002-04-16 | 2002-04-17 |  |  | 317d |  |
| 296 |  | HUD Implementation Complete | 1d? | 2002-04-16 | 2002-04-17 |  |  | 317d |  |
| 297 |  | SFX Completed | 1d? | 2002-04-16 | 2002-04-17 |  |  | 317d |  |
| 298 | 2.6 | **Milestone 12 (Oct 15th)** | 131d? | 2002-04-16 A | 2002-10-17 |  | 20% | 188d |  |
| 299 | 2.6.1 | **Special FX (*this area of the game needs a lot of time and attention and close one on one tech support)** | 23d? | 2002-09-16 A | 2002-10-17 |  | 40% | 188d |  |
| 300 | 2.6.1.1 | **Mission presentation elements:** | 14d? | 2002-09-16 A | 2002-10-04 |  | 42% | 197d |  |
| 301 |  | Some sort of special effect to draw attention better overall for all icons. | 1d? | 2002-09-16 A | 2002-09-17 |  | 75% | 206.75d | start no earlier than 2002-09-16 |
| 302 |  | Get mission detail icon | 1d? | 2002-09-17 A | 2002-09-18 | 301 | 75% | 206d |  |
| 303 |  | Present icon | 1d? | 2002-09-18 A | 2002-09-19 | 302 | 75% | 205.25d |  |
| 304 |  | Ai chase vehicle icon | 1d? | 2002-09-19 A | 2002-09-20 | 303 | 75% | 204.5d |  |
| 305 |  | Power couplings need electrical field effect | 1d? | 2002-09-23 A | 2002-09-24 | 304 | 50% | 203d |  |
| 306 |  | Food collectible icon | 1d? | 2002-09-24 | 2002-09-25 | 305 |  | 203d |  |
| 307 |  | Button pressing flashy effect | 1d? | 2002-09-25 | 2002-09-26 | 306 |  | 203d |  |
| 308 |  | Collector card glowing icon and getting it icon | 1d? | 2002-09-26 A | 2002-09-27 A | 307 | 100% |  |  |
| 309 |  | Destroy particle effect for Video game cargo | 1d? | 2002-09-27 A | 2002-09-30 | 308 | 95% | 1d |  |
| 310 |  | After effect for collecting Mission icon | 1d? | 2002-09-30 | 2002-10-01 | 309 |  | 1d |  |
| 311 |  | After effect for collecting food icons | 1d? | 2002-10-01 | 2002-10-02 | 310 |  | 1d |  |
| 312 |  | Hud icons for food, mission collectibles and collector card (animations too) | 1d? | 2002-10-02 | 2002-10-03 | 311 |  | 1d |  |
| 313 |  | Boss Arena ! - Textured & Modeled | 1d? | 2002-10-03 | 2002-10-04 | 312 |  | 1d |  |
| 314 | 2.6.1.2 | **Interior indicator (player needs visual to get into interior)** | 9d? | 2002-10-04 A | 2002-10-17 | 313 | 38% | 188d |  |
| 315 |  | Water Special FX animation | 1d? | 2002-10-04 | 2002-10-07 |  |  | 196d |  |
| 316 |  | Small tree breakable effect. | 1d? | 2002-10-07 A | 2002-10-08 A | 315 | 100% |  |  |
| 317 |  | Power coupling effect in and working to iterate | 1d? | 2002-10-08 | 2002-10-09 | 316 |  | 194d |  |
| 318 |  | Bush particles | 1d? | 2002-10-09 A | 2002-10-10 A | 317 | 100% |  |  |
| 319 |  | Big tree particles and possible camera shake | 1d? | 2002-10-10 A | 2002-10-11 | 318 | 50% | 188.9d |  |
| 320 |  | Refinement on spark effect (may need two variations) soft and hard hits | 1d? | 2002-10-11 A | 2002-10-14 | 319 | 90% | 188d |  |
| 321 |  | Nuclear glow bubbles rising particle effect in powerplant | 1d? | 2002-10-14 | 2002-10-15 | 320 |  | 188d |  |
| 322 |  | Other ambient animations to be determined (to review game) | 1d? | 2002-10-15 | 2002-10-16 | 321 |  | 187d |  |
| 323 |  | Boss arena effects: Need to confirm a list | 1d? | 2002-10-16 | 2002-10-17 | 322 |  | 188d |  |
| 324 | 2.6.2 | **Downtown Level:** | 17d? | 2002-09-16 A | 2002-10-09 |  | 11% | 194d |  |
| 325 |  | All geometry, tracks, and final textures completed | 1d? | 2002-09-16 A | 2002-09-17 |  | 60% | 195.35d | start no earlier than 2002-09-16 |
| 326 |  | All collision volumes in place | 1d? | 2002-09-17 A | 2002-09-18 | 325 | 5% | 195.3d |  |
| 327 |  | All moveable objects in place | 1d? | 2002-09-18 A | 2002-09-19 | 326 | 5% | 195.25d |  |
| 328 |  | All breakable object in place (Need tech implementation ASAP) | 1d? | 2002-09-19 A | 2002-09-20 | 327 | 5% | 195.2d |  |
| 329 |  | Geometry optimization step complete (all geometry at final poly count) | 1d? | 2002-09-20 | 2002-09-23 | 328 |  | 195.2d |  |
| 330 |  | 3 interiors in the level: | 1d? | 2002-09-23 | 2002-09-24 | 329 |  | 195.2d |  |
| 331 |  | Final geometry, collisions, and character animations | 1d? | 2002-09-24 | 2002-09-25 | 330 |  | 194.2d |  |
| 332 |  | Final textures | 1d? | 2002-09-25 A | 2002-09-26 | 331 | 85% | 194.35d |  |
| 333 |  | Lighting and light maps | 1d? | 2002-09-26 A | 2002-09-27 | 332 | 15% | 194.2d |  |
| 334 |  | Camera placement | 1d? | 2002-09-27 | 2002-09-30 | 333 |  | 193.2d |  |
| 335 |  | All hailing points (phone booths and bus stops) modelled and placed | 1d? | 2002-09-30 | 2002-10-01 | 334 |  | 194.2d |  |
| 336 |  | All local world spheres completed | 1d? | 2002-10-01 A | 2002-10-02 | 335 | 20% | 194d |  |
| 337 |  | All collectible cards placed in the level | 1d? | 2002-10-02 | 2002-10-03 | 336 |  | 193d |  |
| 338 |  | All food icons placed in the level | 1d? | 2002-10-03 | 2002-10-04 | 337 |  | 193d |  |
| 339 |  | All destructible cameras placed in the level | 1d? | 2002-10-04 | 2002-10-07 | 338 |  | 193d |  |
| 340 |  | All death volumes placed in the level | 1d? | 2002-10-07 | 2002-10-08 | 339 |  | 194d |  |
| 341 |  | Light maps and shadow maps complete | 1d? | 2002-10-08 | 2002-10-09 | 340 |  | 194d |  |
| 342 | 2.6.3 | **Suburbs Level:** | 124d? | 2002-04-16 A | 2002-10-08 |  | 16% | 195d |  |
| 343 |  | Breakables in place | 1d? | 2002-09-16 A | 2002-09-17 |  | 80% | 210d | start no earlier than 2002-09-16 |
| 344 |  | Light maps implemented | 1d? | 2002-04-16 | 2002-04-17 |  |  | 316d |  |
| 345 |  | Optimization of textures | 1d? | 2002-04-17 | 2002-04-18 | 344 |  | 316d |  |
| 346 |  | Gameplay puzzle refine and complete (working with designer) | 1d? | 2002-04-18 | 2002-04-19 | 345 |  | 316d |  |
| 347 | 2.6.3.5 | **3 interiors in the level:** | 4d? | 2002-09-16 | 2002-09-20 |  |  | 207d |  |
| 348 |  | Final geometry, collisions, and character animations | 1d? | 2002-09-16 | 2002-09-17 |  |  | 207d | start no earlier than 2002-09-16 |
| 349 |  | Final textures | 1d? | 2002-09-17 | 2002-09-18 | 348 |  | 207d |  |
| 350 |  | Lighting and light maps | 1d? | 2002-09-18 | 2002-09-19 | 349 |  | 207d |  |
| 351 |  | Camera placement | 1d? | 2002-09-19 | 2002-09-20 | 350 |  | 207d |  |
| 352 |  | All local world spheres completed | 1d? | 2002-04-16 | 2002-04-17 |  |  | 318d |  |
| 353 | 2.6.3.7 | **Animations** | 16d? | 2002-09-16 A | 2002-10-08 |  | 55% | 195d |  |

| ID | WBS | Task | Duration | Start | Finish | Predecessors | Complete | Total float | Constraint |
| --- | --- | --- | --- | --- | --- | --- | --- | --- | --- |
| 354 |  | In-game character animations refine and finalize (pending no design changes) | 1d? | 2002-09-16 A | 2002-09-17 |  | 80% | 210d | start no earlier than 2002-09-16 |
| 355 |  | Pedestrian animations refine (Pending on when getting implemented) | 1d? | 2002-09-17 A | 2002-09-18 A | 354 | 100% |  |  |
| 356 |  | Boss animations for all boss encounters | 1d? | 2002-09-18 | 2002-09-19 | 355 |  | 206d |  |
| 357 |  | Boss NIS for intro sequences | 1d? | 2002-09-19 | 2002-09-20 | 356 |  | 206d |  |
| 358 |  | Boss NIS for ending win/lose sequences | 1d? | 2002-09-20 | 2002-09-23 | 357 |  | 206d |  |
| 359 |  | ALL FMV’s storyboarded | 1d? | 2002-09-23 A | 2002-09-24 A | 358 | 100% |  |  |
| 360 |  | First animatic of FMV 2 | 1d? | 2002-09-24 A | 2002-09-25 A | 359 | 100% |  |  |
| 361 |  | Refinements to FMV1 (Yayoi to review) | 1d? | 2002-09-25 A | 2002-09-26 A | 360 | 100% |  |  |
| 362 |  | Create new gags ( Prioritize with designer) | 1d? | 2002-09-26 A | 2002-09-27 | 361 | 98% | 202d |  |
| 363 | 2.6.3.7.10 | **FRONT END animations:** | 1d? | 2002-09-27 A | 2002-09-30 A | 362 | 100% |  |  |
| 364 |  | Sound Menu pans to a headset on the floor (Near the Lamp) | 1d? | 2002-09-27 A | 2002-09-30 A |  | 100% |  |  |
| 365 |  | View Movie Menu goes to TV Screen | 1d? | 2002-09-30 A | 2002-10-01 A | 363 | 100% |  |  |
| 366 |  | View Credits Menu goes to Simpsons Portrait | 1d? | 2002-10-01 A | 2002-10-02 A | 365 | 100% |  |  |
| 367 |  | Vibration Menu goes close up to remote control (on/off) Button | 1d? | 2002-10-02 | 2002-10-03 | 366 |  | 195d |  |
| 368 |  | Mouse runs across room from lamp side towards to camera and off screen | 1d? | 2002-10-03 | 2002-10-04 | 367 |  | 195d |  |
| 369 |  | Mouse Jumps on closer side of couch, sniffs homer and then goes back. | 1d? | 2002-10-04 | 2002-10-07 | 368 |  | 195d |  |
| 370 |  | 3 more Homer animations - ??? Ask Galan and Chris for ideas. | 1d? | 2002-10-07 | 2002-10-08 | 369 |  | 195d |  |
| 371 | 2.6.3.8 | **Vehicles:** | 11d? | 2002-09-16 | 2002-10-01 |  |  | 200d |  |
| 372 |  | All damage states complete for all main driver vehicles (working in game) | 1d? | 2002-09-16 | 2002-09-17 |  |  | 202d | start no earlier than 2002-09-16 |
| 373 |  | All damage states for Generic traffic vehicle working | 1d? | 2002-09-17 | 2002-09-18 | 372 |  | 202d |  |
| 374 |  | All generic and ai vehicles in for Suburbs and Downtown. | 1d? | 2002-09-18 | 2002-09-19 | 373 |  | 202d |  |
| 375 |  | All shadows for all cars working in game complete | 1d? | 2002-09-19 | 2002-09-20 | 374 |  | 202d |  |
| 376 |  | Environmental mapping working on vehicles and iteration time needed | 1d? | 2002-09-20 | 2002-09-23 | 375 |  | 202d |  |
| 377 |  | Generic traffic vehicle refine. | 1d? | 2002-09-23 | 2002-09-24 | 376 |  | 202d |  |
| 378 |  | Place agnes (Low poly version) in Skinners vehicle | 1d? | 2002-09-24 | 2002-09-25 | 377 |  | 202d |  |
| 379 |  | Steering wheel in vehicles | 1d? | 2002-09-25 | 2002-09-26 | 378 |  | 202d |  |
| 380 |  | Shadows for vehicles working properly | 1d? | 2002-09-26 | 2002-09-27 | 379 |  | 202d |  |
| 381 |  | Damage states particle need time for iteration (when will get into game) | 1d? | 2002-09-16 | 2002-09-17 |  |  | 210d | start no earlier than 2002-09-16 |
| 382 | 2.6.3.8.11 | **Front End and pause menu** | 7d? | 2002-09-16 | 2002-09-25 |  |  | 200d |  |
| 383 |  | Finalize Font highlight for scrolling and selecting | 1d? | 2002-09-16 | 2002-09-17 |  |  | 200d | start no earlier than 2002-09-16 |
| 384 |  | Front end optimization | 1d? | 2002-09-17 | 2002-09-18 | 383 |  | 200d |  |
| 385 |  | Create Krusty headset (For sound menu ) | 1d? | 2002-09-18 | 2002-09-19 | 384 |  | 200d |  |
| 386 |  | Finalize Front END | 1d? | 2002-09-19 | 2002-09-20 | 385 |  | 200d |  |
| 387 |  | Finalize card gallery | 1d? | 2002-09-20 | 2002-09-23 | 386 |  | 200d |  |
| 388 |  | Finalize pause menu screen | 1d? | 2002-09-23 | 2002-09-24 | 387 |  | 200d |  |
| 389 |  | Mission HUD design finalized | 1d? | 2002-09-24 | 2002-09-25 | 388 |  | 200d |  |
| 390 | 2.6.3.8.12 | **Collector cards:** | 4d? | 2002-09-25 | 2002-10-01 | 389 |  | 200d |  |
| 391 |  | Finalize Collector card design for in-game | 1d? | 2002-09-25 | 2002-09-26 |  |  | 200d |  |
| 392 |  | Finalize collector card game design | 1d? | 2002-09-26 | 2002-09-27 | 391 |  | 200d |  |
| 393 |  | Create collector card images for Downtown level | 1d? | 2002-09-27 | 2002-09-30 | 392 |  | 200d |  |
| 394 |  | Create collector card images for Seaside level. | 1d? | 2002-09-30 | 2002-10-01 | 393 |  | 200d |  |
| 395 | 2.6.3.8.13 | **HUD:** | 4d? | 2002-09-16 | 2002-09-20 |  |  | 207d |  |
| 396 |  | Finalize hud map on screen (location and size and look) | 1d? | 2002-09-16 | 2002-09-17 |  |  | 207d | start no earlier than 2002-09-16 |
| 397 |  | Mission presentation of mission complete and failure need to refine | 1d? | 2002-09-17 | 2002-09-18 | 396 |  | 207d |  |
| 398 |  | 321 timing of starting mission needs to faster | 1d? | 2002-09-18 | 2002-09-19 | 397 |  | 207d |  |
| 399 |  | Hud icons for missions, food and collector card created and in. | 1d? | 2002-09-19 | 2002-09-20 | 398 |  | 207d |  |
| 400 | 2.6.3.8.14 | **Character models:** | 11d? | 2002-09-16 | 2002-10-01 |  |  | 200d | start no earlier than 2002-09-16 |
| 401 |  | Create monkey model for mission (Need to review with Designer) | 1d? | 2002-09-16 | 2002-09-17 |  |  | 200d | start no earlier than 2002-09-16 |
| 402 |  | Create LEGS pedestrian model | 1d? | 2002-09-17 | 2002-09-18 | 401 |  | 200d |  |
| 403 |  | Create character floats: | 1d? | 2002-09-18 | 2002-09-19 | 402 |  | 200d |  |
| 404 |  | Pootchy | 1d? | 2002-09-19 | 2002-09-20 | 403 |  | 200d |  |
| 405 |  | Scratchy | 1d? | 2002-09-20 | 2002-09-23 | 404 |  | 200d |  |
| 406 |  | Itchy | 1d? | 2002-09-23 | 2002-09-24 | 405 |  | 200d |  |
| 407 |  | Sideshow bob | 1d? | 2002-09-24 | 2002-09-25 | 406 |  | 200d |  |
| 408 |  | krusty | 1d? | 2002-09-25 | 2002-09-26 | 407 |  | 200d |  |
| 409 |  | Character shadows all working in-game. | 1d? | 2002-09-26 | 2002-09-27 | 408 |  | 200d |  |
| 410 |  | Dash particles on character working well | 1d? | 2002-09-27 | 2002-09-30 | 409 |  | 200d |  |
| 411 |  | Jump particle refined | 1d? | 2002-09-30 | 2002-10-01 | 410 |  | 200d |  |
| 412 | 2.7 | **Milestone 13 (Nov 15th)** | 29d? | 2002-10-15 A | 2002-11-25 |  | 49% | 161d |  |
| 413 |  | All mission effects (Final) | 1d? | 2002-10-15 A | 2002-10-16 A |  | 100% |  | start no earlier than 2002-10-15 |
| 414 |  | Mission effects Remaining for suburbs | 1d? | 2002-10-16 A | 2002-10-17 A | 413 | 100% |  |  |
| 415 |  | Special effects for location volumes | 1d? | 2002-10-17 A | 2002-10-18 | 414 | 75% | 186.5d |  |
| 416 |  | Special effects for powerplant | 1d? | 2002-10-18 A | 2002-10-21 | 415 | 75% | 185.75d |  |
| 417 |  | Special effects for Downtown | 1d? | 2002-10-21 A | 2002-10-22 | 416 | 75% | 185d |  |
| 418 |  | Mission effects for Downtown (Probably done once suburbs mission effects final) | 1d? | 2002-10-22 A | 2002-10-23 A | 417 | 100% |  |  |
| 419 |  | Breakables for Downtown | 1d? | 2002-10-23 | 2002-10-24 | 418 |  | 182d |  |
| 420 |  | Breakables for Suburbs final | 1d? | 2002-10-24 | 2002-10-25 | 419 |  | 182d |  |
| 421 |  | 2 interiors for Downtown complete | 1d? | 2002-10-16 A | 2002-10-17 A |  | 100% |  | start no earlier than 2002-10-16 |
| 422 |  | design 2 interior for Seaside | 1d? | 2002-10-17 A | 2002-10-18 | 421 | 10% | 187d |  |
| 423 |  | Finalize intro movie (Pending Title for game approved) | 1d? | 2002-10-16 A | 2002-10-17 |  | 90% | 187.4d | start no earlier than 2002-10-16 |

| ID | WBS | Task | Duration | Start | Finish | Predecessors | Complete | Total float | Constraint |
| --- | --- | --- | --- | --- | --- | --- | --- | --- | --- |
| 424 |  | FMV #2 40% complete (% percentage will be higher if dialogue recorded) | 1d? | 2002-10-17 A | 2002-10-18 | 423 | 40% | 187d |  |
| 425 |  | Remaining in-game animations final (dependent on Driver, passenger, pedestrian all implemented in game) | 1d? | 2002-10-18 A | 2002-10-21 A | 424 | 100% |  |  |
| 426 | 2.7.14 | **FMV #2 - 7 animatic completed (Pending on FOx Approval)** | 5d? | 2002-10-21 A | 2002-10-28 | 425 | 16% | 181d |  |
| 427 |  | FMV #3 | 1d? | 2002-10-21 A | 2002-10-22 |  | 20% | 181.6d |  |
| 428 |  | FMV #4 | 1d? | 2002-10-22 A | 2002-10-23 | 427 | 20% | 181.4d |  |
| 429 |  | FMV #5 | 1d? | 2002-10-23 A | 2002-10-24 | 428 | 20% | 181.2d |  |
| 430 |  | FMV #6 | 1d? | 2002-10-24 | 2002-10-25 | 429 |  | 181.2d |  |
| 431 |  | FMV #7 | 1d? | 2002-10-25 A | 2002-10-28 | 430 | 20% | 181d |  |
| 432 |  | Gags all working for suburbs and Downtown | 1d? | 2002-10-28 A | 2002-10-29 A | 426 | 100% |  |  |
| 433 | 2.7.16 | **World Builders** | 28d | 2002-10-16 A | 2002-11-25 |  | 49% | 161d |  |
| 434 |  | 2 weeks on Seaside (all people) | 19d | 2002-10-16 A | 2002-11-12 |  | 85% | 170d | start no earlier than 2002-10-16 |
| 435 |  | Polish Level 2 (Downtown) | 3d | 2002-11-13 | 2002-11-18 |  |  | 166d | start no earlier than 2002-11-13 |
| 436 |  | Polish Level 3 (Seaside) | 3d | 2002-11-13 | 2002-11-18 |  |  | 166d | start no earlier than 2002-11-13 |
| 437 |  | Polish Level 1 (Suburbs) | 3d | 2002-11-13 | 2002-11-18 |  |  | 166d | start no earlier than 2002-11-13 |
| 438 |  | 1 week halloween complete (2 people) | 5d | 2002-11-18 | 2002-11-25 |  |  | 161d | start no earlier than 2002-11-18 |
| 439 |  | Selma | 1d? | 2002-10-16 A | 2002-10-17 A |  | 100% |  | start no earlier than 2002-10-16 |
| 440 |  | Skinner | 1d? | 2002-10-17 A | 2002-10-18 A | 439 | 100% |  |  |
| 441 |  | Sea Captain | 1d? | 2002-10-18 A | 2002-10-21 A | 440 | 100% |  |  |
| 442 |  | Sideshow Bob float | 1d? | 2002-10-21 A | 2002-10-22 A | 441 | 100% |  |  |
| 443 | 2.7.23 | **Generic Pedestrians** | 4d? | 2002-10-22 | 2002-10-28 | 442 |  | 179d |  |
| 444 |  | Generic ped kid F | 1d? | 2002-10-22 | 2002-10-23 |  |  | 179d |  |
| 445 |  | Generic ped kid M | 1d? | 2002-10-23 | 2002-10-24 | 444 |  | 179d |  |
| 446 |  | Generic ped adult M2 | 1d? | 2002-10-24 | 2002-10-25 | 445 |  | 179d |  |
| 447 |  | Generic ped adult F2 | 1d? | 2002-10-25 | 2002-10-28 | 446 |  | 179d |  |
| 448 |  | Zombie character | 1d? | 2002-10-28 | 2002-10-29 | 443 |  | 179d |  |
| 449 |  | (Need to find out from designers about monkey status) | 1d? | 2002-10-29 | 2002-10-30 | 448 |  | 179d |  |
| 450 |  | Damage states for all driver vehicles complete | 1d? | 2002-10-16 A | 2002-10-17 A |  | 100% |  | start no earlier than 2002-10-16 |
| 451 |  | Cartoonify Traffic vehicles | 1d? | 2002-10-17 A | 2002-10-18 | 450 | 50% | 186.8d |  |
| 452 |  | Environmental mapping complete on vehicles. | 1d? | 2002-10-18 A | 2002-10-21 | 451 | 80% | 186d |  |
| 453 |  | Track sprays and SKid marks final | 1d? | 2002-10-21 A | 2002-10-22 A | 452 | 100% |  |  |
| 454 |  | More vehicles | 1d? | 2002-10-22 A | 2002-10-23 | 453 | 30% | 184d |  |
| 455 | 2.7.31 | **Generic Gremlin (Race)** | 7d? | 2002-10-23 A | 2002-11-01 A | 454 | 100% |  |  |
| 456 |  | (3) Black Limo (Chase and Destroy)* | 1d? | 2002-10-23 A | 2002-10-24 A |  | 100% |  |  |
| 457 |  | (5) Cola truck and Black Sedans (Chase and evade) (red /white siren ) | 1d? | 2002-10-24 A | 2002-10-25 A | 456 | 100% |  |  |
| 458 |  | (5) Armored Truck (Chase and destroy) | 1d? | 2002-10-25 A | 2002-10-28 A | 457 | 100% |  |  |
| 459 |  | (5) Curator vehicle (Race) | 1d? | 2002-10-28 A | 2002-10-29 A | 458 | 100% |  |  |
| 460 |  | (6) Krusty> '> s Limo (race) | 1d? | 2002-10-29 A | 2002-10-30 A | 459 | 100% |  |  |
| 461 |  | (7) Black Ferrini (race) | 1d? | 2002-10-30 A | 2002-10-31 A | 460 | 100% |  |  |
| 462 |  | (7) Generic Zombie Hearse Vehicle ???? ( Evade) (green/orange siren ) | 1d? | 2002-10-31 A | 2002-11-01 A | 461 | 100% |  |  |
| 463 |  | more reward vehicles (have yet to be determined with designers) | 1d? | 2002-11-01 A | 2002-11-04 A | 462 | 100% |  |  |
| 464 |  | Finalize Navigation map on hud (Needs redesign) | 1d? | 2002-10-21 A | 2002-10-22 |  | 70% | 172.3d | start no earlier than 2002-10-21 |
| 465 |  | Mission object icons for HUD | 1d? | 2002-10-22 A | 2002-10-23 | 464 | 30% | 172d |  |
| 466 |  | All collector cards complete for all levels (This may not be feasible pending new design changes) | 1d? | 2002-10-23 A | 2002-10-24 | 465 | 80% | 171.2d |  |
| 467 |  | Finalize Card Gallery | 1d? | 2002-10-24 | 2002-10-25 | 466 |  | 171.2d |  |
| 468 |  | Finalize Pause Menu | 1d? | 2002-10-25 A | 2002-10-28 | 467 | 20% | 171d |  |
| 469 |  | Design menu screens for new designs (Need to clarify with Carey) | 1d? | 2002-10-28 | 2002-10-29 | 468 |  | 171d |  |
| 470 |  | Map Icons | 1d? | 2002-11-12 | 2002-11-12 | 469 |  | 161.12d | start no earlier than 2002-11-12 |
| 471 |  | FMV Viewfinder | 1d? | 2002-11-13 | 2002-11-13 | 470 |  | 161.12d | start no earlier than 2002-11-12 |
| 472 |  | Fox Approval | 1d? | 2002-11-14 | 2002-11-14 | 471 |  | 161.12d | start no earlier than 2002-11-12 |
| 473 |  | (Level Loading ) Newspaper Loading Screen ( Need to get the final text from Chris ) | 1d? | 2002-11-15 | 2002-11-15 | 472 |  | 161.12d | start no earlier than 2002-11-12 |
| 474 |  | Redesign Mission Loading Screen | 1d? | 2002-11-18 | 2002-11-18 | 473 |  | 161.12d | start no earlier than 2002-11-12 |
| 475 |  | New reward Screen ( Need Info from Carey ) | 1d? | 2002-11-19 | 2002-11-19 | 474 |  | 161.12d | start no earlier than 2002-11-12 |
| 476 |  | Pause Option Arrows | 1d? | 2002-11-20 | 2002-11-20 | 475 |  | 161.12d | start no earlier than 2002-11-12 |
| 477 |  | Pause Sound Image | 1d? | 2002-11-21 | 2002-11-21 | 476 |  | 161.12d | start no earlier than 2002-11-12 |
| 478 |  | Error message overlay | 1d? | 2002-11-22 | 2002-11-22 | 477 |  | 161.12d | start no earlier than 2002-11-12 |
| 479 | 2.8 | **Milestone 14 (Dec 15th)** | 60.88d? | 2002-10-15 A | 2003-01-07 |  | 10% | 129.12d |  |
| 480 | 2.8.1 | **Special FX** | 32.88d? | 2002-10-16 | 2002-11-29 |  |  | 156.12d |  |
| 481 | 2.8.1 | **First test will be:** | 1d? | 2002-10-16 | 2002-10-17 |  |  | 183d |  |
| 482 |  | Slot machines outside Burn’s Casino: pressing action causes lights to flash and sounds to play and in Moes | 1d? | 2002-10-16 | 2002-10-17 |  |  | 183d | start no earlier than 2002-10-16 |
| 483 | 2.8.3 | **Downtown Interactive Gags (level 2 and 5)** | 1d? | 2002-10-17 | 2002-10-18 | 481 |  | 183d |  |
| 484 |  | Hitting Popsicle skyscraper causes a shower of Popsicle particles to appear. | 1d? | 2002-10-17 | 2002-10-18 |  |  | 183d |  |
| 485 |  | Catapult, fires as in 4F15 | 1d? | 2002-10-17 | 2002-10-18 |  |  | 183d |  |
| 486 |  | Wacking day memorabilia ??? | 1d? | 2002-10-17 | 2002-10-18 |  |  | 183d |  |
| 487 | 2.8.1.3 | **Miscalleounous:** | 1d? | 2002-11-26 | 2002-11-26 | 483 |  | 156.12d |  |
| 488 |  | All mission collectibles | 1d? | 2002-11-26 | 2002-11-26 |  |  | 156.12d | start no earlier than 2002-11-26 |
| 489 |  | Checkpoint icon for streetrace | 1d? | 2002-11-26 | 2002-11-26 |  |  | 156.12d | start no earlier than 2002-11-26 |
| 490 |  | Bonus mission icon | 1d? | 2002-11-26 | 2002-11-26 |  |  | 156.12d | start no earlier than 2002-11-26 |
| 491 |  | Interior door icon effect (Need to come up with design) | 1d? | 2002-11-26 | 2002-11-26 |  |  | 156.12d | start no earlier than 2002-11-26 |
| 492 |  | Finalize all Presentation icons (ie exclamation, phone booth, ai vehicle) | 1d? | 2002-11-26 | 2002-11-26 |  |  | 156.12d | start no earlier than 2002-11-26 |
| 493 | 2.8.1.4 | **Surburbs level 1 Effects:** | 1d? | 2002-11-27 | 2002-11-27 | 487 |  | 156.12d |  |

| ID | WBS | Task | Duration | Start | Finish | Predecessors | Complete | Total float | Constraint |
| --- | --- | --- | --- | --- | --- | --- | --- | --- | --- |
| 494 |  | River water effect | 1d? | 2002-11-27 | 2002-11-27 |  |  | 156.12d | start no earlier than 2002-11-26 |
| 495 |  | Randomized textures for powerplant | 1d? | 2002-11-27 | 2002-11-27 |  |  | 156.12d | start no earlier than 2002-11-26 |
| 496 |  | Randomized textures for church | 1d? | 2002-11-27 | 2002-11-27 |  |  | 156.12d | start no earlier than 2002-11-26 |
| 497 |  | Glow for button effect implemented into game | 1d? | 2002-11-27 | 2002-11-27 |  |  | 156.12d | start no earlier than 2002-11-26 |
| 498 | 2.8.1.5 | **Downtown Level 2 Effects:** | 1d? | 2002-11-28 | 2002-11-28 | 493 |  | 156.12d |  |
| 499 |  | Exploding glass for spaceneedle | 1d? | 2002-11-28 | 2002-11-28 |  |  | 156.12d | start no earlier than 2002-11-26 |
| 500 |  | Randomized texture for stadium tron. | 1d? | 2002-11-28 | 2002-11-28 |  |  | 156.12d | start no earlier than 2002-11-26 |
| 501 |  | Two water fountains in the stadium | 1d? | 2002-11-28 | 2002-11-28 |  |  | 156.12d | start no earlier than 2002-11-26 |
| 502 |  | Animating flag by the stadium | 1d? | 2002-11-28 | 2002-11-28 |  |  | 156.12d | start no earlier than 2002-11-26 |
| 503 |  | Corona lights by the stadium | 1d? | 2002-11-28 | 2002-11-28 |  |  | 156.12d | start no earlier than 2002-11-26 |
| 504 |  | Magnify glass smoke effect | 1d? | 2002-11-28 | 2002-11-28 |  |  | 156.12d | start no earlier than 2002-11-26 |
| 505 |  | Fire Truck sirens | 1d? | 2002-11-28 | 2002-11-28 |  |  | 156.12d | start no earlier than 2002-11-26 |
| 506 |  | Tree effects revised textures | 1d? | 2002-11-28 | 2002-11-28 |  |  | 156.12d | start no earlier than 2002-11-26 |
| 507 |  | All breakables need to be implemented | 1d? | 2002-11-28 | 2002-11-28 |  |  | 156.12d | start no earlier than 2002-11-26 |
| 508 |  | Stuff to be implemented for tomorrow: | 1d? | 2002-11-28 | 2002-11-28 |  |  | 156.12d | start no earlier than 2002-11-26 |
| 509 |  | Construction effects | 1d? | 2002-11-28 | 2002-11-28 |  |  | 156.12d | start no earlier than 2002-11-26 |
| 510 |  | Railroad crossing breakable | 1d? | 2002-11-28 | 2002-11-28 |  |  | 156.12d | start no earlier than 2002-11-26 |
| 511 |  | Lights under the freeway | 1d? | 2002-11-28 | 2002-11-28 |  |  | 156.12d | start no earlier than 2002-11-26 |
| 512 |  | Light under the tunnel | 1d? | 2002-11-28 | 2002-11-28 |  |  | 156.12d | start no earlier than 2002-11-26 |
| 513 |  | Animating signs | 1d? | 2002-11-28 | 2002-11-28 |  |  | 156.12d | start no earlier than 2002-11-26 |
| 514 | 2.8.1.6 | **Seaside Level 3 Effects:** | 1d? | 2002-11-29 | 2002-11-29 | 498 |  | 156.12d |  |
| 515 |  | Ocean water effects | 1d? | 2002-11-29 | 2002-11-29 |  |  | 156.12d | start no earlier than 2002-11-26 |
| 516 |  | Animating signs in the squidport | 1d? | 2002-11-29 | 2002-11-29 |  |  | 156.12d | start no earlier than 2002-11-26 |
| 517 |  | Animating signs in the commercial district | 1d? | 2002-11-29 | 2002-11-29 |  |  | 156.12d | start no earlier than 2002-11-26 |
| 518 |  | Flocking Seagulls | 1d? | 2002-11-29 | 2002-11-29 |  |  | 156.12d | start no earlier than 2002-11-26 |
| 519 |  | Seagulls randomly flying by ocean (ambient animation) | 1d? | 2002-11-29 | 2002-11-29 |  |  | 156.12d | start no earlier than 2002-11-26 |
| 520 |  | Sunset Flare | 1d? | 2002-11-29 | 2002-11-29 |  |  | 156.12d | start no earlier than 2002-11-26 |
| 521 |  | River effect | 1d? | 2002-11-29 | 2002-11-29 |  |  | 156.12d | start no earlier than 2002-11-26 |
| 522 |  | Dam waterfall | 1d? | 2002-11-29 | 2002-11-29 |  |  | 156.12d | start no earlier than 2002-11-26 |
| 523 |  | Corona lights | 1d? | 2002-11-29 | 2002-11-29 |  |  | 156.12d | start no earlier than 2002-11-26 |
| 524 |  | Corona for the lighthouse | 1d? | 2002-11-29 | 2002-11-29 |  |  | 156.12d | start no earlier than 2002-11-26 |
| 525 |  | Corona lighting for Duff blimp area | 1d? | 2002-11-29 | 2002-11-29 |  |  | 156.12d | start no earlier than 2002-11-26 |
| 526 |  | Cola effect coming out of pipe | 1d? | 2002-11-29 | 2002-11-29 |  |  | 156.12d | start no earlier than 2002-11-26 |
| 527 |  | Task 1 | 1d? | 2002-11-29 | 2002-11-29 |  |  | 156.12d | start no earlier than 2002-11-26 |
| 528 |  | Task 2 | 1d? | 2002-11-29 | 2002-11-29 |  |  | 156.12d | start no earlier than 2002-11-26 |
| 529 |  | Task 3 | 1d? | 2002-11-29 | 2002-11-29 |  |  | 156.12d | start no earlier than 2002-11-26 |
| 530 | 2.8.1.7 | **Moe’s Tavern Interactive Gags (level 2 and 5) Eric Madill** | 9.88d? | 2002-11-18 | 2002-11-29 |  |  | 156.12d |  |
| 531 |  | Pickle Jar: Pressing action causes eggs in pickle jar to move around | 1d? | 2002-11-18 | 2002-11-19 |  |  | 161d | start no earlier than 2002-11-18 |
| 532 |  | Love Tester: Pressing action causes love tester lights to flash and machine to shake. | 1d? | 2002-11-26 | 2002-11-26 | 531 |  | 156.12d | start no earlier than 2002-11-26 |
| 533 |  | Slot machine: Pressing action causes machine to light up and shake (same as Burns Casino) | 1d? | 2002-11-27 | 2002-11-27 | 532 |  | 156.12d | start no earlier than 2002-11-26 |
| 534 |  | Rotating poster- 7 duffs, out of state liquor license, Bartenders do it till you barf | 1d? | 2002-11-28 | 2002-11-28 | 533 |  | 156.12d | start no earlier than 2002-11-26 |
| 535 |  | Flaming Moes | 1d? | 2002-11-29 | 2002-11-29 | 534 |  | 156.12d | start no earlier than 2002-11-26 |
| 536 |  | Task 1 | 1d? | 2002-11-26 | 2002-11-26 |  |  | 159.12d | start no earlier than 2002-11-26 |
| 537 |  | Task 2 | 1d? | 2002-11-26 | 2002-11-26 |  |  | 159.12d | start no earlier than 2002-11-26 |
| 538 |  | Task 3 | 1d? | 2002-11-26 | 2002-11-26 |  |  | 159.12d | start no earlier than 2002-11-26 |
| 539 | 2.8.11 | **FMV’s** | 6d? | 2002-11-26 | 2002-12-03 |  |  | 0d |  |
| 540 |  | Fmv 3 will be completed and ready for sound | 1d? | 2002-11-26 | 2002-11-26 |  |  | 0d | start no earlier than 2002-11-26 |
| 541 |  | Fmv 1 final fixes with lighting and rendering (ie Homer’s skintone) | 1d? | 2002-11-27 | 2002-11-27 | 540 |  | 0d | start no earlier than 2002-11-26 |
| 542 |  | Fmv 2 40% complete (waiting on dialogue) | 1d? | 2002-11-28 | 2002-11-28 | 541 |  | 0d | start no earlier than 2002-11-26 |
| 543 |  | Fmv 4 Models, scene, lighting complete animatic 70 % | 1d? | 2002-11-29 | 2002-11-29 | 542 |  | 0d |  |
| 544 |  | FMv 5 Models, scene, lighting complete animatic 50 % | 1d? | 2002-12-02 | 2002-12-02 | 543 |  | 0d |  |
| 545 |  | Fmv 7 Models, scene, lighting complete animatic 50 % | 1d? | 2002-12-03 | 2002-12-03 | 544 |  | 0d |  |
| 546 |  | Task 1 | 1d? | 2002-11-26 | 2002-11-26 |  |  | 159.12d | start no earlier than 2002-11-26 |
| 547 |  | Task 2 | 1d? | 2002-11-26 | 2002-11-26 |  |  | 159.12d | start no earlier than 2002-11-26 |
| 548 |  | Task 3 | 1d? | 2002-11-26 | 2002-11-26 |  |  | 159.12d | start no earlier than 2002-11-26 |
| 549 | 2.8.3 | **World Builders** | 12d? | 2002-11-26 A | 2002-12-11 |  | 38% | 148.12d |  |
| 550 | 2.8.16 | **Complete Level 2 Downtown** | 6d? | 2002-12-04 A | 2002-12-11 | 545 | 49% | 148.12d |  |
| 551 |  | Final textures and geometry | 1d? | 2002-12-04 A | 2002-12-04 |  | 80% | 132.72d |  |
| 552 |  | CBV foundation for lighting | 1d? | 2002-12-05 A | 2002-12-05 | 551 | 80% | 131.93d |  |
| 553 |  | All local world sphere and main world sphere | 1d? | 2002-12-06 A | 2002-12-06 | 552 | 70% | 131.22d | start no earlier than 2002-11-26 |
| 554 |  | Phone booth placement | 1d? | 2002-12-09 A | 2002-12-09 | 553 | 90% | 130.32d | start no earlier than 2002-11-26 |
| 555 |  | Moveable and breakable prop placement | 1d? | 2002-12-10 A | 2002-12-10 | 554 | 90% | 129.43d | start no earlier than 2002-11-26 |
| 556 |  | Simpson’s billboard signs | 1d? | 2002-12-11 A | 2002-12-11 | 555 | 30% | 129.12d | start no earlier than 2002-11-26 |
| 557 |  | Task 1 | 1d? | 2002-12-04 | 2002-12-04 |  |  | 153.12d | start no earlier than 2002-11-26 |
| 558 |  | Task 2 | 1d? | 2002-12-04 | 2002-12-04 |  |  | 153.12d | start no earlier than 2002-11-26 |
| 559 |  | Task 3 | 1d? | 2002-12-04 | 2002-12-04 |  |  | 153.12d | start no earlier than 2002-11-26 |
| 560 | 2.8.3.2 | **Complete Level 3 Seaside** | 1d? | 2002-11-26 A | 2002-11-26 |  | 38% | 159.12d |  |
| 561 |  | Final textures and geometry | 1d? | 2002-11-26 A | 2002-11-26 |  | 85% | 159.12d | start no earlier than 2002-11-26 |
| 562 |  | CBV foundation for lighting | 1d? | 2002-11-26 A | 2002-11-26 |  | 85% | 159.12d | start no earlier than 2002-11-26 |
| 563 |  | All local world sphere and main world sphere | 1d? | 2002-11-26 A | 2002-11-26 |  | 85% | 159.12d | start no earlier than 2002-11-26 |

| ID | WBS | Task | Duration | Start | Finish | Predecessors | Complete | Total float | Constraint |
| --- | --- | --- | --- | --- | --- | --- | --- | --- | --- |
| 564 |  | Phone booth placement | 1d? | 2002-11-26 | 2002-11-26 |  |  | 159.12d | start no earlier than 2002-11-26 |
| 565 |  | Moveable and breakable prop placement | 1d? | 2002-11-26 A | 2002-11-26 |  | 90% | 159.12d | start no earlier than 2002-11-26 |
| 566 |  | Simpson’s billboard signs | 1d? | 2002-11-26 | 2002-11-26 |  |  | 159.12d | start no earlier than 2002-11-26 |
| 567 |  | Task 1 | 1d? | 2002-11-26 | 2002-11-26 |  |  | 159.12d | start no earlier than 2002-11-26 |
| 568 |  | Task 2 | 1d? | 2002-11-26 | 2002-11-26 |  |  | 159.12d | start no earlier than 2002-11-26 |
| 569 |  | Task 3 | 1d? | 2002-11-26 | 2002-11-26 |  |  | 159.12d | start no earlier than 2002-11-26 |
| 570 | 2.8.3.3 | **Complete Level 1 Suburbs** | 1d? | 2002-11-26 A | 2002-11-26 |  | 30% | 159.12d |  |
| 571 |  | Redesign of suburbs layout | 1d? | 2002-11-26 A | 2002-11-26 |  | 80% | 159.12d | start no earlier than 2002-11-26 |
| 572 |  | Massing and geometry placement | 1d? | 2002-11-26 A | 2002-11-26 |  | 80% | 159.12d | start no earlier than 2002-11-26 |
| 573 |  | Final textures and geometry | 1d? | 2002-11-26 A | 2002-11-26 |  | 60% | 159.12d | start no earlier than 2002-11-26 |
| 574 |  | CBV foundation for lighting | 1d? | 2002-11-26 A | 2002-11-26 |  | 50% | 159.12d | start no earlier than 2002-11-26 |
| 575 |  | All local world sphere and main world sphere | 1d? | 2002-11-26 A | 2002-11-26 |  | 60% | 159.12d | start no earlier than 2002-11-26 |
| 576 |  | Phone booth placement | 1d? | 2002-11-26 | 2002-11-26 |  |  | 159.12d | start no earlier than 2002-11-26 |
| 577 |  | Moveable and breakable prop placement | 1d? | 2002-11-26 | 2002-11-26 |  |  | 159.12d | start no earlier than 2002-11-26 |
| 578 |  | Simpson’s billboard signs | 1d? | 2002-11-26 | 2002-11-26 |  |  | 159.12d | start no earlier than 2002-11-26 |
| 579 |  | Task 1 | 1d? | 2002-11-26 | 2002-11-26 |  |  | 159.12d | start no earlier than 2002-11-26 |
| 580 |  | Task 2 | 1d? | 2002-11-26 | 2002-11-26 |  |  | 159.12d | start no earlier than 2002-11-26 |
| 581 |  | Task 3 | 1d? | 2002-11-26 | 2002-11-26 |  |  | 159.12d | start no earlier than 2002-11-26 |
| 582 | 2.8.4 | **Slava** | 19d? | 2002-12-12 | 2003-01-07 |  |  | 129.12d |  |
| 583 | 2.8.19 | **30 Generic Pedestrians (includes 600 hi and 200 low res) (1 per day)** | 4d? | 2002-12-12 | 2002-12-17 | 556 |  | 129.12d |  |
| 584 |  | 10 adult females | 1d? | 2002-12-12 | 2002-12-12 |  |  | 129.12d | start no earlier than 2002-11-26 |
| 585 |  | 10 adult males | 1d? | 2002-12-13 | 2002-12-13 | 584 |  | 129.12d | start no earlier than 2002-11-26 |
| 586 |  | 5 male kids | 1d? | 2002-12-16 | 2002-12-16 | 585 |  | 129.12d | start no earlier than 2002-11-26 |
| 587 |  | 5 female kids | 1d? | 2002-12-17 | 2002-12-17 | 586 |  | 129.12d | start no earlier than 2002-11-26 |
| 588 |  | Finalize specular on user walker characters (1 day) | 1d? | 2002-12-18 | 2002-12-18 | 587 |  | 129.12d | start no earlier than 2002-11-26 |
| 589 | 2.8.4.3 | **14 Bonus Characters (1 character 2 days)** | 14d? | 2002-12-19 | 2003-01-07 | 588 |  | 129.12d |  |
| 590 |  | Homer in his underwear | 1d? | 2002-12-19 | 2002-12-19 |  |  | 129.12d | start no earlier than 2002-11-26 |
| 591 |  | Homer in Stonecutters Robe | 1d? | 2002-12-20 | 2002-12-20 | 590 |  | 129.12d | start no earlier than 2002-11-26 |
| 592 |  | Fat Homer | 1d? | 2002-12-23 | 2002-12-23 | 591 |  | 129.12d | start no earlier than 2002-11-26 |
| 593 |  | Homer with donut for head | 1d? | 2002-12-24 | 2002-12-24 | 592 |  | 129.12d | start no earlier than 2002-11-26 |
| 594 |  | Bart in military dress uniform | 1d? | 2002-12-25 | 2002-12-25 | 593 |  | 129.12d | start no earlier than 2002-11-26 |
| 595 |  | Bart in Ninja outfit | 1d? | 2002-12-26 | 2002-12-26 | 594 |  | 129.12d | start no earlier than 2002-11-26 |
| 596 |  | Bartman outfit with Cape | 1d? | 2002-12-27 | 2002-12-27 | 595 |  | 129.12d | start no earlier than 2002-11-26 |
| 597 |  | Bart in football uniform | 1d? | 2002-12-30 | 2002-12-30 | 596 |  | 129.12d | start no earlier than 2002-11-26 |
| 598 |  | Lisa cool Lisa | 1d? | 2002-12-31 | 2002-12-31 | 597 |  | 129.12d | start no earlier than 2002-11-26 |
| 599 |  | Lisa in hockey jersey | 1d? | 2003-01-01 | 2003-01-01 | 598 |  | 129.12d | start no earlier than 2002-11-26 |
| 600 |  | Marge in police outfit | 1d? | 2003-01-02 | 2003-01-02 | 599 |  | 129.12d | start no earlier than 2002-11-26 |
| 601 |  | Marge in florida prison uniform | 1d? | 2003-01-03 | 2003-01-03 | 600 |  | 129.12d | start no earlier than 2002-11-26 |
| 602 |  | Apu in All American suit | 1d? | 2003-01-06 | 2003-01-06 | 601 |  | 129.12d | start no earlier than 2002-11-26 |
| 603 |  | Apu in Indian Army uniform | 1d? | 2003-01-07 | 2003-01-07 | 602 |  | 129.12d | start no earlier than 2002-11-26 |
| 604 |  | Task 1 | 1d? | 2002-12-19 | 2002-12-19 |  |  | 142.12d | start no earlier than 2002-11-26 |
| 605 |  | Task 2 | 1d? | 2002-12-19 | 2002-12-19 |  |  | 142.12d | start no earlier than 2002-11-26 |
| 606 |  | Task 3 | 1d? | 2002-12-19 | 2002-12-19 |  |  | 142.12d | start no earlier than 2002-11-26 |
| 607 | 2.8.5 | **Kevin Fink** | 41.88d? | 2002-10-15 A | 2002-12-11 |  | 22% | 148.12d |  |
| 608 |  | Rework of Duff truck in the game | 1d? | 2002-11-26 A | 2002-11-26 A |  | 100% |  | start no earlier than 2002-11-26 |
| 609 |  | Main vehicles shadows need to look sharper (Talk to James Harrison) | 1d? | 2002-11-26 A | 2002-11-26 |  | 90% | 159.12d | start no earlier than 2002-11-26 |
| 610 | 2.8.5.3 | **Ensure all environmental mapping is working Top quality in game.** | 1d? | 2002-11-26 | 2002-11-26 |  |  | 159.12d |  |
| 611 |  | -Need to address damage states on vehicles with Environmental mapping | 1d? | 2002-11-26 | 2002-11-26 |  |  | 159.12d | start no earlier than 2002-11-26 |
| 612 | 2.8.5.4 | **Oversee issue of Lighting per level on vehicles.** | 1d? | 2002-11-26 | 2002-11-26 |  |  | 159.12d |  |
| 613 |  | -Talk to Joel and Devin. | 1d? | 2002-11-26 | 2002-11-26 |  |  | 159.12d | start no earlier than 2002-11-26 |
| 614 | 2.8.5.5 | **Tweaks to existing Driver Vehicles** | 1d? | 2002-10-15 A | 2002-10-16 A |  | 100% |  |  |
| 615 |  | -Based on feedback from vehicle meeting. | 1d? | 2002-10-15 A | 2002-10-16 A |  | 100% |  | start no earlier than 2002-10-15 |
| 616 | 2.8.5.6 | **Specific Particle effects for driver vehicles: Includes trunk gags.** | 1d? | 2002-11-26 | 2002-11-26 | 615 |  | 159.12d |  |
| 617 |  | Chris Mitchell to come up with design list | 1d? | 2002-11-26 | 2002-11-26 |  |  | 159.12d | start no earlier than 2002-11-26 |
| 618 | 2.8.5.7 | **Break lights and headlights working in-game:** | 1d? | 2002-11-27 A | 2002-11-27 A | 617 | 100% |  |  |
| 619 |  | Headlight glow and cone on main vehicle and glows only for traffic vehicles. Establish pipeline with Carey B or Greg. | 1d? | 2002-11-27 A | 2002-11-27 A |  | 100% |  | start no earlier than 2002-11-26 |
| 620 | 2.8.5.8 | **Build and texture Museum with T-Rex. (First pass)** | 1d? | 2002-11-28 | 2002-11-28 | 619 |  | 5d |  |
| 621 |  | Need design and reference (Talk to Vincent) | 1d? | 2002-11-28 | 2002-11-28 |  |  | 5d | start no earlier than 2002-11-26 |
| 622 |  | Fix skid marks (Too light right now) | 1d? | 2002-11-29 | 2002-11-29 | 621 |  | 5d | start no earlier than 2002-11-26 |
| 623 |  | Remaining reward vehicles | 1d? | 2002-12-02 | 2002-12-02 | 622 |  | 5d | start no earlier than 2002-11-26 |
| 624 | 2.8.5.11 | **Get all in with main texture only** | 7d? | 2002-12-03 A | 2002-12-11 | 623 | 5% | 148.12d |  |
| 625 |  | Moe's Sedan | 1d? | 2002-12-03 | 2002-12-03 |  |  | 148.62d | start no earlier than 2002-11-26 |
| 626 |  | Book Burning Mobile | 1d? | 2002-12-04 | 2002-12-04 | 625 |  | 148.62d | start no earlier than 2002-11-26 |
| 627 |  | F1/Nascar | 1d? | 2002-12-05 | 2002-12-05 | 626 |  | 148.62d | start no earlier than 2002-11-26 |
| 628 |  | School Bus | 1d? | 2002-12-06 | 2002-12-06 | 627 |  | 148.62d | start no earlier than 2002-11-26 |
| 629 |  | PlowKing | 1d? | 2002-12-09 | 2002-12-09 | 628 |  | 148.62d | start no earlier than 2002-11-26 |
| 630 |  | Scorpio Car | 1d? | 2002-12-10 A | 2002-12-10 | 629 | 50% | 148.12d | start no earlier than 2002-11-26 |
| 631 |  | Willie Tractor | 1d? | 2002-12-11 | 2002-12-11 | 630 |  | 148.12d | start no earlier than 2002-11-26 |
| 632 |  | Task 1 | 1d? | 2002-12-03 | 2002-12-03 |  |  | 154.12d | start no earlier than 2002-11-26 |
| 633 |  | Task 2 | 1d? | 2002-12-03 | 2002-12-03 |  |  | 154.12d | start no earlier than 2002-11-26 |

| ID | WBS | Task | Duration | Start | Finish | Predecessors | Total float | Constraint |
| --- | --- | --- | --- | --- | --- | --- | --- | --- |
| 634 |  | Task 3 | 1d? | 2002-12-03 | 2002-12-03 |  | 154.12d | start no earlier than 2002-11-26 |
| 635 | 2.8.6 | **Ting** | 16d? | 2002-11-26 | 2002-12-17 |  | 144.12d |  |
| 636 | 2.8.6.1 | **Front End:** | 16d? | 2002-11-26 | 2002-12-17 |  | 144.12d |  |
| 637 | 2.8.6.1.1 | **Card Gallery Screen:** | 1d? | 2002-11-26 | 2002-11-26 |  | 159.12d |  |
| 638 | 2.8.6.1.1.1 | **Collector Cards** | 1d? | 2002-11-26 | 2002-11-26 |  | 159.12d |  |
| 639 |  | 6 remaing cards to create | 1d? | 2002-11-26 | 2002-11-26 |  | 159.12d | start no earlier than 2002-11-26 |
| 640 |  | 7 Bonus cards | 1d? | 2002-11-26 | 2002-11-26 |  | 159.12d | start no earlier than 2002-11-26 |
| 641 | 2.8.6.1.1.2 | **Card Gallery** | 1d? | 2002-11-26 | 2002-11-26 |  | 159.12d |  |
| 642 |  | Finalize screen layout | 1d? | 2002-11-26 | 2002-11-26 |  | 159.12d | start no earlier than 2002-11-26 |
| 643 |  | Reassess highlight cursor and card (Yayoi to confirm) | 1d? | 2002-11-26 | 2002-11-26 |  | 159.12d | start no earlier than 2002-11-26 |
| 644 |  | Card gallery arrows to game specific art | 1d? | 2002-11-26 | 2002-11-26 |  | 159.12d | start no earlier than 2002-11-26 |
| 645 |  | Card info screen need to create character icons | 1d? | 2002-11-26 | 2002-11-26 |  | 159.12d | start no earlier than 2002-11-26 |
| 646 | 2.8.6.1.2 | **Option Screen:** | 16d? | 2002-11-26 | 2002-12-17 |  | 144.12d |  |
| 647 | 2.8.6.1.2.1 | **Controller** | 1d? | 2002-11-26 | 2002-11-26 |  | 159.12d |  |
| 648 |  | Create game specific buttons | 1d? | 2002-11-26 | 2002-11-26 |  | 159.12d | start no earlier than 2002-11-26 |
| 649 |  | *double check on the doc, 10- 12 text lines space required | 1d? | 2002-11-26 | 2002-11-26 |  | 159.12d | start no earlier than 2002-11-26 |
| 650 | 2.8.6.1.2.2 | **Vibration** | 1d? | 2002-11-26 | 2002-11-26 |  | 159.12d |  |
| 651 |  | Need to know if this is necessary (Designer to determine) | 1d? | 2002-11-26 | 2002-11-26 |  | 159.12d | start no earlier than 2002-11-26 |
| 652 | 2.8.33 | **Sound** | 2d? | 2002-11-26 | 2002-11-27 |  | 144.12d |  |
| 653 |  | Sound icon (Need to be reviewed by Yayoi) | 1d? | 2002-11-26 | 2002-11-26 |  | 144.12d | start no earlier than 2002-11-26 |
| 654 |  | Create model and texture Krusty baby monitor 3d. | 1d? | 2002-11-27 | 2002-11-27 | 653 | 144.12d | start no earlier than 2002-11-26 |
| 655 | 2.8.6.1.2.4 | **Fonts:** | 1d? | 2002-11-28 | 2002-11-28 | 654 | 144.12d |  |
| 656 |  | Finalize all fonts for the game | 1d? | 2002-11-28 | 2002-11-28 |  | 144.12d | start no earlier than 2002-11-26 |
| 657 | 2.8.6.1.2.5 | **HUD:** | 4d? | 2002-11-29 | 2002-12-04 | 656 | 144.12d |  |
| 658 |  | Redesign of icons for nav map. | 1d? | 2002-11-29 | 2002-11-29 |  | 144.12d | start no earlier than 2002-11-26 |
| 659 |  | Navigation map finalize art (with Borders) | 1d? | 2002-12-02 | 2002-12-02 | 658 | 144.12d | start no earlier than 2002-11-26 |
| 660 |  | Create mission icon collectibles (Need to determine with designers) | 1d? | 2002-12-03 | 2002-12-03 | 659 | 144.12d | start no earlier than 2002-11-26 |
| 661 |  | Action button reassess | 1d? | 2002-12-04 | 2002-12-04 | 660 | 144.12d | start no earlier than 2002-11-26 |
| 662 | 2.8.6.1.2.6 | **Loading screen:** | 2d? | 2002-12-05 | 2002-12-06 | 661 | 144.12d |  |
| 663 |  | All level loading newspaper headline screen (need reference) (Talk to Chris) | 1d? | 2002-12-05 | 2002-12-05 |  | 144.12d | start no earlier than 2002-11-26 |
| 664 |  | Create in-game generic loading screen (Yayoi to determine) (Itchy and Scratchy) | 1d? | 2002-12-06 | 2002-12-06 | 663 | 144.12d | start no earlier than 2002-11-26 |
| 665 | 2.8.6.1.2.7 | **Pause menu:** | 7d? | 2002-12-09 | 2002-12-17 | 664 | 144.12d |  |
| 666 |  | Finalize Pause menu screen | 1d? | 2002-12-09 | 2002-12-09 |  | 144.12d | start no earlier than 2002-11-26 |
| 667 |  | Pause menu Map (Need to determined if needed) | 1d? | 2002-12-10 | 2002-12-10 | 666 | 144.12d | start no earlier than 2002-11-26 |
| 668 |  | Save game layout finalize | 1d? | 2002-12-11 | 2002-12-11 | 667 | 144.12d | start no earlier than 2002-11-26 |
| 669 |  | Quit game layout finalize | 1d? | 2002-12-12 | 2002-12-12 | 668 | 144.12d |  |
| 670 |  | Mission info text font finalize | 1d? | 2002-12-13 | 2002-12-13 | 669 | 144.12d |  |
| 671 |  | Redesign of card screen in pause menu maybe (Tech to investigate) | 1d? | 2002-12-16 | 2002-12-16 | 670 | 144.12d |  |
| 672 |  | Warning message overlay | 1d? | 2002-12-17 | 2002-12-17 | 671 | 144.12d |  |
| 673 |  | Task 1 | 1d? | 2002-12-09 | 2002-12-09 |  | 150.12d | start no earlier than 2002-11-26 |
| 674 |  | Task 2 | 1d? | 2002-12-09 | 2002-12-09 |  | 150.12d | start no earlier than 2002-11-26 |
| 675 |  | Task 3 | 1d? | 2002-12-09 | 2002-12-09 |  | 150.12d | start no earlier than 2002-11-26 |
| 676 | 2.9 | **Milestone 15 - Alpha (Jan 15th) (Temp)** | 51d? | 2002-12-16 | 2003-02-24 |  | 95d |  |
| 677 |  | All mission effects (Final) | 1d? | 2002-12-16 | 2002-12-17 |  | 95d | start no earlier than 2002-12-16 |
| 678 |  | Mission effects Remaining for suburbs | 1d? | 2002-12-17 | 2002-12-18 | 677 | 95d |  |
| 679 |  | Special effects for location volumes | 1d? | 2002-12-18 | 2002-12-19 | 678 | 95d |  |
| 680 |  | Special effects for powerplant | 1d? | 2002-12-19 | 2002-12-20 | 679 | 95d |  |
| 681 |  | Special effects for Downtown | 1d? | 2002-12-20 | 2002-12-23 | 680 | 95d |  |
| 682 |  | Mission effects for Downtown (Probably done once suburbs mission effects final) | 1d? | 2002-12-23 | 2002-12-24 | 681 | 95d |  |
| 683 |  | Breakables for Downtown | 1d? | 2002-12-24 | 2002-12-25 | 682 | 95d |  |
| 684 |  | Breakables for Suburbs final | 1d? | 2002-12-25 | 2002-12-26 | 683 | 95d |  |
| 685 |  | 2 interiors for Downtown complete | 1d? | 2002-12-26 | 2002-12-27 | 684 | 95d | start no earlier than 2002-10-15 |
| 686 |  | design 2 interior for Seaside | 1d? | 2002-12-27 | 2002-12-30 | 685 | 95d |  |
| 687 |  | Finalize intro movie (Pending Title for game approved) | 1d? | 2002-12-30 | 2002-12-31 | 686 | 95d | start no earlier than 2002-10-15 |
| 688 |  | FMV #2 40% complete (% percentage will be higher if dialogue recorded) | 1d? | 2002-12-31 | 2003-01-01 | 687 | 95d |  |
| 689 |  | Remaining in-game animations final (dependent on Driver, passenger, pedestrian all implemented in game) | 1d? | 2003-01-01 | 2003-01-02 | 688 | 95d |  |
| 690 | 2.9.14 | **FMV #2 - 7 animatic completed (Pending on FOx Approval)** | 5d? | 2003-01-02 | 2003-01-09 | 689 | 95d |  |
| 691 |  | FMV #3 | 1d? | 2003-01-02 | 2003-01-03 |  | 95d |  |
| 692 |  | FMV #4 | 1d? | 2003-01-03 | 2003-01-06 | 691 | 95d |  |
| 693 |  | FMV #5 | 1d? | 2003-01-06 | 2003-01-07 | 692 | 95d |  |
| 694 |  | FMV #6 | 1d? | 2003-01-07 | 2003-01-08 | 693 | 95d |  |
| 695 |  | FMV #7 | 1d? | 2003-01-08 | 2003-01-09 | 694 | 95d |  |
| 696 |  | Gags all working for suburbs and Downtown | 1d? | 2003-01-09 | 2003-01-10 | 690 | 95d |  |
| 697 |  | 2 weeks on Seaside (all people) | 1d? | 2003-01-10 | 2003-01-13 | 696 | 95d | start no earlier than 2002-10-15 |
| 698 |  | 1 week halloween complete (2 people) | 1d? | 2003-01-13 | 2003-01-14 | 697 | 95d |  |
| 699 |  | 1 week Seaside complete (3 people) | 1d? | 2003-01-14 | 2003-01-15 | 698 | 95d |  |
| 700 |  | Selma | 1d? | 2003-01-15 | 2003-01-16 | 699 | 95d | start no earlier than 2002-10-15 |
| 701 |  | Skinner | 1d? | 2003-01-16 | 2003-01-17 | 700 | 95d |  |
| 702 |  | Sea Captain | 1d? | 2003-01-17 | 2003-01-20 | 701 | 95d |  |
| 703 |  | Sideshow Bob float | 1d? | 2003-01-20 | 2003-01-21 | 702 | 95d |  |

| ID | WBS | Task | Duration | Start | Finish | Predecessors | Total float | Constraint |
| --- | --- | --- | --- | --- | --- | --- | --- | --- |
| 704 | 2.9.23 | **Generic Pedestrians** | 4d? | 2003-01-21 | 2003-01-27 | 703 | 95d |  |
| 705 |  | Generic ped kid F | 1d? | 2003-01-21 | 2003-01-22 |  | 95d |  |
| 706 |  | Generic ped kid M | 1d? | 2003-01-22 | 2003-01-23 | 705 | 95d |  |
| 707 |  | Generic ped adult M2 | 1d? | 2003-01-23 | 2003-01-24 | 706 | 95d |  |
| 708 |  | Generic ped adult F2 | 1d? | 2003-01-24 | 2003-01-27 | 707 | 95d |  |
| 709 |  | Zombie character | 1d? | 2003-01-27 | 2003-01-28 | 704 | 95d |  |
| 710 |  | (Need to find out from designers about monkey status) | 1d? | 2003-01-28 | 2003-01-29 | 709 | 95d |  |
| 711 |  | Damage states for all driver vehicles complete | 1d? | 2003-01-29 | 2003-01-30 | 710 | 95d | start no earlier than 2002-10-15 |
| 712 |  | Cartoonify Traffic vehicles | 1d? | 2003-01-30 | 2003-01-31 | 711 | 95d |  |
| 713 |  | Environmental mapping complete on vehicles. | 1d? | 2003-01-31 | 2003-02-03 | 712 | 95d |  |
| 714 |  | Track sprays and SKid marks final | 1d? | 2003-02-03 | 2003-02-04 | 713 | 95d |  |
| 715 |  | More vehicles | 1d? | 2003-02-04 | 2003-02-05 | 714 | 95d |  |
| 716 | 2.9.31 | **Generic Gremlin (Race)** | 7d? | 2003-02-05 | 2003-02-14 | 715 | 95d |  |
| 717 |  | (3) Black Limo (Chase and Destroy)* | 1d? | 2003-02-05 | 2003-02-06 |  | 95d |  |
| 718 |  | (5) Cola truck and Black Sedans (Chase and evade) (red /white siren ) | 1d? | 2003-02-06 | 2003-02-07 | 717 | 95d |  |
| 719 |  | (5) Armored Truck (Chase and destroy) | 1d? | 2003-02-07 | 2003-02-10 | 718 | 95d |  |
| 720 |  | (5) Curator vehicle (Race) | 1d? | 2003-02-10 | 2003-02-11 | 719 | 95d |  |
| 721 |  | (6) Krusty> '> s Limo (race) | 1d? | 2003-02-11 | 2003-02-12 | 720 | 95d |  |
| 722 |  | (7) Black Ferrini (race) | 1d? | 2003-02-12 | 2003-02-13 | 721 | 95d |  |
| 723 |  | (7) Generic Zombie Hearse Vehicle ???? ( Evade) (green/orange siren ) | 1d? | 2003-02-13 | 2003-02-14 | 722 | 95d |  |
| 724 |  | more reward vehicles (have yet to be determined with designers) | 1d? | 2003-02-14 | 2003-02-15 | 723, 716 | 95d |  |
| 725 |  | Finalize Navigation map on hud (Needs redesign) | 1d? | 2003-02-15 | 2003-02-17 | 724 | 95d | start no earlier than 2002-10-15 |
| 726 |  | Mission object icons for HUD | 1d? | 2003-02-17 | 2003-02-18 | 725 | 95d |  |
| 727 |  | All collector cards complete for all levels (This may not be feasible pending new design changes) | 1d? | 2003-02-18 | 2003-02-19 | 726 | 95d |  |
| 728 |  | Finalize Card Gallery | 1d? | 2003-02-19 | 2003-02-20 | 727 | 95d |  |
| 729 |  | Finalize Pause Menu | 1d? | 2003-02-20 | 2003-02-21 | 728 | 95d |  |
| 730 |  | Design menu screens for new designs (Need to clarify with Carey) | 1d? | 2003-02-21 | 2003-02-24 | 729 | 95d |  |
| 731 | 2.10 | **Milestone 16 - Beta (Feb 28th) (Temp)** | 51d? | 2003-01-16 | 2003-03-26 |  | 72d |  |
| 732 |  | All mission effects (Final) | 1d? | 2003-01-16 | 2003-01-17 |  | 72d | start no earlier than 2003-01-16 |
| 733 |  | Mission effects Remaining for suburbs | 1d? | 2003-01-17 | 2003-01-20 | 732 | 72d |  |
| 734 |  | Special effects for location volumes | 1d? | 2003-01-20 | 2003-01-21 | 733 | 72d |  |
| 735 |  | Special effects for powerplant | 1d? | 2003-01-21 | 2003-01-22 | 734 | 72d |  |
| 736 |  | Special effects for Downtown | 1d? | 2003-01-22 | 2003-01-23 | 735 | 72d |  |
| 737 |  | Mission effects for Downtown (Probably done once suburbs mission effects final) | 1d? | 2003-01-23 | 2003-01-24 | 736 | 72d |  |
| 738 |  | Breakables for Downtown | 1d? | 2003-01-24 | 2003-01-27 | 737 | 72d |  |
| 739 |  | Breakables for Suburbs final | 1d? | 2003-01-27 | 2003-01-28 | 738 | 72d |  |
| 740 |  | 2 interiors for Downtown complete | 1d? | 2003-01-28 | 2003-01-29 | 739 | 72d | start no earlier than 2002-10-15 |
| 741 |  | design 2 interior for Seaside | 1d? | 2003-01-29 | 2003-01-30 | 740 | 72d |  |
| 742 |  | Finalize intro movie (Pending Title for game approved) | 1d? | 2003-01-30 | 2003-01-31 | 741 | 72d | start no earlier than 2002-10-15 |
| 743 |  | FMV #2 40% complete (% percentage will be higher if dialogue recorded) | 1d? | 2003-01-31 | 2003-02-03 | 742 | 72d |  |
| 744 |  | Remaining in-game animations final (dependent on Driver, passenger, pedestrian all implemented in game) | 1d? | 2003-02-03 | 2003-02-04 | 743 | 72d |  |
| 745 | 2.10.14 | **FMV #2 - 7 animatic completed (Pending on FOx Approval)** | 5d? | 2003-02-04 | 2003-02-11 | 744 | 72d |  |
| 746 |  | FMV #3 | 1d? | 2003-02-04 | 2003-02-05 |  | 72d |  |
| 747 |  | FMV #4 | 1d? | 2003-02-05 | 2003-02-06 | 746 | 72d |  |
| 748 |  | FMV #5 | 1d? | 2003-02-06 | 2003-02-07 | 747 | 72d |  |
| 749 |  | FMV #6 | 1d? | 2003-02-07 | 2003-02-10 | 748 | 72d |  |
| 750 |  | FMV #7 | 1d? | 2003-02-10 | 2003-02-11 | 749 | 72d |  |
| 751 |  | Gags all working for suburbs and Downtown | 1d? | 2003-02-11 | 2003-02-12 | 745 | 72d |  |
| 752 |  | 2 weeks on Seaside (all people) | 1d? | 2003-02-12 | 2003-02-13 | 751 | 72d | start no earlier than 2002-10-15 |
| 753 |  | 1 week halloween complete (2 people) | 1d? | 2003-02-13 | 2003-02-14 | 752 | 72d |  |
| 754 |  | 1 week Seaside complete (3 people) | 1d? | 2003-02-14 | 2003-02-15 | 753 | 72d |  |
| 755 |  | Selma | 1d? | 2003-02-15 | 2003-02-17 | 754 | 72d | start no earlier than 2002-10-15 |
| 756 |  | Skinner | 1d? | 2003-02-17 | 2003-02-18 | 755 | 72d |  |
| 757 |  | Sea Captain | 1d? | 2003-02-18 | 2003-02-19 | 756 | 72d |  |
| 758 |  | Sideshow Bob float | 1d? | 2003-02-19 | 2003-02-20 | 757 | 72d |  |
| 759 | 2.10.23 | **Generic Pedestrians** | 4d? | 2003-02-20 | 2003-02-26 | 758 | 72d |  |
| 760 |  | Generic ped kid F | 1d? | 2003-02-20 | 2003-02-21 |  | 72d |  |
| 761 |  | Generic ped kid M | 1d? | 2003-02-21 | 2003-02-24 | 760 | 72d |  |
| 762 |  | Generic ped adult M2 | 1d? | 2003-02-24 | 2003-02-25 | 761 | 72d |  |
| 763 |  | Generic ped adult F2 | 1d? | 2003-02-25 | 2003-02-26 | 762 | 72d |  |
| 764 |  | Zombie character | 1d? | 2003-02-26 | 2003-02-27 | 759 | 72d |  |
| 765 |  | (Need to find out from designers about monkey status) | 1d? | 2003-02-27 | 2003-02-28 | 764 | 72d |  |
| 766 |  | Damage states for all driver vehicles complete | 1d? | 2003-02-28 | 2003-03-03 | 765 | 72d | start no earlier than 2002-10-15 |
| 767 |  | Cartoonify Traffic vehicles | 1d? | 2003-03-03 | 2003-03-04 | 766 | 72d |  |
| 768 |  | Environmental mapping complete on vehicles. | 1d? | 2003-03-04 | 2003-03-05 | 767 | 72d |  |
| 769 |  | Track sprays and SKid marks final | 1d? | 2003-03-05 | 2003-03-06 | 768 | 72d |  |
| 770 |  | More vehicles | 1d? | 2003-03-06 | 2003-03-07 | 769 | 72d |  |
| 771 | 2.10.31 | **Generic Gremlin (Race)** | 7d? | 2003-03-07 | 2003-03-17 | 770 | 72d |  |
| 772 |  | (3) Black Limo (Chase and Destroy)* | 1d? | 2003-03-07 | 2003-03-10 |  | 72d |  |
| 773 |  | (5) Cola truck and Black Sedans (Chase and evade) (red /white siren ) | 1d? | 2003-03-10 | 2003-03-11 | 772 | 72d |  |

| ID | WBS | Task | Duration | Start | Finish | Predecessors | Complete | Total float | Constraint |
| --- | --- | --- | --- | --- | --- | --- | --- | --- | --- |
| 774 |  | (5) Armored Truck (Chase and destroy) | 1d? | 2003-03-11 | 2003-03-12 | 773 |  | 72d |  |
| 775 |  | (5) Curator vehicle (Race) | 1d? | 2003-03-12 | 2003-03-13 | 774 |  | 72d |  |
| 776 |  | (6) Krusty> '> s Limo (race) | 1d? | 2003-03-13 | 2003-03-14 | 775 |  | 72d |  |
| 777 |  | (7) Black Ferrini (race) | 1d? | 2003-03-14 | 2003-03-15 | 776 |  | 72d |  |
| 778 |  | (7) Generic Zombie Hearse Vehicle ???? ( Evade) (green/orange siren ) | 1d? | 2003-03-15 | 2003-03-17 | 777 |  | 72d |  |
| 779 |  | more reward vehicles (have yet to be determined with designers) | 1d? | 2003-03-17 | 2003-03-18 | 778, 771 |  | 72d |  |
| 780 |  | Finalize Navigation map on hud (Needs redesign) | 1d? | 2003-03-18 | 2003-03-19 | 779 |  | 72d | start no earlier than 2002-10-15 |
| 781 |  | Mission object icons for HUD | 1d? | 2003-03-19 | 2003-03-20 | 780 |  | 72d |  |
| 782 |  | All collector cards complete for all levels (This may not be feasible pending new design changes) | 1d? | 2003-03-20 | 2003-03-21 | 781 |  | 72d |  |
| 783 |  | Finalize Card Gallery | 1d? | 2003-03-21 | 2003-03-24 | 782 |  | 72d |  |
| 784 |  | Finalize Pause Menu | 1d? | 2003-03-24 | 2003-03-25 | 783 |  | 72d |  |
| 785 |  | Design menu screens for new designs (Need to clarify with Carey) | 1d? | 2003-03-25 | 2003-03-26 | 784 |  | 72d |  |
| 786 | 2.11 | **Milestone 17 - Final (March 30th) (Temp)** | 51d? | 2003-03-03 | 2003-05-12 |  |  | 39d |  |
| 787 |  | All mission effects (Final) | 1d? | 2003-03-03 | 2003-03-04 |  |  | 39d | start no earlier than 2003-03-03 |
| 788 |  | Mission effects Remaining for suburbs | 1d? | 2003-03-04 | 2003-03-05 | 787 |  | 39d |  |
| 789 |  | Special effects for location volumes | 1d? | 2003-03-05 | 2003-03-06 | 788 |  | 39d |  |
| 790 |  | Special effects for powerplant | 1d? | 2003-03-06 | 2003-03-07 | 789 |  | 39d |  |
| 791 |  | Special effects for Downtown | 1d? | 2003-03-07 | 2003-03-10 | 790 |  | 39d |  |
| 792 |  | Mission effects for Downtown (Probably done once suburbs mission effects final) | 1d? | 2003-03-10 | 2003-03-11 | 791 |  | 39d |  |
| 793 |  | Breakables for Downtown | 1d? | 2003-03-11 | 2003-03-12 | 792 |  | 39d |  |
| 794 |  | Breakables for Suburbs final | 1d? | 2003-03-12 | 2003-03-13 | 793 |  | 39d |  |
| 795 |  | 2 interiors for Downtown complete | 1d? | 2003-03-13 | 2003-03-14 | 794 |  | 39d | start no earlier than 2002-10-15 |
| 796 |  | design 2 interior for Seaside | 1d? | 2003-03-14 | 2003-03-15 | 795 |  | 39d |  |
| 797 |  | Finalize intro movie (Pending Title for game approved) | 1d? | 2003-03-15 | 2003-03-17 | 796 |  | 39d | start no earlier than 2002-10-15 |
| 798 |  | FMV #2 40% complete (% percentage will be higher if dialogue recorded) | 1d? | 2003-03-17 | 2003-03-18 | 797 |  | 39d |  |
| 799 |  | Remaining in-game animations final (dependent on Driver, passenger, pedestrian all implemented in game) | 1d? | 2003-03-18 | 2003-03-19 | 798 |  | 39d |  |
| 800 | 2.11.14 | **FMV #2 - 7 animatic completed (Pending on FOx Approval)** | 5d? | 2003-03-19 | 2003-03-26 | 799 |  | 39d |  |
| 801 |  | FMV #3 | 1d? | 2003-03-19 | 2003-03-20 |  |  | 39d |  |
| 802 |  | FMV #4 | 1d? | 2003-03-20 | 2003-03-21 | 801 |  | 39d |  |
| 803 |  | FMV #5 | 1d? | 2003-03-21 | 2003-03-24 | 802 |  | 39d |  |
| 804 |  | FMV #6 | 1d? | 2003-03-24 | 2003-03-25 | 803 |  | 39d |  |
| 805 |  | FMV #7 | 1d? | 2003-03-25 | 2003-03-26 | 804 |  | 39d |  |
| 806 |  | Gags all working for suburbs and Downtown | 1d? | 2003-03-26 | 2003-03-27 | 800 |  | 39d |  |
| 807 |  | 2 weeks on Seaside (all people) | 1d? | 2003-03-27 | 2003-03-28 | 806 |  | 39d | start no earlier than 2002-10-15 |
| 808 |  | 1 week halloween complete (2 people) | 1d? | 2003-03-28 | 2003-03-31 | 807 |  | 39d |  |
| 809 |  | 1 week Seaside complete (3 people) | 1d? | 2003-03-31 | 2003-04-01 | 808 |  | 39d |  |
| 810 |  | Selma | 1d? | 2003-04-01 | 2003-04-02 | 809 |  | 39d | start no earlier than 2002-10-15 |
| 811 |  | Skinner | 1d? | 2003-04-02 | 2003-04-03 | 810 |  | 39d |  |
| 812 |  | Sea Captain | 1d? | 2003-04-03 | 2003-04-04 | 811 |  | 39d |  |
| 813 |  | Sideshow Bob float | 1d? | 2003-04-04 | 2003-04-07 | 812 |  | 39d |  |
| 814 | 2.11.23 | **Generic Pedestrians** | 4d? | 2003-04-07 | 2003-04-11 | 813 |  | 39d |  |
| 815 |  | Generic ped kid F | 1d? | 2003-04-07 | 2003-04-08 |  |  | 39d |  |
| 816 |  | Generic ped kid M | 1d? | 2003-04-08 | 2003-04-09 | 815 |  | 39d |  |
| 817 |  | Generic ped adult M2 | 1d? | 2003-04-09 | 2003-04-10 | 816 |  | 39d |  |
| 818 |  | Generic ped adult F2 | 1d? | 2003-04-10 | 2003-04-11 | 817 |  | 39d |  |
| 819 |  | Zombie character | 1d? | 2003-04-11 | 2003-04-14 | 814 |  | 39d |  |
| 820 |  | (Need to find out from designers about monkey status) | 1d? | 2003-04-14 | 2003-04-15 | 819 |  | 39d |  |
| 821 |  | Damage states for all driver vehicles complete | 1d? | 2003-04-15 | 2003-04-16 | 820 |  | 39d | start no earlier than 2002-10-15 |
| 822 |  | Cartoonify Traffic vehicles | 1d? | 2003-04-16 | 2003-04-17 | 821 |  | 39d |  |
| 823 |  | Environmental mapping complete on vehicles. | 1d? | 2003-04-17 | 2003-04-18 | 822 |  | 39d |  |
| 824 |  | Track sprays and SKid marks final | 1d? | 2003-04-18 | 2003-04-21 | 823 |  | 39d |  |
| 825 |  | More vehicles | 1d? | 2003-04-21 | 2003-04-22 | 824 |  | 39d |  |
| 826 | 2.11.31 | **Generic Gremlin (Race)** | 7d? | 2003-04-22 | 2003-05-01 | 825 |  | 39d |  |
| 827 |  | (3) Black Limo (Chase and Destroy)* | 1d? | 2003-04-22 | 2003-04-23 |  |  | 39d |  |
| 828 |  | (5) Cola truck and Black Sedans (Chase and evade) (red /white siren ) | 1d? | 2003-04-23 | 2003-04-24 | 827 |  | 39d |  |
| 829 |  | (5) Armored Truck (Chase and destroy) | 1d? | 2003-04-24 | 2003-04-25 | 828 |  | 39d |  |
| 830 |  | (5) Curator vehicle (Race) | 1d? | 2003-04-25 | 2003-04-28 | 829 |  | 39d |  |
| 831 |  | (6) Krusty> '> s Limo (race) | 1d? | 2003-04-28 | 2003-04-29 | 830 |  | 39d |  |
| 832 |  | (7) Black Ferrini (race) | 1d? | 2003-04-29 | 2003-04-30 | 831 |  | 39d |  |
| 833 |  | (7) Generic Zombie Hearse Vehicle ???? ( Evade) (green/orange siren ) | 1d? | 2003-04-30 | 2003-05-01 | 832 |  | 39d |  |
| 834 |  | more reward vehicles (have yet to be determined with designers) | 1d? | 2003-05-01 | 2003-05-02 | 833, 826 |  | 39d |  |
| 835 |  | Finalize Navigation map on hud (Needs redesign) | 1d? | 2003-05-02 | 2003-05-05 | 834 |  | 39d | start no earlier than 2002-10-15 |
| 836 |  | Mission object icons for HUD | 1d? | 2003-05-05 | 2003-05-06 | 835 |  | 39d |  |
| 837 |  | All collector cards complete for all levels (This may not be feasible pending new design changes) | 1d? | 2003-05-06 | 2003-05-07 | 836 |  | 39d |  |
| 838 |  | Finalize Card Gallery | 1d? | 2003-05-07 | 2003-05-08 | 837 |  | 39d |  |
| 839 |  | Finalize Pause Menu | 1d? | 2003-05-08 | 2003-05-09 | 838 |  | 39d |  |
| 840 |  | Design menu screens for new designs (Need to clarify with Carey) | 1d? | 2003-05-09 | 2003-05-12 | 839 |  | 39d |  |
| 842 | 20 | **CODING TASKS** | 319d? | 2002-04-16 A | 2003-07-04 |  | 20% | 0d |  |
| 843 | 21 | **Milestone 7 (May 15th)** | 66d | 2002-04-16 A | 2002-07-18 |  | 55% | 253d |  |
| 844 |  | Dynamic Loading Design | 22d | 2002-04-16 | 2002-05-16 |  |  | 297d | start no earlier than 2002-04-16 |

| ID | WBS | Task | Duration | Start | Finish | Predecessors | Complete | Total float | Constraint |
| --- | --- | --- | --- | --- | --- | --- | --- | --- | --- |
| 845 | 21.2 | **First Driveable** | 22d | 2002-04-16 A | 2002-05-16 A |  | 100% |  |  |
| 846 |  | Driving Engine (1st Pass) | 22d | 2002-04-16 A | 2002-05-16 A |  | 100% |  | start no earlier than 2002-04-16 |
| 847 | 21.3 | **Loading Manager (1st Pass)** | 4d | 2002-04-16 A | 2002-04-22 A |  | 100% |  |  |
| 848 |  | Implementation | 3d | 2002-04-16 A | 2002-04-19 A |  | 100% |  |  |
| 849 |  | Testing | 1d | 2002-04-19 A | 2002-04-22 A | 848 | 100% |  |  |
| 850 |  | Memory Monitor Integrated | 12d | 2002-04-22 A | 2002-05-08 A | 849 | 100% |  |  |
| 851 |  | Proview + Evaluation | 1d | 2002-04-16 A | 2002-04-17 A |  | 100% |  |  |
| 852 |  | Getting PS2 CodeWarrior build going | 2d | 2002-04-17 A | 2002-04-19 A | 851 | 100% |  |  |
| 853 |  | Write command-line script parser for World Builder | 4d | 2002-04-19 A | 2002-04-25 A | 852 | 100% |  |  |
| 854 |  | Design a naming convention/directory structure for the sound files | 1.88d | 2002-04-25 A | 2002-04-26 A | 853 | 100% |  |  |
| 855 |  | Take the makefile process from the prototype and incorporate it into SRR2, with .wav->.rsd conversion and type info generation | 0d | 2002-04-29 A | 2002-04-29 A | 854 | 100% |  |  |
| 856 |  | Add first cut at cement file generation to pipeline | 0d | 2002-05-02 A | 2002-05-02 A | 855 | 100% |  |  |
| 857 | 21.11 | **Controller System (1st Pass)** | 2.5d | 2002-04-16 A | 2002-04-18 A |  | 100% |  |  |
| 858 |  | Integrate controller system into new Game Architecture. | 0.5d | 2002-04-16 A | 2002-04-16 A |  | 100% |  |  |
| 859 |  | Clean up controller enumeration code. | 1d | 2002-04-16 A | 2002-04-17 A | 858 | 100% |  |  |
| 860 |  | Make use of memory pools ( if available) for controller objects. | 1d | 2002-04-17 A | 2002-04-18 A | 859 | 100% |  |  |
| 861 | 21.12 | **Integrate Choreo System** | 2.5d | 2002-04-18 A | 2002-04-23 A | 860 | 100% |  |  |
| 862 |  | Add choreo.dsp to Xbox | 0.5d | 2002-04-18 A | 2002-04-19 A |  | 100% |  |  |
| 863 |  | Add choreo library to PS2 build | 0.88d | 2002-04-19 A | 2002-04-19 A | 862 | 100% |  |  |
| 864 |  | Add choreo library to GameCube build | 0d | 2002-04-23 A | 2002-04-23 A | 863 | 100% |  |  |
| 865 | 21.13 | **Pipelines Implemented (1st Pass)** | 8d | 2002-04-16 A | 2002-04-26 A |  | 100% |  |  |
| 866 |  | Art Database Design | 0d | 2002-04-16 A | 2002-04-16 A |  | 100% |  |  |
| 867 |  | Implement quick-build | 2d | 2002-04-16 A | 2002-04-18 A |  | 100% |  |  |
| 868 |  | Implement art library support (instancing) | 2d | 2002-04-18 A | 2002-04-22 A | 867 | 100% |  |  |
| 869 |  | Implement (fix) art rules system | 2d | 2002-04-22 A | 2002-04-24 A | 868 | 100% |  |  |
| 870 |  | Implement art database interface | 2d | 2002-04-24 A | 2002-04-26 A | 869 | 100% |  |  |
| 871 | 21.14 | **Camera System (1st Pass)** | 15d | 2002-04-26 A | 2002-05-17 | 870 | 73% | 296d |  |
| 872 |  | Camera Design | 0d | 2002-04-26 A | 2002-04-26 A |  | 100% |  |  |
| 873 |  | Implement Supercam Central | 2d | 2002-04-26 A | 2002-04-30 A |  | 100% |  |  |
| 874 |  | Implement Main Camera mode (In car) | 3d | 2002-04-30 A | 2002-05-03 A | 873 | 100% |  |  |
| 875 |  | Implement Main Camera mode (on foot) | 3d | 2002-05-03 A | 2002-05-08 A | 874 | 100% |  |  |
| 876 |  | Implement Head-Head Camera mode | 3d | 2002-05-08 | 2002-05-13 | 875 |  | 300d |  |
| 877 |  | Implement Bumper-cam | 1d | 2002-05-13 A | 2002-05-14 A | 876 | 100% |  |  |
| 878 |  | Implement Cut-camera system | 2d | 2002-05-14 A | 2002-05-16 A | 877 | 100% |  |  |
| 879 |  | Implement "Race-Cam" | 1d | 2002-05-16 | 2002-05-17 | 878 |  | 296d |  |
| 880 | 21.15 | **Rendering Engine (1st Pass)** | 26d | 2002-04-18 A | 2002-05-27 |  | 96% | 291d |  |
| 881 | 21.15.1 | **RenderManager** | 6.75d | 2002-04-18 A | 2002-04-26 A |  | 100% |  |  |
| 882 |  | Render Docs | 1d | 2002-04-18 A | 2002-04-19 A |  | 100% |  | start no earlier than 2002-04-18 |
| 883 |  | Render Flow | 0.5d | 2002-04-19 A | 2002-04-19 A | 882 | 100% |  |  |
| 884 |  | Pure3D Views | 0.25d | 2002-04-22 A | 2002-04-22 A | 883 | 100% |  | start no earlier than 2002-04-22 |
| 885 |  | Pure3D Context | 0.25d | 2002-04-22 A | 2002-04-22 A | 884 | 100% |  |  |
| 886 |  | Pure3D Platform | 0.25d | 2002-04-22 A | 2002-04-22 A | 885 | 100% |  |  |
| 887 |  | Renderables | 1d | 2002-04-22 A | 2002-04-23 A | 886 | 100% |  |  |
| 888 |  | Layer System | 0.25d | 2002-04-23 A | 2002-04-24 A | 887 | 100% |  |  |
| 889 |  | Add/Remove View | 0.25d | 2002-04-24 A | 2002-04-24 A | 888 | 100% |  |  |
| 890 |  | Camera System | 0.5d | 2002-04-24 A | 2002-04-24 A | 889 | 100% |  |  |
| 891 |  | Debugging | 2d | 2002-04-24 A | 2002-04-26 A | 890 | 100% |  |  |
| 892 | 21.15.2 | **SceneGraph** | 7.5d | 2002-04-26 A | 2002-05-08 A | 891 | 100% |  |  |
| 893 |  | SceneGraph (static geo) | 1d | 2002-04-26 A | 2002-04-29 A |  | 100% |  | start no earlier than 2002-04-26 |
| 894 |  | SceneGraph (dyn geo) | 1.5d | 2002-04-29 A | 2002-05-01 A | 893 | 100% |  |  |
| 895 |  | Add/Remove Objects | 1d | 2002-05-01 A | 2002-05-02 A | 894 | 100% |  |  |
| 896 |  | Static World Loader | 1.5d | 2002-05-02 A | 2002-05-03 A | 895 | 100% |  |  |
| 897 |  | Debugging | 2.5d | 2002-05-03 A | 2002-05-08 A | 896 | 100% |  |  |
| 898 | 21.15.3 | **World Geometry** | 4.25d | 2002-05-08 A | 2002-05-14 | 897 | 76% | 298.5d |  |
| 899 |  | File Handlers | 0.5d | 2002-05-08 A | 2002-05-08 A |  | 100% |  |  |
| 900 |  | Simpsons Geo Loader | 0.5d | 2002-05-08 A | 2002-05-09 A | 899 | 100% |  |  |
| 901 |  | Intf w/ LoadManager | 0.25d | 2002-05-09 A | 2002-05-09 A | 900 | 100% |  |  |
| 902 |  | Pipeline Tools | 1d | 2002-05-09 | 2002-05-10 | 901 |  | 300.5d |  |
| 903 |  | Debugging | 2d | 2002-05-10 A | 2002-05-14 A | 902 | 100% |  |  |
| 904 | 21.15.4 | **Vehicles** | 7.5d | 2002-05-14 A | 2002-05-27 A | 903 | 100% |  |  |
| 905 |  | Connect to Physics | 3d | 2002-05-14 A | 2002-05-17 A |  | 100% |  |  |
| 906 |  | Loading | 1.25d | 2002-05-17 A | 2002-05-21 A | 905 | 100% |  |  |
| 907 |  | Render | 1d | 2002-05-21 A | 2002-05-22 A | 906 | 100% |  |  |
| 908 |  | Debugging | 2.25d | 2002-05-22 A | 2002-05-27 A | 907 | 100% |  |  |
| 909 | 21.16 | **Presentation Manager (1st Pass)** | 40.5d | 2002-04-16 A | 2002-06-12 |  | 46% | 278.5d |  |
| 910 | 21.16.1 | **Movie Player** | 12d | 2002-04-16 A | 2002-05-02 |  | 77% | 302d |  |
| 911 |  | MoviePlayer class | 1d | 2002-04-16 A | 2002-04-17 A |  | 100% |  |  |
| 912 |  | MoviePlayer code | 2d | 2002-04-17 A | 2002-04-19 A | 911 | 100% |  |  |
| 913 |  | PlatformPlayer code | 2d | 2002-04-19 A | 2002-04-23 A | 912 | 100% |  |  |
| 914 |  | Debugging | 7d | 2002-04-23 A | 2002-05-02 | 913 | 60% | 302d |  |

| ID | WBS | Task | Duration | Start | Finish | Predecessors | Complete | Total float | Constraint |
| --- | --- | --- | --- | --- | --- | --- | --- | --- | --- |
| 915 | 21.16.2 | **NIS Player** | 14d | 2002-05-02 A | 2002-05-23 | 914 | 64% | 293d |  |
| 916 |  | NISPlayer class | 1d | 2002-05-02 A | 2002-05-03 A |  | 100% |  |  |
| 917 |  | NIS queuing | 2d | 2002-05-03 A | 2002-05-07 A | 916 | 100% |  |  |
| 918 |  | NIS loading | 2d | 2002-05-07 A | 2002-05-09 A | 917 | 100% |  |  |
| 919 |  | Animation Controller | 2d | 2002-05-09 A | 2002-05-13 A | 918 | 100% |  |  |
| 920 |  | Sound Streams | 1d | 2002-05-13 | 2002-05-14 | 919 |  | 299d |  |
| 921 |  | Camera Animations | 2d | 2002-05-14 A | 2002-05-16 A | 920 | 100% |  |  |
| 922 |  | Debugging | 4d | 2002-05-16 | 2002-05-23 | 921 |  | 278.75d |  |
| 923 | 21.16.3 | **Gameplay Manager** | 4d | 2002-05-23 A | 2002-05-29 | 922 | 6% | 278.5d |  |
| 924 |  | GPManager class | 1d | 2002-05-23 A | 2002-05-24 |  | 25% | 278.5d |  |
| 925 |  | Basic code | 3d | 2002-05-24 | 2002-05-29 | 924 |  | 278.5d |  |
| 926 | 21.16.4 | **Presentation** | 10.5d | 2002-05-29 | 2002-06-12 | 925 |  | 278.5d |  |
| 927 |  | Get list of events | 0.5d | 2002-05-29 | 2002-05-29 |  |  | 278.5d |  |
| 928 |  | Play music | 0.5d | 2002-05-29 | 2002-05-30 | 927 |  | 278.5d |  |
| 929 |  | Play sounds | 0.5d | 2002-05-30 | 2002-05-30 | 928 |  | 278.5d |  |
| 930 |  | Show overlays | 0.5d | 2002-05-30 | 2002-05-31 | 929 |  | 278.5d |  |
| 931 |  | Hide overlays | 0.5d | 2002-05-31 | 2002-05-31 | 930 |  | 278.5d |  |
| 932 |  | Start of Mission Sequence | 2d | 2002-05-31 | 2002-06-04 | 931 |  | 278.5d |  |
| 933 |  | End of Mission Sequence | 3d | 2002-06-04 | 2002-06-07 | 932 |  | 278.5d |  |
| 934 |  | Debugging | 3d | 2002-06-07 | 2002-06-12 | 933 |  | 278.5d |  |
| 935 | 21.17 | **Head to Head (1st Pass)** | 32d | 2002-04-16 A | 2002-05-31 |  | 20% | 287d |  |
| 936 | 21.17.1 | **H2H Manager** | 9d | 2002-04-16 A | 2002-04-29 |  | 36% | 310d |  |
| 937 |  | H2HManager class | 0.5d | 2002-04-16 A | 2002-04-16 |  | 50% | 315d |  |
| 938 |  | H2HPlayer class | 0.5d | 2002-04-16 | 2002-04-17 | 937 |  | 315d |  |
| 939 |  | Two rendering views | 3d | 2002-04-17 | 2002-04-22 | 938 |  | 315d |  |
| 940 |  | Two controllers | 2d | 2002-04-22 A | 2002-04-24 A | 939 | 100% |  |  |
| 941 |  | H2HMission class | 2d | 2002-04-24 A | 2002-04-26 | 940 | 50% | 290d |  |
| 942 |  | SpawnFlag method start | 1d | 2002-04-26 | 2002-04-29 | 941 |  | 290d |  |
| 943 | 21.17.2 | **H2H Gameplay** | 17d | 2002-04-29 | 2002-05-23 | 942 |  | 290d |  |
| 944 |  | Get event requirements | 2d | 2002-04-29 | 2002-05-01 |  |  | 290d |  |
| 945 |  | Vehicle Collision | 0.5d | 2002-05-01 | 2002-05-01 | 944 |  | 290d |  |
| 946 |  | Flag Switching | 0.5d | 2002-05-01 | 2002-05-02 | 945 |  | 290d |  |
| 947 |  | Base Trigger | 0.5d | 2002-05-02 | 2002-05-02 | 946 |  | 290d |  |
| 948 |  | Out of bounds | 0.5d | 2002-05-02 | 2002-05-03 | 947 |  | 290d |  |
| 949 |  | Create sounds | 2d | 2002-05-03 | 2002-05-07 | 948 |  | 290d |  |
| 950 |  | Start and end pres. | 2d | 2002-05-07 | 2002-05-09 | 949 |  | 290d |  |
| 951 |  | Flag Render | 2d | 2002-05-09 | 2002-05-13 | 950 |  | 290d |  |
| 952 |  | Finish H2HMission class | 2d | 2002-05-13 | 2002-05-15 | 951 |  | 290d |  |
| 953 |  | Finish SpawnFlag method | 1d | 2002-05-15 | 2002-05-16 | 952 |  | 290d |  |
| 954 |  | Watch for vehicle proximity | 0.5d | 2002-05-16 | 2002-05-16 | 953 |  | 290d |  |
| 955 |  | Provide NavMap intf | 0.5d | 2002-05-16 | 2002-05-17 | 954 |  | 290d |  |
| 956 |  | Debugging | 3d | 2002-05-17 | 2002-05-23 | 955 |  | 290d |  |
| 957 | 21.17.3 | **Transitions** | 6d | 2002-05-23 A | 2002-05-31 | 956 | 50% | 287d |  |
| 958 |  | View/Layer Mgmt | 2d | 2002-05-23 A | 2002-05-27 A |  | 100% |  |  |
| 959 |  | Transition ViewWatcher | 0.5d | 2002-05-27 A | 2002-05-27 A | 958 | 100% |  |  |
| 960 |  | Full screen alpha | 0.5d | 2002-05-27 | 2002-05-28 | 959 |  | 290d |  |
| 961 |  | Left-to-right wipe | 0.5d | 2002-05-28 A | 2002-05-28 A | 960 | 100% |  |  |
| 962 |  | Cross fade | 0.5d | 2002-05-28 | 2002-05-29 | 961 |  | 275.5d |  |
| 963 |  | Debugging | 2d | 2002-05-29 | 2002-05-31 | 962 |  | 275.5d |  |
| 964 | 21.18 | **Milestone preparation** | 11.5d | 2002-05-31 | 2002-06-17 | 963 |  | 275.5d |  |
| 965 |  | MoviePlayer | 2d | 2002-05-31 | 2002-06-04 |  |  | 275.5d |  |
| 966 |  | NIS Player | 1d | 2002-06-04 | 2002-06-05 | 965 |  | 275.5d |  |
| 967 |  | Transitions | 2d | 2002-06-05 | 2002-06-07 | 966 |  | 275.5d |  |
| 968 |  | Gameplay Manager | 1d | 2002-06-07 | 2002-06-10 | 967 |  | 275.5d |  |
| 969 |  | Head to Head | 3d | 2002-06-10 | 2002-06-13 | 968 |  | 275.5d |  |
| 970 |  | Final Debugging | 2.5d | 2002-06-13 | 2002-06-17 | 969 |  | 275.5d |  |
| 971 |  | Integrate Watcher | 10d | 2002-04-16 A | 2002-04-30 A |  | 100% |  |  |
| 972 | 21.20 | **Art Database** | 42d | 2002-04-30 A | 2002-06-28 |  | 50% | 253d |  |
| 973 |  | Finalize Art Base Specs | 6d | 2002-04-30 A | 2002-05-08 A | 971 | 100% |  | start no earlier than 2002-04-26 |
| 974 |  | Create Backend to ArtDB (some kind of sql) | 20d | 2002-05-08 A | 2002-06-06 | 973 | 75% | 253d |  |
| 975 |  | Create Frontend to ArtDB | 16d | 2002-06-06 | 2002-06-28 | 974 |  | 253d |  |
| 976 | 21.21 | **Add Functionality** | 6d | 2002-06-28 | 2002-07-08 | 975 |  | 253d |  |
| 977 |  | Check for New textures | 2d | 2002-06-28 | 2002-07-02 |  |  | 253d |  |
| 978 |  | Check for New/Different Geometry | 2d | 2002-07-02 | 2002-07-04 | 977 |  | 253d |  |
| 979 |  | Generates New Records Report | 2d | 2002-07-04 | 2002-07-08 | 978 |  | 253d |  |
| 980 |  | Integrate with Art Pipeline | 8d | 2002-07-08 | 2002-07-18 | 979 |  | 253d |  |
| 981 | 22 | **Milestone 8 (June 15th)** | 22d | 2002-05-16 | 2002-06-18 |  |  | 275d |  |
| 982 | 22.1 | **Profiler Integrated** | 10d | 2002-05-16 | 2002-05-31 |  |  | 275d |  |
| 983 |  | Investigate VTune for Xbox | 2d | 2002-05-16 | 2002-05-21 |  |  | 275d | start no earlier than 2002-05-16 |
| 984 |  | Extract and cleanup Profiler from SRR | 2d | 2002-05-21 | 2002-05-23 | 983 |  | 275d |  |

| ID | WBS | Task | Duration | Start | Finish | Predecessors | Total float | Constraint |
| --- | --- | --- | --- | --- | --- | --- | --- | --- |
| 985 |  | Integrate Profiler | 2d | 2002-05-23 | 2002-05-27 | 984 | 275d |  |
| 986 |  | Integrate Watcher | 1d | 2002-05-27 | 2002-05-28 | 985 | 275d |  |
| 987 |  | Investigate Alternatives to DebugInfo | 1d | 2002-05-28 | 2002-05-29 | 986 | 275d |  |
| 988 |  | Integrate DebugInfo | 2d | 2002-05-29 | 2002-05-31 | 987 | 275d |  |
| 989 | 22.2 | **Memory System** | 5d | 2002-05-31 | 2002-06-07 | 988 | 275d |  |
| 990 |  | Implement Memory Pools | 3d | 2002-05-31 | 2002-06-05 |  | 275d | start no earlier than 2002-05-16 |
| 991 |  | Integrate Ftech Memory Monitor | 2d | 2002-06-05 | 2002-06-07 | 990 | 275d |  |
| 992 | 22.3 | **Scripting System (1st Pass)** | 7d | 2002-06-07 | 2002-06-18 |  | 275d |  |
| 993 |  | Extract and Cleanup Scripter from Mirth | 3d | 2002-06-07 | 2002-06-12 | 991 | 275d |  |
| 994 |  | Integrate Scripter | 3d | 2002-06-12 | 2002-06-17 | 993 | 275d |  |
| 995 |  | Testing | 1d | 2002-06-17 | 2002-06-18 | 994 | 275d |  |
| 996 |  | Add DA sound layer code to game | 3d | 2002-05-29 | 2002-06-03 |  | 278d | start no earlier than 2002-05-29 |
| 997 |  | Knock dead and unneeded code out of layer | 3d | 2002-06-03 | 2002-06-06 | 996 | 278d |  |
| 998 |  | Remove unneeded interfaces | 2d | 2002-06-06 | 2002-06-10 | 997 | 278d |  |
| 999 |  | Write simple sound drivers to load scripts and prove that sounds can be made | 2d | 2002-06-10 | 2002-06-12 | 998 | 278d |  |
| 1000 |  | Add debug display code | 1d | 2002-06-12 | 2002-06-13 | 999 | 278d |  |
| 1001 | 22.9 | **World builder complete** | 13d | 2002-05-16 | 2002-06-05 |  | 276d |  |
| 1002 |  | Implement Tree-line Tool | 4d | 2002-05-16 | 2002-05-23 |  | 276d | start no earlier than 2002-05-16 |
| 1003 |  | Implement Bilboarded Quad | 1d | 2002-05-23 | 2002-05-24 | 1002 | 276d |  |
| 1004 |  | Update Existing World builder tools | 4d | 2002-05-24 | 2002-05-30 | 1003 | 276d |  |
| 1005 |  | Create Locator Placement Plug-in | 2d | 2002-05-30 | 2002-06-03 | 1004 | 276d |  |
| 1006 |  | Integrate Sound Script Parsing System | 2d | 2002-06-03 | 2002-06-05 | 1005 | 276d |  |
| 1007 | 22.10 | **Create Art Database** | 8d | 2002-06-05 | 2002-06-17 | 1006 | 276d |  |
| 1008 |  | Integrate with Art Library | 3d | 2002-06-05 | 2002-06-10 |  | 276d |  |
| 1009 |  | Integrate with Art Pipeline Build | 2d | 2002-06-10 | 2002-06-12 | 1008 | 276d |  |
| 1010 |  | Integrate with Rules Generation | 3d | 2002-06-12 | 2002-06-17 | 1009 | 276d |  |
| 1011 | 22.11 | **Out of Car Functionality (1st Pass)** | 15d | 2002-05-16 | 2002-06-07 |  | 282d |  |
| 1012 | 22.11.1 | **Avatar system** | 4d | 2002-05-16 | 2002-05-23 |  | 282d |  |
| 1013 |  | Implement control (vehicle <--> character) switching logic. | 2d | 2002-05-16 | 2002-05-21 |  | 282d | start no earlier than 2002-05-16 |
| 1014 |  | Implement event handler for GetInCar event | 0.5d | 2002-05-21 | 2002-05-21 | 1013 | 282d |  |
| 1015 |  | Implement event handler for GetOutofCar event | 0.5d | 2002-05-21 | 2002-05-22 | 1014 | 282d |  |
| 1016 |  | Implement VehicleControllerFactory | 1d | 2002-05-22 | 2002-05-23 | 1015 | 282d |  |
| 1017 | 22.11.2 | **Character Manager** | 1d | 2002-05-23 | 2002-05-24 | 1016 | 282d |  |
| 1018 |  | Implement Character Manager (Create/Init/update/destroy) | 1d | 2002-05-23 | 2002-05-24 |  | 282d |  |
| 1019 | 22.11.3 | **Character Motion Controller** | 3d | 2002-05-24 | 2002-05-29 | 1018 | 282d |  |
| 1020 |  | Implement Locomotion smooth acceleration/decel | 0.5d | 2002-05-24 | 2002-05-24 |  | 282d |  |
| 1021 |  | Implement Locomotion smooth rotation | 0.5d | 2002-05-24 | 2002-05-27 | 1020 | 282d |  |
| 1022 |  | Implement U turn transition | 1d | 2002-05-27 | 2002-05-28 | 1021 | 282d |  |
| 1023 |  | Write basic Choreo script | 1d | 2002-05-28 | 2002-05-29 | 1022 | 282d |  |
| 1024 |  | Physical Character Controller Implementation | 0.5d | 2002-05-29 | 2002-05-29 | 1023 | 282d |  |
| 1025 |  | Physical Vehicle Controller Implementation | 0.5d | 2002-05-29 | 2002-05-30 | 1024 | 282d |  |
| 1026 | 22.11.6 | **Character Animations** | 4d | 2002-05-30 | 2002-06-05 | 1025 | 282d |  |
| 1027 |  | Implement Action Tree/Animation Sequencer (port from Hulk/Squidney) | 4d | 2002-05-30 | 2002-06-05 |  | 282d |  |
| 1028 | 22.11.7 | **Character AI** | 2d | 2002-06-05 | 2002-06-07 | 1027 | 282d |  |
| 1029 |  | Trigger GetInCar Event (poll input, test conditions: proximity to car) | 1d | 2002-06-05 | 2002-06-06 |  | 282d |  |
| 1030 |  | Trigger GetOutofCar Event | 1d | 2002-06-06 | 2002-06-07 | 1029 | 282d |  |
| 1031 | 22.12 | **World Sphere** | 1d | 2002-05-16 | 2002-05-17 |  | 296d |  |
| 1032 |  | Loading | 0.13d | 2002-05-16 | 2002-05-16 |  | 296d | start no earlier than 2002-05-16 |
| 1033 |  | Rendering | 0.62d | 2002-05-16 | 2002-05-16 | 1032 | 296d |  |
| 1034 |  | Debugging | 0.25d | 2002-05-16 | 2002-05-17 | 1033 | 296d |  |
| 1035 |  | Tuning Cars Possible | 21d | 2002-05-16 | 2002-06-17 |  | 276d | start no earlier than 2002-05-16 |
| 1036 |  | Car Damage States (1st Pass) | 21d | 2002-05-16 | 2002-06-17 |  | 276d | start no earlier than 2002-05-16 |
| 1037 |  | Collision Manager (1st Pass) | 21d | 2002-05-16 | 2002-06-17 |  | 276d | start no earlier than 2002-05-16 |
| 1038 |  | Track Editor Complete (1st Pass) | 21d | 2002-05-16 | 2002-06-17 |  | 276d | start no earlier than 2002-05-16 |
| 1039 |  | Basic FE System | 21d | 2002-05-16 | 2002-06-17 |  | 276d | start no earlier than 2002-05-16 |
| 1040 | 23 | **Milestone 9 (July 15th)** | 27d? | 2002-06-17 | 2002-07-24 |  | 249d |  |
| 1041 |  | Write Sound Manager class, with component creation/destruction | 2d | 2002-06-17 | 2002-06-19 |  | 249d | start no earlier than 2002-06-17 |
| 1042 |  | Write sound loader system | 4d | 2002-06-19 | 2002-06-25 | 1041 | 249d |  |
| 1043 |  | Write global tuner | 2d | 2002-06-25 | 2002-06-27 | 1042 | 249d |  |
| 1044 |  | Write SimpsonsSoundPlayer class | 3d | 2002-06-27 | 2002-07-02 | 1043 | 249d |  |
| 1045 |  | Write avatar sound system structure, ignoring logic for walker sound | 5d | 2002-07-02 | 2002-07-09 | 1044 | 249d |  |
| 1046 |  | Set up car sound system scripts with RadTuner support | 2d | 2002-07-09 | 2002-07-11 | 1045 | 249d |  |
| 1047 |  | Write sound effect subsystem | 3d | 2002-07-11 | 2002-07-16 | 1046 | 249d |  |
| 1048 |  | Write music subsystem | 3d | 2002-07-16 | 2002-07-19 | 1047 | 249d |  |
| 1049 |  | Set up music and sound effect scripts with RadTuner support | 2d | 2002-07-19 | 2002-07-23 | 1048 | 249d |  |
| 1050 |  | Add debug display code | 1d | 2002-07-23 | 2002-07-24 | 1049 | 249d |  |
| 1051 |  | Fence tool runtime to bound worlds | 1d? | 2002-06-17 | 2002-06-18 |  | 275d | start no earlier than 2002-06-17 |
| 1052 |  | Character Out of Car Interactions w/ World Objects (1st Pass) | 21d | 2002-06-17 | 2002-07-16 |  | 255d | start no earlier than 2002-06-17 |
| 1053 |  | Road Network System (1st Pass) | 21d | 2002-06-17 | 2002-07-16 |  | 255d | start no earlier than 2002-06-17 |
| 1054 |  | HUD Implemented (1st Pass) | 21d | 2002-06-17 | 2002-07-16 |  | 255d | start no earlier than 2002-06-17 |

| ID | WBS | Task | Duration | Start | Finish | Predecessors | Complete | Total float | Constraint |
| --- | --- | --- | --- | --- | --- | --- | --- | --- | --- |
| 1055 | 24 | **Milestone 10 (Aug 15th)** | 44d | 2002-06-17 | 2002-08-16 |  |  | 232d |  |
| 1056 | 24.1 | **Write SpeechCoordinator dialog management system** | 8d | 2002-07-16 | 2002-07-26 |  |  | 232d |  |
| 1057 |  | Class Structure | 3d | 2002-07-16 | 2002-07-19 |  |  | 232d | start no earlier than 2002-07-16 |
| 1058 |  | Parsing & sorting Code | 5d | 2002-07-19 | 2002-07-26 | 1057 |  | 232d |  |
| 1059 |  | Write DialogCoordinator | 2d | 2002-07-26 | 2002-07-30 | 1058 |  | 232d |  |
| 1060 |  | Write priority queue system | 5d | 2002-07-30 | 2002-08-06 | 1059 |  | 232d |  |
| 1061 |  | Add in the Cone of Silence logic | 4d | 2002-08-06 | 2002-08-12 | 1060 |  | 232d |  |
| 1062 |  | Linked conversation capability | 3d | 2002-08-12 | 2002-08-15 | 1061 |  | 232d |  |
| 1063 |  | Add debug display code | 1d | 2002-08-15 | 2002-08-16 | 1062 |  | 232d |  |
| 1064 |  | Chase/Evade Mission Playable | 23d | 2002-07-16 | 2002-08-16 |  |  | 231d | start no earlier than 2002-07-16 |
| 1065 |  | Collection Mission Playable | 23d | 2002-07-16 | 2002-08-16 |  |  | 231d | start no earlier than 2002-07-16 |
| 1066 |  | All Mission Types Possible | 23d | 2002-07-16 | 2002-08-16 |  |  | 231d | start no earlier than 2002-07-16 |
| 1067 |  | Chase AI (1st Pass) | 23d | 2002-07-16 | 2002-08-16 |  |  | 232d | start no earlier than 2002-07-16 |
| 1068 |  | Evade AI (1st Pass) | 23d | 2002-07-16 | 2002-08-16 |  |  | 232d | start no earlier than 2002-07-16 |
| 1069 |  | Traffic System AI (1st Pass) | 23d | 2002-07-16 | 2002-08-16 |  |  | 232d | start no earlier than 2002-07-16 |
| 1070 |  | Counter Measures (1st Pass) | 23d | 2002-07-16 | 2002-08-16 |  |  | 232d | start no earlier than 2002-07-16 |
| 1071 |  | Pedestrian AI (1st Pass) | 44d | 2002-06-17 | 2002-08-16 |  |  | 232d | start no earlier than 2002-06-17 |
| 1072 | 25 | **Milestone 11 (Sep 15th)** | 95d? | 2002-04-16 | 2002-08-28 |  |  | 224d |  |
| 1073 |  | Write ambient sound system | 5d | 2002-08-16 | 2002-08-23 |  |  | 224d | start no earlier than 2002-08-16 |
| 1074 |  | Write NIS sound system | 2d | 2002-08-23 | 2002-08-27 | 1073 |  | 224d |  |
| 1075 |  | Add debug display code | 1d | 2002-08-27 | 2002-08-28 | 1074 |  | 224d |  |
| 1076 |  | Xbox Ripping | 1d? | 2002-04-16 | 2002-04-17 |  |  | 318d |  |
| 1077 | 3.6 | **Milestone 12 (Oct 15th)** | 19d? | 2002-09-16 A | 2002-10-11 |  | 7% | 192d |  |
| 1078 |  | Ability to go to any mission from front end or pause menu | 1d? | 2002-09-16 | 2002-09-17 |  |  | 205d | start no earlier than 2002-09-16 |
| 1079 |  | Missions: Work with mission team to make sure they work | 1d? | 2002-09-17 | 2002-09-18 | 1078 |  | 205d |  |
| 1080 |  | Camera collisions: on foot | 1d? | 2002-09-18 | 2002-09-19 | 1079 |  | 205d |  |
| 1081 |  | Camera collisions: driving | 1d? | 2002-09-19 | 2002-09-20 | 1080 |  | 205d |  |
| 1082 |  | Camera collisions: interiors | 1d? | 2002-09-20 | 2002-09-23 | 1081 |  | 205d |  |
| 1083 |  | Rail Cam improvements | 1d? | 2002-09-23 | 2002-09-24 | 1082 |  | 205d |  |
| 1084 |  | Mission restart correctly resets the players position, mission elements, and returns to mission instruction screen | 1d? | 2002-09-16 | 2002-09-17 |  |  | 207d | start no earlier than 2002-09-16 |
| 1085 |  | Missions: Work with mission team to make sure they work | 1d? | 2002-09-17 | 2002-09-18 | 1084 |  | 207d |  |
| 1086 |  | Artist pipeline support | 1d? | 2002-09-18 | 2002-09-19 | 1085 |  | 207d |  |
| 1087 |  | Artist memory budget enforcement | 1d? | 2002-09-19 | 2002-09-20 | 1086 |  | 207d |  |
| 1088 |  | Audio for gag NISes | 1d? | 2002-09-16 A | 2002-09-17 |  | 75% | 210d | start no earlier than 2002-09-16 |
| 1089 |  | Engine sounds working correctly - 1st pass | 1d? | 2002-09-17 A | 2002-09-18 A | 1088 | 100% |  |  |
| 1090 |  | Dialog system: eye blinking and mouth flapping | 1d? | 2002-09-18 | 2002-09-19 | 1089 |  | 208d |  |
| 1091 |  | Interior sound effects - 1st pass | 1d? | 2002-09-19 A | 2002-09-20 A | 1090 | 100% |  |  |
| 1092 |  | PS2 mipmap tuning | 1d? | 2002-09-20 | 2002-09-23 | 1091 |  | 206d |  |
| 1093 |  | Interactive music integrated into the game | 1d? | 2002-09-23 A | 2002-09-24 A | 1092 | 100% |  |  |
| 1094 |  | Addition of some final sound effects - 1st pass | 1d? | 2002-09-24 A | 2002-09-25 A | 1093 | 100% |  |  |
| 1095 |  | Addition of placeholder audio (dialog, sound effects, engine sounds, music, etc) | 1d? | 2002-09-25 A | 2002-09-26 | 1094 | 90% | 203d |  |
| 1096 |  | Dialog system: eye blinking and mouth flapping | 1d? | 2002-09-16 | 2002-09-17 |  |  | 208d | start no earlier than 2002-09-16 |
| 1097 |  | Mission system improvements | 1d? | 2002-09-17 | 2002-09-18 | 1096 |  | 208d |  |
| 1098 |  | Vehicle AI system improvements | 1d? | 2002-09-18 | 2002-09-19 | 1097 |  | 208d |  |
| 1099 |  | More granularity in memory tracking system | 1d? | 2002-09-16 | 2002-09-17 |  |  | 206d | start no earlier than 2002-09-16 |
| 1100 |  | Interior gag audio | 1d? | 2002-09-17 | 2002-09-18 | 1099 |  | 206d |  |
| 1101 |  | Enter/Exit interior presentation with iris transition | 1d? | 2002-09-18 | 2002-09-19 | 1100 |  | 206d |  |
| 1102 |  | General memory management ongoing tasks | 1d? | 2002-09-19 | 2002-09-20 | 1101 |  | 206d |  |
| 1103 |  | Level start into NIS (e.g. get up off the couch in level 1) | 1d? | 2002-09-20 | 2002-09-23 | 1102 |  | 206d |  |
| 1104 |  | Local world spheres triggering and rendering correctly | 1d? | 2002-09-16 | 2002-09-17 |  |  | 203d | start no earlier than 2002-09-16 |
| 1105 |  | Z Sorting | 1d? | 2002-09-17 | 2002-09-18 | 1104 |  | 203d |  |
| 1106 |  | Texture randomization (e.g. for church sign) | 1d? | 2002-09-18 | 2002-09-19 | 1105 |  | 203d |  |
| 1107 |  | Billboard objects | 1d? | 2002-09-19 | 2002-09-20 | 1106 |  | 203d |  |
| 1108 |  | Toon lines on 3D icons | 1d? | 2002-09-20 | 2002-09-23 | 1107 |  | 203d |  |
| 1109 |  | DSG cleanup / abstract base class for DSG objects | 1d? | 2002-09-23 | 2002-09-24 | 1108 |  | 203d |  |
| 1110 |  | General dynamic loading ongoing tasks | 1d? | 2002-09-24 | 2002-09-25 | 1109 |  | 203d |  |
| 1111 |  | Load cancels working (dependent on P3D providing this) | 1d? | 2002-09-25 | 2002-09-26 | 1110 |  | 203d |  |
| 1112 |  | AI Traffic system: intelligent behaviour | 1d? | 2002-09-16 | 2002-09-17 |  |  | 205d | start no earlier than 2002-09-16 |
| 1113 |  | Chase AI | 1d? | 2002-09-17 | 2002-09-18 | 1112 |  | 205d |  |
| 1114 |  | Mission vehicle AI improvements | 1d? | 2002-09-18 | 2002-09-19 | 1113 |  | 205d |  |
| 1115 |  | Pedestrian data pipeline | 1d? | 2002-09-19 | 2002-09-20 | 1114 |  | 205d |  |
| 1116 |  | Pedestrian AI | 1d? | 2002-09-20 | 2002-09-23 | 1115 |  | 205d |  |
| 1117 |  | Pedestrian rendering | 1d? | 2002-09-23 | 2002-09-24 | 1116 |  | 205d |  |
| 1118 |  | Mission based vehicle parameters | 1d? | 2002-09-16 | 2002-09-17 |  |  | 192d | start no earlier than 2002-09-16 |
| 1119 |  | damage states on vehicles | 1d? | 2002-09-17 | 2002-09-18 | 1118 |  | 192d |  |
| 1120 |  | ongoing collision optimizations | 1d? | 2002-09-18 | 2002-09-19 | 1119 |  | 192d |  |
| 1121 |  | rest test for dynamic objects | 1d? | 2002-09-19 | 2002-09-20 | 1120 |  | 192d |  |
| 1122 |  | dynamic objects using art database properties | 1d? | 2002-09-20 | 2002-09-23 | 1121 |  | 192d |  |
| 1123 |  | dynamic objects rest tests | 1d? | 2002-09-23 | 2002-09-24 | 1122 |  | 192d |  |
| 1124 |  | driving engine: brake stands, burnouts, donuts | 1d? | 2002-09-24 | 2002-09-25 | 1123 |  | 192d |  |

| ID | WBS | Task | Duration | Start | Finish | Predecessors | Complete | Total float | Constraint |
| --- | --- | --- | --- | --- | --- | --- | --- | --- | --- |
| 1125 |  | driving engine: steep terrain handling - | 1d? | 2002-09-25 | 2002-09-26 | 1124 |  | 192d |  |
| 1126 |  | death volume handling for car | 1d? | 2002-09-26 | 2002-09-27 | 1125 |  | 192d |  |
| 1127 |  | car auto reset | 1d? | 2002-09-27 | 2002-09-30 | 1126 |  | 192d |  |
| 1128 |  | car reset to nearest reset point | 1d? | 2002-09-30 | 2002-10-01 | 1127 |  | 192d |  |
| 1129 |  | car moves correctly on moving platforms | 1d? | 2002-10-01 | 2002-10-02 | 1128 |  | 192d |  |
| 1130 |  | vehicle handling improvements | 1d? | 2002-10-02 | 2002-10-03 | 1129 |  | 192d |  |
| 1131 |  | Environmental mapping on cars | 1d? | 2002-10-03 | 2002-10-04 | 1130 |  | 192d | start no earlier than 2002-09-16 |
| 1132 |  | Particle tranlusency | 1d? | 2002-10-04 | 2002-10-07 | 1131 |  | 192d |  |
| 1133 |  | Better FMVs for Xbox and GC | 1d? | 2002-10-07 | 2002-10-08 | 1132 |  | 192d |  |
| 1134 |  | Create final logo FMVs for all 6 platforms | 1d? | 2002-10-08 | 2002-10-09 | 1133 |  | 192d |  |
| 1135 |  | FMVs playing in game (in between missions) | 1d? | 2002-10-09 | 2002-10-10 | 1134 |  | 192d |  |
| 1136 |  | Xbox ripping | 1d? | 2002-10-10 | 2002-10-11 | 1135 |  | 192d |  |
| 1137 |  | All breakable objects added to the game | 1d? | 2002-09-16 | 2002-09-17 |  |  | 205d | start no earlier than 2002-09-16 |
| 1138 |  | All particle effects added to the game | 1d? | 2002-09-17 | 2002-09-18 | 1137 |  | 205d |  |
| 1139 |  | All collectible effects added to the game | 1d? | 2002-09-18 | 2002-09-19 | 1138 |  | 205d |  |
| 1140 |  | Shadows added for all characters and cars | 1d? | 2002-09-19 | 2002-09-20 | 1139 |  | 205d |  |
| 1141 |  | Water effects working in game | 1d? | 2002-09-20 | 2002-09-23 | 1140 |  | 205d |  |
| 1142 |  | Skid marks on terrain | 1d? | 2002-09-23 | 2002-09-24 | 1141 |  | 205d |  |
| 1143 |  | Screen for selecting a mission from F/E | 1d? | 2002-09-16 | 2002-09-17 |  |  | 205d | start no earlier than 2002-09-16 |
| 1144 |  | Screen for selecting a mission from pause menu | 1d? | 2002-09-17 | 2002-09-18 | 1143 |  | 205d |  |
| 1145 |  | Mission presentation HUD art iteration ongoing task | 1d? | 2002-09-18 | 2002-09-19 | 1144 |  | 205d |  |
| 1146 |  | Can load/save games on memory card | 1d? | 2002-09-19 | 2002-09-20 | 1145 |  | 205d |  |
| 1147 |  | Memory card screens | 1d? | 2002-09-20 | 2002-09-23 | 1146 |  | 205d |  |
| 1148 |  | Cheat input system | 1d? | 2002-09-23 | 2002-09-24 | 1147 |  | 205d |  |
| 1149 |  | Hailing system: presentation | 1d? | 2002-09-16 | 2002-09-17 |  |  | 200d | start no earlier than 2002-09-16 |
| 1150 |  | Proper car disappearance handling when hailing a car | 1d? | 2002-09-17 | 2002-09-18 | 1149 |  | 200d |  |
| 1151 |  | Handling of player hit by car | 1d? | 2002-09-18 | 2002-09-19 | 1150 |  | 200d |  |
| 1152 |  | Car door opens and closes properly on character entry/exit | 1d | 2002-09-19 | 2002-09-20 | 1151 |  | 200d |  |
| 1153 |  | All collectible objects rendering correctly | 1d? | 2002-09-20 | 2002-09-23 | 1152 |  | 200d |  |
| 1154 |  | All collectible functionality working (food boosts, cards reflected in F/E, etc) | 1d? | 2002-09-23 | 2002-09-24 | 1153 |  | 200d |  |
| 1155 |  | Death volume handling for on foot | 1d? | 2002-09-24 | 2002-09-25 | 1154 |  | 200d |  |
| 1156 |  | Boss missions implemented | 1d? | 2002-09-25 | 2002-09-26 | 1155 |  | 200d |  |
| 1157 |  | In car character animations | 1d? | 2002-09-26 | 2002-09-27 | 1156 |  | 200d |  |
| 1158 |  | Skinned collectibles working (i.e. monkeys) | 1d? | 2002-09-27 | 2002-09-30 | 1157 |  | 200d |  |
| 1159 |  | On foot gameplay ongoing task | 1d? | 2002-09-30 | 2002-10-01 | 1158 |  | 200d |  |
| 1160 | 3.7 | **Milestone 13 (Nov 15th)** | 166.75d? | 2002-04-16 A | 2002-12-05 |  | 58% | 152.25d |  |
| 1161 |  | Use pause and unpause function. (when resuming the game after pausing it, the music gets re-started as opposed to resume, those function work fine iwhen I test them in Radmusic) | 0d | 2002-10-16 A | 2002-10-16 A |  | 100% |  | start no earlier than 2002-10-16 |
| 1162 |  | Engine sfx keeps playing when game is paused | 1d? | 2002-10-16 A | 2002-10-16 A | 1161 | 100% |  |  |
| 1163 |  | Mission 1 should use Main part of song ( not the Chase segment of song eventhough it is a chase) | 1d? | 2002-10-17 | 2002-10-17 | 1162 |  | 185.12d |  |
| 1164 |  | Getting out of Simpsons House trigger win mission song (happend in Mission 2) | 1d? | 2002-10-18 | 2002-10-18 | 1163 |  | 185.12d |  |
| 1165 |  | Pause music during dialog mission sequences ( letter box sequence) | 1d? | 2002-10-21 | 2002-10-21 | 1164 |  | 185.12d |  |
| 1166 |  | find the bug with collision sfx not playing (too low intensities get sent out maybe?) | 1d? | 2002-10-25 A | 2002-10-25 A | 1165 | 100% |  |  |
| 1167 |  | Fix footsteps volume (can't adjust volume, control don't respond) | 1d? | 2002-10-21 A | 2002-10-21 A | 1166 | 100% |  |  |
| 1168 |  | add 10 seconds to go event for Power Plant | 1d? | 2002-10-22 | 2002-10-22 | 1167 |  | 183.12d |  |
| 1169 |  | add Sunday Drive game state for in between mission | 1d? | 2002-10-23 | 2002-10-23 | 1168 |  | 183.12d |  |
| 1170 |  | add switch sfx call for Power Plant | 2d | 2002-10-31 A | 2002-11-01 A | 1169 | 100% |  |  |
| 1171 |  | add Power Plant platform sfx (as positional sound) | 1d? | 2002-11-04 A | 2002-11-04 | 1170 | 25% | 175.12d |  |
| 1172 |  | add a separate Ambience volume knob control (should also be routed thru the master volume) | 1.88d? | 2002-10-31 A | 2002-11-01 A | 1171 | 100% |  |  |
| 1173 |  | add reverb support ( turn on reverb in power plant) | 7.03d? | 2002-10-28 A | 2002-11-06 | 1172 | 12% | 174.1d |  |
| 1174 |  | Complete debug feature where the object names are displayed | 4.88d? | 2002-11-04 A | 2002-11-08 A | 1173 | 100% |  |  |
| 1175 |  | Audio for gag NISes | 10.28d? | 2002-11-04 A | 2002-11-18 | 1174 | 6% | 164.85d | start no earlier than 2002-10-16 |
| 1176 |  | Dialog system: eye blinking and mouth flapping | 1d? | 2002-11-18 | 2002-11-19 | 1175 |  | 164.85d |  |
| 1177 |  | Interior sound effects - Final pass | 6d? | 2002-11-04 A | 2002-11-11 A | 1176 | 100% |  |  |
| 1178 |  | ATG integration | 1d? | 2002-10-16 A | 2002-10-17 A |  | 100% |  | start no earlier than 2002-10-16 |
| 1179 |  | Death volume support in the world builder tool (complete by October 25) | 6.88d | 2002-10-17 A | 2002-10-25 A | 1178 | 100% |  | start no earlier than 2002-10-16 |
| 1180 |  | Camera collisions: on foot | 6.85d? | 2002-10-29 A | 2002-11-06 | 1179 | 90% | 172.6d |  |
| 1181 |  | Camera collisions: driving | 1d? | 2002-11-06 A | 2002-11-07 | 1180 | 45% | 172.15d |  |
| 1182 |  | Camera shake | 1d? | 2002-10-31 A | 2002-11-01 A | 1181 | 100% |  |  |
| 1183 |  | Interior rail camera improvements | 1d? | 2002-11-01 A | 2002-11-04 A | 1182 | 100% |  |  |
| 1184 |  | Improved camera setup for mission conversations | 4.88d? | 2002-11-04 A | 2002-11-08 A | 1183 | 100% |  |  |
| 1185 |  | Help getting new level art in the game | 1d? | 2002-11-11 A | 2002-11-11 A | 1184 | 100% |  |  |
| 1186 |  | Help getting new missions in the game | 1d? | 2002-11-12 A | 2002-11-12 A | 1185 | 100% |  |  |
| 1187 |  | Improved command line parameters for artists to start in various world locations | 6.88d? | 2002-11-07 A | 2002-11-15 A | 1186 | 100% |  |  |
| 1188 |  | Mission icon scaling based on distance | 1d? | 2002-10-16 | 2002-10-17 |  |  | 188d | start no earlier than 2002-10-16 |
| 1189 |  | Help getting new level art in the game | 1d? | 2002-10-17 A | 2002-10-18 A | 1188 | 100% |  |  |
| 1190 |  | Missions: Work with mission team to make sure they work | 1d? | 2002-10-18 A | 2002-10-21 | 1189 | 50% | 185.5d |  |
| 1191 |  | Artist pipeline support | 1d? | 2002-10-21 A | 2002-10-22 | 1190 | 50% | 185d |  |
| 1192 |  | Artist memory budget enforcement | 1d? | 2002-10-22 A | 2002-10-23 A | 1191 | 100% |  |  |
| 1193 |  | Sound properties database adjustment for Marc | 1d? | 2002-10-23 | 2002-10-24 | 1192 |  | 183d |  |
| 1194 |  | Dynamic loading speed improvements | 1d? | 2002-04-16 A | 2002-04-17 A |  | 100% |  |  |

| ID | WBS | Task | Duration | Start | Finish | Predecessors | Complete | Total float | Constraint |
| --- | --- | --- | --- | --- | --- | --- | --- | --- | --- |
| 1195 |  | General dynamic loading ongoing tasks | 1d? | 2002-04-17 | 2002-04-18 | 1194 |  | 317d |  |
| 1196 |  | Z Order | 1d? | 2002-04-18 A | 2002-04-19 A | 1195 | 100% |  |  |
| 1197 |  | General performance optimizations | 1d? | 2002-04-19 | 2002-04-22 | 1196 |  | 315d |  |
| 1198 |  | ATG 1.6 integration | 1d? | 2002-11-18 | 2002-11-18 | 1187 |  | 165.12d |  |
| 1199 |  | Mission vehicle AI improvements | 1d? | 2002-10-16 | 2002-10-17 |  |  | 184.12d | start no earlier than 2002-10-16 |
| 1200 |  | Pedestrians diving out of the way | 1.88d? | 2002-10-17 | 2002-10-18 | 1199 |  | 184.12d |  |
| 1201 |  | Pedestrians hit by car response | 1d? | 2002-10-21 | 2002-10-21 | 1200 |  | 184.12d |  |
| 1202 |  | Randomize loading of generic pedestrians from pedestrian library being developed by Slava | 1d? | 2002-10-22 | 2002-10-22 | 1201 |  | 184.12d |  |
| 1203 |  | Support for camera collisions | 2.88d? | 2002-10-16 A | 2002-10-18 |  | 80% | 182.19d | start no earlier than 2002-10-16 |
| 1204 |  | Car reset | 1d? | 2002-10-21 A | 2002-10-21 | 1203 | 50% | 181.69d |  |
| 1205 |  | Skid support | 9.75d? | 2002-10-21 A | 2002-11-01 | 1204 | 75% | 175.25d |  |
| 1206 |  | Death volume handling for car | 1d? | 2002-11-01 | 2002-11-04 | 1205 |  | 175.25d |  |
| 1207 |  | Dynamic object removal from DSG | 2.88d? | 2002-10-23 A | 2002-10-25 A | 1206 | 100% |  |  |
| 1208 |  | Disable character collision while character in the car | 1d? | 2002-10-28 | 2002-10-28 | 1207 |  | 174.62d |  |
| 1209 |  | Rockfords | 1d? | 2002-10-29 A | 2002-10-29 | 1208 | 90% | 173.72d |  |
| 1210 |  | Speed bursts | 1d? | 2002-10-30 A | 2002-10-30 | 1209 | 40% | 173.32d |  |
| 1211 |  | Tunable tipping tendancy | 1d? | 2002-11-01 A | 2002-11-01 | 1210 | 20% | 172.12d |  |
| 1212 |  | All vehicles using GroundPlanePool | 1d? | 2002-11-04 | 2002-11-04 | 1211 |  | 172.12d |  |
| 1213 |  | Vehicle brake lights | 1d? | 2002-11-06 A | 2002-11-06 | 1212 | 20% | 170.93d |  |
| 1214 |  | Steep terrain handling | 1d? | 2002-11-07 | 2002-11-07 | 1213 |  | 170.93d |  |
| 1215 |  | Assist Dusit as necessary | 1d? | 2002-11-08 | 2002-11-08 | 1214 |  | 170.93d |  |
| 1216 |  | Driving engine ongoing task (all driving engine code changes complete by Nov 8) | 1d? | 2002-11-12 A | 2002-11-12 | 1215 | 80% | 169.12d |  |
| 1217 |  | Terrain type tags in the pipeline, with an interface to access them at runtime | 1d? | 2002-10-16 | 2002-10-17 |  |  | 184d | start no earlier than 2002-10-16 |
| 1218 |  | Lens flare / corona working | 1d? | 2002-10-17 | 2002-10-18 | 1217 |  | 184d |  |
| 1219 |  | Blobby shadows added for NPCs, pedestrians, non-player cars | 1d? | 2002-10-18 | 2002-10-21 | 1218 |  | 184d |  |
| 1220 |  | Memory savings pass | 1d? | 2002-10-21 | 2002-10-22 | 1219 |  | 184d |  |
| 1221 |  | Ongoing rendering effects task | 1d? | 2002-10-22 | 2002-10-23 | 1220 |  | 184d |  |
| 1222 |  | Code complete for playing movies correctly between missions in a level | 1d? | 2002-04-16 | 2002-04-17 |  |  | 316d |  |
| 1223 |  | Firewire build ongoing task | 1d? | 2002-04-17 | 2002-04-18 | 1222 |  | 316d |  |
| 1224 |  | General debugging ongoing task | 1d? | 2002-04-18 | 2002-04-19 | 1223 |  | 316d |  |
| 1225 |  | Different skid mark types working (using terrain tags from James) | 1d? | 2002-04-16 | 2002-04-17 |  |  | 317.9d |  |
| 1226 |  | Button press flash effect | 1d? | 2002-04-17 A | 2002-04-18 | 1225 | 90% | 317d |  |
| 1227 |  | Electricity effect on Frink’s car | 1d? | 2002-04-18 A | 2002-04-19 A | 1226 | 100% |  |  |
| 1228 |  | Nuclear glow bubbles effects | 1d? | 2002-04-19 A | 2002-04-22 | 1227 | 90% | 311.9d |  |
| 1229 |  | Power coupling electrical effects | 1d? | 2002-04-22 A | 2002-04-23 | 1228 | 80% | 311.1d |  |
| 1230 |  | Power coupling destroy effects | 1d? | 2002-04-23 A | 2002-04-24 | 1229 | 80% | 310.3d |  |
| 1231 |  | World animation effects | 1d? | 2002-04-24 A | 2002-04-25 | 1230 | 80% | 309.5d |  |
| 1232 |  | Effects iteration ongoing task | 1d? | 2002-04-25 A | 2002-04-26 | 1231 | 60% | 308.9d |  |
| 1233 |  | Presentation manager changes required for new presentation elements | 1d? | 2002-04-26 | 2002-04-29 | 1232 |  | 308.9d |  |
| 1234 |  | Code support for all water effects complete | 1d? | 2002-04-29 A | 2002-04-30 | 1233 | 40% | 308.5d |  |
| 1235 |  | Breaking camera effects | 1d? | 2002-04-30 A | 2002-05-01 | 1234 | 50% | 308d |  |
| 1236 |  | Car door opens and closes properly on character entry/exit | 1d? | 2002-10-16 A | 2002-10-17 |  | 80% | 188d | start no earlier than 2002-10-16 |
| 1237 |  | Support for leaving the car door open if running on exit (request from Joe M.) | 1.88d? | 2002-10-17 A | 2002-10-18 A | 1236 | 100% |  |  |
| 1238 |  | Death volume handling for on foot | 1d? | 2002-10-21 | 2002-10-21 | 1237 |  | 185.12d |  |
| 1239 |  | In car character animations | 4.88d? | 2002-10-21 A | 2002-10-25 A | 1238 | 100% |  |  |
| 1240 |  | Character collision optimizations | 1d? | 2002-10-28 | 2002-10-28 | 1239 |  | 173.93d |  |
| 1241 |  | Dynamic object rest tests (includes vehicles) | 1d? | 2002-10-29 | 2002-10-29 | 1240 |  | 173.93d |  |
| 1242 |  | Fix bugs related to too many fence pieces being submitted | 1d? | 2002-10-30 | 2002-10-30 | 1241 |  | 173.93d |  |
| 1243 |  | World physics and collisions ongoing task | 1d? | 2002-10-31 | 2002-10-31 | 1242 |  | 173.93d |  |
| 1244 |  | On foot gameplay ongoing task | 1d? | 2002-11-01 | 2002-11-01 | 1243 |  | 173.93d |  |
| 1245 |  | Drivers appearing correctly in all vehicles | 1d? | 2002-11-04 A | 2002-11-04 | 1244 | 80% | 173.12d |  |
| 1246 |  | Dynamic loading of characters | 2d | 2002-11-05 | 2002-11-06 | 1245 |  | 173.12d |  |
| 1247 |  | Double jump | 1d | 2002-11-07 A | 2002-11-07 A | 1246 | 100% |  |  |
| 1248 |  | Can load/save games on memory card | 1d? | 2002-10-16 A | 2002-10-17 |  | 50% | 181.28d | start no earlier than 2002-10-16 |
| 1249 |  | Memory card screens | 1d? | 2002-10-17 A | 2002-10-18 | 1248 | 50% | 180.78d |  |
| 1250 |  | HUD changes required for bonus missions and secondary mission objectives | 1d? | 2002-10-18 | 2002-10-21 | 1249 |  | 180.78d |  |
| 1251 |  | All Scrooby work required by designers for presentation iteration | 1d? | 2002-10-21 A | 2002-10-22 | 1250 | 50% | 180.28d |  |
| 1252 |  | Integration of stylized HUD map | 18.88d? | 2002-11-11 A | 2002-12-05 | 1251 | 75% | 152.25d |  |
| 1253 | 3.8 | **Milestone 14 (Dec 15th)** | 18d? | 2002-11-18 A | 2002-12-11 |  | 26% | 148.12d |  |
| 1254 |  | Mission manager support for secondary mission objectives (bonus objectives) | 1d | 2002-11-18 | 2002-11-19 |  |  | 165d | start no earlier than 2002-11-18 |
| 1255 |  | Mission manager support for bonus missions | 4.88d? | 2002-11-18 A | 2002-11-22 A | 1254 | 100% |  | start no earlier than 2002-11-18 |
| 1256 |  | GameCube accessories work (steering wheels, wireless controller) | 9.75d? | 2002-11-18 A | 2002-11-29 | 1255 | 70% | 139.9d | start no earlier than 2002-11-18 |
| 1257 |  | PS2 steering wheel works | 10.05d? | 2002-11-18 A | 2002-12-02 | 1256 | 7% | 148.95d | start no earlier than 2002-11-18 |
| 1258 |  | Controller rumble | 1d? | 2002-12-02 | 2002-12-03 | 1257 |  | 148.95d | start no earlier than 2002-11-18 |
| 1259 |  | Terrain specific controller rumble | 1d? | 2002-12-03 | 2002-12-04 | 1258 |  | 148.95d | start no earlier than 2002-11-18 |
| 1260 |  | Address problematic camera areas in the world | 1d? | 2002-12-04 | 2002-12-05 | 1259 |  | 148.95d | start no earlier than 2002-11-18 |
| 1261 |  | Speed burst cam | 1d? | 2002-12-05 | 2002-12-06 | 1260 |  | 148.95d | start no earlier than 2002-11-27 |
| 1262 |  | Task 1 | 1d? | 2002-12-09 | 2002-12-09 | 1261 |  | 148.12d | start no earlier than 2002-12-09 |
| 1263 |  | Task 2 | 1d? | 2002-12-10 | 2002-12-10 | 1262 |  | 148.12d | start no earlier than 2002-11-27 |
| 1264 |  | Task 3 | 1d? | 2002-12-11 | 2002-12-11 | 1263 |  | 148.12d | start no earlier than 2002-11-27 |

| ID | Task | Duration | Start | Finish | Predecessors | Complete | Total float | Constraint |
| --- | --- | --- | --- | --- | --- | --- | --- | --- |
| 1265 | Artist pipeline support | 1d? | 2002-11-18 | 2002-11-19 |  |  | 160d | start no earlier than 2002-11-18 |
| 1266 | Artist memory budget enforcement | 1d? | 2002-11-19 | 2002-11-20 | 1265 |  | 160d | start no earlier than 2002-11-18 |
| 1267 | Help getting new level art in the game | 1d? | 2002-11-20 | 2002-11-21 | 1266 |  | 160d | start no earlier than 2002-11-18 |
| 1268 | Help getting new missions in the game | 1d? | 2002-11-21 | 2002-11-22 | 1267 |  | 160d | start no earlier than 2002-11-18 |
| 1269 | Ensure all reward assets are in the game (character skins, bonus vehicles, etc.) | 1d? | 2002-11-27 | 2002-11-27 | 1268 |  | 157.12d | start no earlier than 2002-11-27 |
| 1270 | Ensure all Halloween specific functionality gets in the game | 1d? | 2002-11-28 | 2002-11-28 | 1269 |  | 157.12d | start no earlier than 2002-11-27 |
| 1271 | Task 1 | 1d? | 2002-11-27 | 2002-11-27 |  |  | 158.12d | start no earlier than 2002-11-27 |
| 1272 | Task 2 | 1d? | 2002-12-09 | 2002-12-09 |  |  | 150.12d | start no earlier than 2002-12-09 |
| 1273 | Task 3 | 1d? | 2002-12-09 | 2002-12-09 |  |  | 150.12d | start no earlier than 2002-12-09 |
| 1274 | Terrain specific sound effects working | 1d? | 2002-11-18 | 2002-11-19 |  |  | 164d | start no earlier than 2002-11-18 |
| 1275 | PS2 mipmap tuning | 1d? | 2002-11-19 | 2002-11-20 | 1274 |  | 164d | start no earlier than 2002-11-18 |
| 1276 | PS2 performance analysis and optimization (including Sony PA run) | 1d? | 2002-11-20 A | 2002-11-21 A | 1275 | 100% |  | start no earlier than 2002-11-18 |
| 1277 | Positional sounds | 1d? | 2002-11-21 | 2002-11-22 | 1276 |  | 161d | start no earlier than 2002-11-18 |
| 1278 | Sounds attached to moving objects | 1d? | 2002-11-22 | 2002-11-25 | 1277 |  | 161d | start no earlier than 2002-11-18 |
| 1279 | Ambient sound triggers | 1d? | 2002-11-18 A | 2002-11-19 A | 1278 | 100% |  | start no earlier than 2002-11-18 |
| 1280 | Finalize car engine sound code | 3d | 2002-11-18 A | 2002-11-21 | 1279 |  | 149.2d | start no earlier than 2002-11-20 |
| 1281 | Reverb on all platforms - Gamecube | 3.2d? | 2002-11-18 A | 2002-11-21 | 1280 | 31% | 151.2d | start no earlier than 2002-11-18 |
| 1282 | Switch to different music in interiors | 1d? | 2002-11-21 A | 2002-11-22 | 1281 | 90% | 150.3d | start no earlier than 2002-11-18 |
| 1283 | Audio ongoing tasks | 1d? | 2002-11-22 | 2002-11-25 | 1282 |  | 150.3d | start no earlier than 2002-11-18 |
| 1284 | New vehicle based audio events - Dialogue | 7d | 2002-11-18 A | 2002-11-27 | 1283 | 10% | 154.8d | start no earlier than 2002-11-25 |
| 1285 | Generic Traffic Audio | 1d? | 2002-11-27 | 2002-11-28 | 1284 |  | 154.8d | start no earlier than 2002-11-18 |
| 1286 | Loading issues - sound | 9.6d | 2002-11-18 A | 2002-11-29 | 1285 | 67% | 156.4d | start no earlier than 2002-11-20 |
| 1287 | Task 1 | 1d? | 2002-11-27 | 2002-11-27 |  |  | 158.12d | start no earlier than 2002-11-27 |
| 1288 | Task 2 | 1d? | 2002-11-27 | 2002-11-27 |  |  | 158.12d | start no earlier than 2002-11-27 |
| 1289 | Task 3 | 1d? | 2002-11-27 | 2002-11-27 |  |  | 158.12d | start no earlier than 2002-11-27 |
| 1290 | Incorporation of P3D tool to auto-optimize meshes | 1d? | 2002-11-18 | 2002-11-19 |  |  | 165d | start no earlier than 2002-11-18 |
| 1291 | Offline DSG setup for all object types | 1d? | 2002-11-18 | 2002-11-19 |  |  | 165d | start no earlier than 2002-11-18 |
| 1292 | General dynamic loading ongoing tasks | 1d? | 2002-11-18 | 2002-11-19 |  |  | 165d | start no earlier than 2002-11-18 |
| 1293 | Load cancels working (dependent on P3D providing this) | 1d? | 2002-11-18 | 2002-11-19 |  |  | 165d | start no earlier than 2002-11-18 |
| 1294 | Boulevard heap integration | 1d? | 2002-11-18 | 2002-11-19 |  |  | 165d | start no earlier than 2002-11-18 |
| 1295 | PS2 mipmap tuning | 1d? | 2002-11-18 | 2002-11-19 |  |  | 165d | start no earlier than 2002-11-18 |
| 1296 | Task 1 | 1d? | 2002-11-27 | 2002-11-27 |  |  | 158.12d | start no earlier than 2002-11-27 |
| 1297 | Task 2 | 1d? | 2002-11-27 | 2002-11-27 |  |  | 158.12d | start no earlier than 2002-11-27 |
| 1298 | Task 3 | 1d? | 2002-11-27 | 2002-11-27 |  |  | 158.12d | start no earlier than 2002-11-27 |
| 1299 | Mission vehicle AI improvements | 1d? | 2002-11-18 A | 2002-11-19 |  | 50% | 165d | start no earlier than 2002-11-18 |
| 1300 | Race vehicle AI | 1d? | 2002-11-18 A | 2002-11-19 |  | 50% | 165d | start no earlier than 2002-11-18 |
| 1301 | Ensure logic of all reward systems work as designed (coordinate UI with Tony) | 1d? | 2002-11-18 | 2002-11-19 |  |  | 165d | start no earlier than 2002-11-18 |
| 1302 | Ensure all reward assets are in the game (character skins, bonus vehicles, etc) | 1d? | 2002-11-18 | 2002-11-19 |  |  | 165d | start no earlier than 2002-11-18 |
| 1303 | Pedestrians path auto adjust to terrain in pipeline | 4.88d? | 2002-11-18 A | 2002-11-22 A |  | 100% |  | start no earlier than 2002-11-18 |
| 1304 | Randomize loading of generic pedestrians from pedestrian library being developed by Slava | 5d? | 2002-11-18 A | 2002-11-22 |  | 80% | 161.12d | start no earlier than 2002-11-18 |
| 1305 | Task 1 | 1d? | 2002-11-27 | 2002-11-27 |  |  | 158.12d | start no earlier than 2002-11-27 |
| 1306 | Task 2 | 1d? | 2002-11-27 | 2002-11-27 |  |  | 158.12d | start no earlier than 2002-11-27 |
| 1307 | Task 3 | 1d? | 2002-11-27 | 2002-11-27 |  |  | 158.12d | start no earlier than 2002-11-27 |
| 1308 | Street racing game manager | 1d? | 2002-11-18 | 2002-11-19 |  |  | 165d | start no earlier than 2002-11-18 |
| 1309 | Terrain specific friction working | 1d? | 2002-11-18 | 2002-11-19 |  |  | 165d | start no earlier than 2002-11-18 |
| 1310 | Work with Dusit and Tony to ensure all aspects of Street racing games are complete | 1d? | 2002-11-18 | 2002-11-19 |  |  | 165d | start no earlier than 2002-11-18 |
| 1311 | Assist Dusit with vehicle and race AI as necessary | 1d? | 2002-11-18 | 2002-11-19 |  |  | 165d | start no earlier than 2002-11-18 |
| 1312 | Task 1 | 1d? | 2002-11-27 | 2002-11-27 |  |  | 158.12d | start no earlier than 2002-11-27 |
| 1313 | Task 2 | 1d? | 2002-11-27 | 2002-11-27 |  |  | 158.12d | start no earlier than 2002-11-27 |
| 1314 | Task 3 | 1d? | 2002-11-27 | 2002-11-27 |  |  | 158.12d | start no earlier than 2002-11-27 |
| 1315 | 1 week of vacation | 1d? | 2002-11-18 A | 2002-11-19 |  |  | 165d | start no earlier than 2002-11-18 |
| 1316 | Ensure all icons (collector cards, couplings, etc) are appearing in the game and working | 1d? | 2002-11-18 | 2002-11-19 |  |  | 165d | start no earlier than 2002-11-18 |
| 1317 | Support for terrain types | 1d? | 2002-12-09 | 2002-12-09 |  |  | 150.12d | start no earlier than 2002-12-09 |
| 1318 | Ensure all interactive gags get into the game and can be triggered correctly (support for Aryan) | 1d? | 2002-12-09 | 2002-12-09 |  |  | 150.12d | start no earlier than 2002-12-09 |
| 1319 | Object fade in (traffic, props, dynamically loaded world art) | 1d? | 2002-11-18 | 2002-11-19 |  |  | 165d | start no earlier than 2002-11-18 |
| 1320 | Shadow volumes & environmental mapping switch for interior driveable areas (SNPP, tunnels, etc) | 1d? | 2002-11-18 | 2002-11-19 |  |  | 165d | start no earlier than 2002-11-18 |
| 1321 | Rendering debugging and enhancements ongoing task | 1d? | 2002-11-18 | 2002-11-19 |  |  | 165d | start no earlier than 2002-11-18 |
| 1322 | Task 1 | 1d? | 2002-11-27 | 2002-11-27 |  |  | 158.12d | start no earlier than 2002-11-27 |
| 1323 | Task 2 | 1d? | 2002-11-27 | 2002-11-27 |  |  | 158.12d | start no earlier than 2002-11-27 |
| 1324 | Task 3 | 1d? | 2002-11-27 | 2002-11-27 |  |  | 158.12d | start no earlier than 2002-11-27 |
| 1325 | Firewire build ongoing task | 1d? | 2002-11-18 | 2002-11-19 |  |  | 165d | start no earlier than 2002-11-18 |
| 1326 | General debugging ongoing task | 1d? | 2002-11-18 | 2002-11-19 |  |  | 165d | start no earlier than 2002-11-18 |
| 1327 | FMV pipeline complete for all 3 platforms and for NTSC and PAL | 1d? | 2002-11-18 | 2002-11-19 |  |  | 165d | start no earlier than 2002-11-18 |
| 1328 | Final logo FMVs for all 6 SKUs in the game | 1d? | 2002-11-18 | 2002-11-19 |  |  | 165d | start no earlier than 2002-11-18 |
| 1329 | Placeholder FMVs playing in middle of level | 1d? | 2002-11-18 | 2002-11-19 |  |  | 165d | start no earlier than 2002-11-18 |
| 1330 | Support for playing movies selected from F/E | 1d? | 2002-11-18 | 2002-11-19 |  |  | 165d | start no earlier than 2002-11-18 |
| 1331 | Task 1 | 1d? | 2002-11-27 | 2002-11-27 |  |  | 158.12d | start no earlier than 2002-11-27 |
| 1332 | Task 2 | 1d? | 2002-11-27 | 2002-11-27 |  |  | 158.12d | start no earlier than 2002-11-27 |
| 1333 | Task 3 | 1d? | 2002-11-27 | 2002-11-27 |  |  | 158.12d | start no earlier than 2002-11-27 |
| 1334 | Water Effects | 1d? | 2002-12-09 | 2002-12-09 |  |  | 150.12d | start no earlier than 2002-12-09 |

| ID | WBS | Task | Duration | Start | Finish | Predecessors | Complete | Total float | Constraint |
| --- | --- | --- | --- | --- | --- | --- | --- | --- | --- |
| 1335 |  | Breakables disable rendering of all relevant objects | 1d? | 2002-12-09 | 2002-12-09 |  |  | 150.12d | start no earlier than 2002-12-09 |
| 1336 |  | Terrain specific skid marks working | 1d? | 2002-11-18 | 2002-11-19 |  |  | 165d | start no earlier than 2002-11-18 |
| 1337 |  | Terrain specific particle effects working | 1d? | 2002-11-18 | 2002-11-19 |  |  | 165d | start no earlier than 2002-11-18 |
| 1338 |  | Final special effects in the game (completed by November 29) | 1d? | 2002-11-18 | 2002-11-19 |  |  | 165d | start no earlier than 2002-11-18 |
| 1339 |  | Final world rendering effects in the game (completed by November 29) | 1d? | 2002-11-18 | 2002-11-19 |  |  | 165d | start no earlier than 2002-11-18 |
| 1340 |  | Platform specific gamma correction in the pipeline | 1d? | 2002-11-18 | 2002-11-19 |  |  | 165d | start no earlier than 2002-11-18 |
| 1341 |  | Task 1 | 1d? | 2002-11-27 | 2002-11-27 |  |  | 158.12d | start no earlier than 2002-11-27 |
| 1342 |  | Task 2 | 1d? | 2002-11-27 | 2002-11-27 |  |  | 158.12d | start no earlier than 2002-11-27 |
| 1343 |  | Task 3 | 1d? | 2002-11-27 | 2002-11-27 |  |  | 158.12d | start no earlier than 2002-11-27 |
| 1344 |  | Ensure all 7 interiors get into the game correctly | 1d? | 2002-11-18 | 2002-11-19 |  |  | 165d | start no earlier than 2002-11-18 |
| 1345 |  | Disable character collision while character in the car | 1d? | 2002-11-18 A | 2002-11-19 A |  | 100% |  | start no earlier than 2002-11-18 |
| 1346 |  | Iris transition working correctly for interiors | 1d? | 2002-11-18 A | 2002-11-19 A |  | 100% |  | start no earlier than 2002-11-18 |
| 1347 |  | Gag Demonstration special camera when entering interiors | 1d? | 2002-12-09 | 2002-12-09 |  |  | 150.12d | start no earlier than 2002-12-09 |
| 1348 |  | Support for collectibles in interiors | 1d? | 2002-11-18 A | 2002-11-19 A |  | 100% |  | start no earlier than 2002-11-18 |
| 1349 |  | Support for interactive gags in interiors | 1d? | 2002-11-18 | 2002-11-19 |  |  | 165d | start no earlier than 2002-11-18 |
| 1350 |  | Support for conversations in interiors | 1d? | 2002-11-18 | 2002-11-19 |  |  | 165d | start no earlier than 2002-11-18 |
| 1351 |  | Memory cleanliness audits for all three platforms | 1d? | 2002-11-18 | 2002-11-19 |  |  | 165d | start no earlier than 2002-11-18 |
| 1352 |  | Memory savings pass | 1d? | 2002-11-18 | 2002-11-19 |  |  | 165d | start no earlier than 2002-11-18 |
| 1353 |  | Frame rate optimization pass | 1d? | 2002-11-18 | 2002-11-19 |  |  | 165d | start no earlier than 2002-11-18 |
| 1354 |  | Character management ongoing task | 1d? | 2002-11-18 | 2002-11-19 |  |  | 165d | start no earlier than 2002-11-18 |
| 1355 |  | World physics and collisions ongoing task | 5d? | 2002-11-18 | 2002-11-22 |  |  | 161.12d | start no earlier than 2002-11-18 |
| 1356 |  | Task 1 | 1d? | 2002-11-27 | 2002-11-27 |  |  | 158.12d | start no earlier than 2002-11-27 |
| 1357 |  | Task 2 | 1d? | 2002-11-27 | 2002-11-27 |  |  | 158.12d | start no earlier than 2002-11-27 |
| 1358 |  | Task 3 | 1d? | 2002-11-27 | 2002-11-27 |  |  | 158.12d | start no earlier than 2002-11-27 |
| 1359 |  | Language select screens | 1d? | 2002-11-18 | 2002-11-19 |  |  | 165d | start no earlier than 2002-11-18 |
| 1360 |  | Generic load screen for game to F/E added | 1d? | 2002-11-18 | 2002-11-19 |  |  | 165d | start no earlier than 2002-11-18 |
| 1361 |  | Screen for playing unlocked movies from F/E | 1d? | 2002-11-18 A | 2002-11-19 A |  | 100% |  | start no earlier than 2002-11-18 |
| 1362 |  | Memory card/TRC compliance ongoing task | 1d? | 2002-11-18 A | 2002-11-19 |  | 25% | 165d | start no earlier than 2002-11-18 |
| 1363 |  | Changes required for HUD re-design | 1d? | 2002-11-18 | 2002-11-19 |  |  | 165d | start no earlier than 2002-11-18 |
| 1364 |  | Screens required for reward presentation | 1d? | 2002-11-18 | 2002-11-19 |  |  | 165d | start no earlier than 2002-11-18 |
| 1365 |  | Screens required for Street racing games | 1d? | 2002-11-18 | 2002-11-19 |  |  | 165d | start no earlier than 2002-11-18 |
| 1366 |  | Presentation iteration ongoing task | 1d? | 2002-11-18 | 2002-11-19 |  |  | 165d | start no earlier than 2002-11-18 |
| 1367 |  | Task 1 | 1d? | 2002-11-27 | 2002-11-27 |  |  | 158.12d | start no earlier than 2002-11-27 |
| 1368 |  | Task 2 | 1d? | 2002-11-27 | 2002-11-27 |  |  | 158.12d | start no earlier than 2002-11-27 |
| 1369 |  | Task 3 | 1d? | 2002-11-27 | 2002-11-27 |  |  | 158.12d | start no earlier than 2002-11-27 |
| 1370 |  | 2 weeks on another team (if internal) or training (if external) | 4.88d? | 2002-11-18 A | 2002-11-22 A |  | 100% |  | start no earlier than 2002-11-18 |
| 1371 |  | Language select / language auto-select system | 4.88d? | 2002-11-18 A | 2002-11-22 A |  | 100% |  | start no earlier than 2002-11-18 |
| 1372 |  | Presentation changes required by designers | 1d? | 2002-11-27 | 2002-11-27 |  |  | 158.12d | start no earlier than 2002-11-27 |
| 1373 |  | Enhancements to NIS conversations | 1d? | 2002-11-27 | 2002-11-27 |  |  | 158.12d | start no earlier than 2002-11-27 |
| 1374 |  | Task 1 | 1d? | 2002-12-09 | 2002-12-09 |  |  | 149.12d | start no earlier than 2002-12-09 |
| 1375 |  | Task 2 | 1d? | 2002-12-09 | 2002-12-09 |  |  | 149.12d | start no earlier than 2002-12-09 |
| 1376 |  | Task 3 | 1d? | 2002-12-09 | 2002-12-09 |  |  | 149.12d | start no earlier than 2002-12-09 |
| 1377 | 3.9 | **Milestone 15 - Alpha (Jan 16th) (Temp)** | 95d? | 2002-12-16 | 2003-04-24 |  |  | 51d |  |
| 1378 |  | Death volume support in the world builder tool (complete by October 25) | 8d | 2002-12-16 | 2002-12-26 |  |  | 51d | start no earlier than 2002-12-16 |
| 1379 |  | Missions: Work with mission team to make sure they work | 1d? | 2002-12-26 | 2002-12-27 | 1378 |  | 51d |  |
| 1380 |  | Camera collisions: on foot | 1d? | 2002-12-27 | 2002-12-30 | 1379 |  | 51d |  |
| 1381 |  | Camera collisions: driving | 1d? | 2002-12-30 | 2002-12-31 | 1380 |  | 51d |  |
| 1382 |  | Camera collisions: interiors | 1d? | 2002-12-31 | 2003-01-01 | 1381 |  | 51d |  |
| 1383 |  | Camera shake | 1d? | 2003-01-01 | 2003-01-02 | 1382 |  | 51d |  |
| 1384 |  | Interior rail camera improvements | 1d? | 2003-01-02 | 2003-01-03 | 1383 |  | 51d |  |
| 1385 |  | Improved camera setup for mission conversations | 1d? | 2003-01-03 | 2003-01-06 | 1384 |  | 51d |  |
| 1386 |  | Help getting new level art in the game | 1d? | 2003-01-06 | 2003-01-07 | 1385 |  | 51d |  |
| 1387 |  | Help getting new missions in the game | 1d? | 2003-01-07 | 2003-01-08 | 1386 |  | 51d |  |
| 1388 |  | Improved command line parameters for artists to start in various world locations | 1d? | 2003-01-08 | 2003-01-09 | 1387 |  | 51d |  |
| 1389 |  | Mission icon scaling based on distance | 1d? | 2003-01-09 | 2003-01-10 | 1388 |  | 51d | start no earlier than 2002-10-15 |
| 1390 |  | Help getting new level art in the game | 1d? | 2003-01-10 | 2003-01-13 | 1389 |  | 51d |  |
| 1391 |  | Mission restart correctly resets the players position, mission elements, and returns to mission instruction screen | 1d? | 2003-01-13 | 2003-01-14 | 1390 |  | 51d | start no earlier than 2002-09-16 |
| 1392 |  | Missions: Work with mission team to make sure they work | 1d? | 2003-01-14 | 2003-01-15 | 1391 |  | 51d |  |
| 1393 |  | Artist pipeline support | 1d? | 2003-01-15 | 2003-01-16 | 1392 |  | 51d |  |
| 1394 |  | Artist memory budget enforcement | 1d? | 2003-01-16 | 2003-01-17 | 1393 |  | 51d |  |
| 1395 |  | Engine sounds working correctly - Final pass | 1d? | 2003-01-17 | 2003-01-20 | 1394 |  | 51d | start no earlier than 2002-12-18 |
| 1396 |  | Reverb | 1d? | 2003-01-20 | 2003-01-21 | 1395 |  | 51d | start no earlier than 2002-12-18 |
| 1397 |  | Dialog system: eye blinking and mouth flapping | 1d? | 2003-01-21 | 2003-01-22 | 1396 |  | 51d | start no earlier than 2002-12-18 |
| 1398 |  | Music Events - on foot, street racing, etc. | 1d? | 2003-01-22 | 2003-01-23 | 1397 |  | 51d | start no earlier than 2002-12-18 |
| 1399 |  | Positional Sound | 1d? | 2003-01-23 | 2003-01-24 | 1398 |  | 51d | start no earlier than 2002-12-18 |
| 1401 |  | Audio for gag NISes | 1d? | 2003-01-24 | 2003-01-27 | 1399 |  | 51d | start no earlier than 2002-10-15 |
| 1403 |  | Dialog system: eye blinking and mouth flapping | 1d? | 2003-01-28 | 2003-01-29 |  |  | 51d |  |
| 1404 |  | Interior sound effects - Final pass | 1d? | 2003-01-29 | 2003-01-30 | 1403 |  | 51d |  |
| 1405 |  | PS2 mipmap tuning | 1d? | 2003-01-30 | 2003-01-31 | 1404 |  | 51d |  |
| 1406 |  | Addition of some final sound effects - Final pass | 1d? | 2003-01-31 | 2003-02-03 | 1405 |  | 51d |  |

| ID | WBS | Task | Duration | Start | Finish | Predecessors | Total float | Constraint |
| --- | --- | --- | --- | --- | --- | --- | --- | --- |
| 1408 |  | Generic traffic audio | 1d? | 2003-02-04 | 2003-02-05 |  | 51d |  |
| 1409 |  | Interior gag audio | 1d? | 2003-02-05 | 2003-02-06 | 1408 | 51d | start no earlier than 2002-10-15 |
| 1410 |  | Mini driving games working | 1d? | 2003-02-06 | 2003-02-07 | 1409 | 51d |  |
| 1411 |  | FMVs playing in game (in between missions) | 1d? | 2003-02-07 | 2003-02-10 | 1410 | 51d |  |
| 1412 |  | General memory management ongoing tasks | 1d? | 2003-02-10 | 2003-02-11 | 1411 | 51d |  |
| 1413 |  | DSG cleanup / abstract base class for DSG objects | 1d? | 2003-02-11 | 2003-02-12 | 1412 | 51d | start no earlier than 2002-10-15 |
| 1414 |  | General dynamic loading ongoing tasks | 1d? | 2003-02-12 | 2003-02-13 | 1413 | 51d |  |
| 1415 |  | Dymamic loading compression incorporated | 1d? | 2003-02-13 | 2003-02-14 | 1414 | 51d |  |
| 1416 |  | Load cancels working (dependent on P3D providing this) | 1d? | 2003-02-14 | 2003-02-15 | 1415 | 51d |  |
| 1417 |  | Final rendered trigger volumes | 1d? | 2003-02-15 | 2003-02-17 | 1416 | 51d |  |
| 1418 |  | Incorporation of P3D tool to auto-optimize meshes | 1d? | 2003-02-17 | 2003-02-18 | 1417 | 51d |  |
| 1419 |  | Boulevard heap integration | 1d? | 2003-02-18 | 2003-02-19 | 1418 | 51d |  |
| 1420 |  | Mission vehicle AI improvements | 1d? | 2003-02-19 | 2003-02-20 | 1419 | 51d | start no earlier than 2002-10-15 |
| 1421 |  | Pedestrians diving out of the way | 1d? | 2003-02-20 | 2003-02-21 | 1420 | 51d |  |
| 1422 |  | Pedestrians hit by car response | 1d? | 2003-02-21 | 2003-02-24 | 1421 | 51d |  |
| 1423 |  | Car reset | 1d? | 2003-02-24 | 2003-02-25 | 1422 | 51d | start no earlier than 2002-10-15 |
| 1424 |  | Car moves correctly on moveable platforms | 1d? | 2003-02-25 | 2003-02-26 | 1423 | 51d |  |
| 1425 |  | Dynamic object rest tests | 1d? | 2003-02-26 | 2003-02-27 | 1424 | 51d |  |
| 1426 |  | Full use of physics properties from the database | 1d? | 2003-02-27 | 2003-02-28 | 1425 | 51d |  |
| 1427 |  | Car door opens and closes properly on character entry/exit | 1d? | 2003-02-28 | 2003-03-03 | 1426 | 51d |  |
| 1428 |  | Improved collision response | 1d? | 2003-03-03 | 2003-03-04 | 1427 | 51d |  |
| 1429 |  | Death volume handling for car | 1d? | 2003-03-04 | 2003-03-05 | 1428 | 51d |  |
| 1430 |  | Simple car reset | 1d? | 2003-03-05 | 2003-03-06 | 1429 | 51d |  |
| 1431 |  | Dynamic object removal from DSG | 1d? | 2003-03-06 | 2003-03-07 | 1430 | 51d |  |
| 1432 |  | Disable character collision while character in the car | 1d? | 2003-03-07 | 2003-03-10 | 1431 | 51d |  |
| 1433 |  | Vehicle brake lights | 1d? | 2003-03-10 | 2003-03-11 | 1432 | 51d |  |
| 1434 |  | In car character animations | 1d? | 2003-03-11 | 2003-03-12 | 1433 | 51d |  |
| 1435 |  | Steep terrain handling | 1d? | 2003-03-12 | 2003-03-13 | 1434 | 51d |  |
| 1436 |  | Terrain type tags in the pipeline, with an interface to access them at runtime | 1d? | 2003-03-13 | 2003-03-14 | 1435 | 51d | start no earlier than 2002-10-15 |
| 1437 |  | Lens flare / corona working | 1d? | 2003-03-14 | 2003-03-15 | 1436 | 51d |  |
| 1438 |  | Blobby shadows added for NPCs, pedestrians, non-player cars | 1d? | 2003-03-15 | 2003-03-17 | 1437 | 51d |  |
| 1439 |  | 2 weeks vacation | 1d? | 2003-03-17 | 2003-03-18 | 1438 | 51d |  |
| 1440 |  | Ongoing rendering effects task | 1d? | 2003-03-18 | 2003-03-19 | 1439 | 51d |  |
| 1441 |  | Better FMVs for Xbox and GC | 1d? | 2003-03-19 | 2003-03-20 | 1440 | 51d | start no earlier than 2002-10-15 |
| 1442 |  | Create final logo FMVs for all 6 platforms | 1d? | 2003-03-20 | 2003-03-21 | 1441 | 51d |  |
| 1443 |  | Xbox ripping | 1d? | 2003-03-21 | 2003-03-24 | 1442 | 51d |  |
| 1444 |  | All water effects complete | 1d? | 2003-03-24 | 2003-03-25 | 1443 | 51d | start no earlier than 2002-10-15 |
| 1445 |  | Different skid mark types working | 1d? | 2003-03-25 | 2003-03-26 | 1444 | 51d |  |
| 1446 |  | Button press flash effect | 1d? | 2003-03-26 | 2003-03-27 | 1445 | 51d |  |
| 1447 |  | Food icon effects | 1d? | 2003-03-27 | 2003-03-28 | 1446 | 51d |  |
| 1448 |  | Nuclear glow bubbles effects | 1d? | 2003-03-28 | 2003-03-31 | 1447 | 51d | start no earlier than 2002-09-16 |
| 1449 |  | Power coupling electrical effects | 1d? | 2003-03-31 | 2003-04-01 | 1448 | 51d |  |
| 1450 |  | Power coupling destroy effects | 1d? | 2003-04-01 | 2003-04-02 | 1449 | 51d |  |
| 1451 |  | World animation effects | 1d? | 2003-04-02 | 2003-04-03 | 1450 | 51d |  |
| 1452 |  | Effects iteration ongoing task | 1d? | 2003-04-03 | 2003-04-04 | 1451 | 51d |  |
| 1453 |  | Drivers in the taxi vehicles | 1d? | 2003-04-04 | 2003-04-07 | 1452 | 51d | start no earlier than 2002-10-15 |
| 1454 |  | Car door opens and closes properly on character entry/exit | 1d? | 2003-04-07 | 2003-04-08 | 1453 | 51d |  |
| 1455 |  | Support for leaving the car door open if running on exit | 1d? | 2003-04-08 | 2003-04-09 | 1454 | 51d |  |
| 1456 |  | Death volume handling for on foot | 1d? | 2003-04-09 | 2003-04-10 | 1455 | 51d |  |
| 1457 |  | In car character animations | 1d? | 2003-04-10 | 2003-04-11 | 1456 | 51d |  |
| 1458 |  | Currency system incorporated into game | 1d? | 2003-04-11 | 2003-04-14 | 1457 | 51d |  |
| 1459 |  | On foot gameplay ongoing task | 1d? | 2003-04-14 | 2003-04-15 | 1458 | 51d |  |
| 1460 |  | 2D mini games investigation (spend 3-4 days determining what is possible) | 1d? | 2003-04-15 | 2003-04-16 | 1459 | 51d | start no earlier than 2002-10-15 |
| 1461 |  | Integration of stylized HUD map | 1d? | 2003-04-16 | 2003-04-17 | 1460 | 51d |  |
| 1462 |  | Front end and HUD work for currency | 1d? | 2003-04-17 | 2003-04-18 | 1461 | 51d |  |
| 1463 |  | Mini driving games presentation and HUD screens | 1d? | 2003-04-18 | 2003-04-21 | 1462 | 51d | start no earlier than 2002-09-16 |
| 1464 |  | Mission presentation HUD art iteration ongoing task | 1d? | 2003-04-21 | 2003-04-22 | 1463 | 51d |  |
| 1465 |  | Can load/save games on memory card | 1d? | 2003-04-22 | 2003-04-23 | 1464 | 51d |  |
| 1466 |  | Memory card screens | 1d? | 2003-04-23 | 2003-04-24 | 1465 | 51d |  |
| 1467 |  | Radmusic integration | 1d? | 2003-01-20 | 2003-01-21 |  | 85.38d | start no earlier than 2003-01-20 |
| 1468 |  | Memory optimization | 4d | 2003-01-21 | 2003-01-27 | 1467 | 85.38d |  |
| 1469 |  | Develop Dialogue test program/set up Roman | 1h | 2003-01-27 | 2003-01-27 | 1468 | 85.38d | start no earlier than 2003-01-22 |
| 1470 |  | Assist Cory wrt positional sounds not playing | 1d? | 2003-01-27 | 2003-01-28 | 1469 | 85.38d | start no earlier than 2003-01-24 |
| 1471 |  | Add events/code for additional Sound FX | 2d | 2003-01-28 | 2003-01-30 | 1470 | 85.38d | start no earlier than 2003-01-22 |
| 1472 |  | Ducking | 3d | 2003-01-30 | 2003-02-04 | 1471 | 85.38d | start no earlier than 2003-01-22 |
| 1473 | 3.16 | **Car Engine:** | 3.5d | 2003-02-04 | 2003-02-07 | 1472 | 85.38d |  |
| 1474 |  | Car engine level controls | 1d | 2003-02-04 | 2003-02-05 |  | 85.38d | start no earlier than 2003-01-22 |
| 1475 |  | Car ignition startup & engine reving | 1d | 2003-02-05 | 2003-02-06 | 1474 | 85.38d | start no earlier than 2003-01-24 |
| 1476 |  | Car engine spin out | 1d | 2003-02-06 | 2003-02-07 | 1475 | 85.38d | start no earlier than 2003-01-24 |
| 1477 |  | Damage clip volume control | 4h | 2003-02-07 | 2003-02-07 | 1476 | 85.38d | start no earlier than 2003-01-24 |

| ID | WBS | Task | Duration | Start | Finish | Predecessors | Total float | Constraint |
| --- | --- | --- | --- | --- | --- | --- | --- | --- |
| 1478 |  | Loading optimization | 1d | 2003-02-07 | 2003-02-10 | 1473 | 85.38d | start no earlier than 2003-01-24 |
| 1479 | 3.18 | **Additional dialogue - events & triggers** | 1.5d | 2003-02-10 | 2003-02-12 | 1478 | 85.38d |  |
| 1480 |  | Events & Triggers | 1d | 2003-02-10 | 2003-02-11 |  | 84.38d | start no earlier than 2003-01-24 |
| 1481 |  | Cleanup debug display | 4h | 2003-02-11 | 2003-02-12 | 1480 | 85.38d | start no earlier than 2003-01-24 |
| 1482 |  | Ambience Event Cleanup | 4h | 2003-02-12 | 2003-02-12 | 1481 | 85.38d | start no earlier than 2003-01-24 |
| 1483 |  | Interactive Gags - events & triggers | 2d | 2003-02-12 | 2003-02-14 | 1482 | 85.38d | start no earlier than 2003-01-24 |
| 1484 |  | Positional collisions - events & triggers | 1d? | 2003-02-14 | 2003-02-15 | 1483 | 85.38d | start no earlier than 2003-01-24 |
| 1485 |  | Integration week | 5d | 2003-02-15 | 2003-02-21 | 1484 | 85.38d | start no earlier than 2003-01-24 |
| 1486 |  | Xbox ripping | 5d | 2003-02-21 | 2003-02-28 | 1485 | 85.38d | start no earlier than 2003-01-24 |
| 1487 |  | Dialogue Localization - pipeline | 5d | 2003-02-28 | 2003-03-07 | 1486 | 85.38d | start no earlier than 2003-01-24 |
| 1490 | 3.10 | **Milestone 16 - Beta (Feb 28th) (Temp)** | 90d? | 2003-01-16 | 2003-05-20 |  | 33d |  |
| 1491 |  | Death volume support in the world builder tool (complete by October 25) | 8d | 2003-01-16 | 2003-01-28 |  | 33d | start no earlier than 2003-01-16 |
| 1492 |  | Missions: Work with mission team to make sure they work | 1d? | 2003-01-28 | 2003-01-29 | 1491 | 33d |  |
| 1493 |  | Camera collisions: on foot | 1d? | 2003-01-29 | 2003-01-30 | 1492 | 33d |  |
| 1494 |  | Camera collisions: driving | 1d? | 2003-01-30 | 2003-01-31 | 1493 | 33d |  |
| 1495 |  | Camera collisions: interiors | 1d? | 2003-01-31 | 2003-02-03 | 1494 | 33d |  |
| 1496 |  | Camera shake | 1d? | 2003-02-03 | 2003-02-04 | 1495 | 33d |  |
| 1497 |  | Interior rail camera improvements | 1d? | 2003-02-04 | 2003-02-05 | 1496 | 33d |  |
| 1498 |  | Improved camera setup for mission conversations | 1d? | 2003-02-05 | 2003-02-06 | 1497 | 33d |  |
| 1499 |  | Help getting new level art in the game | 1d? | 2003-02-06 | 2003-02-07 | 1498 | 33d |  |
| 1500 |  | Help getting new missions in the game | 1d? | 2003-02-07 | 2003-02-10 | 1499 | 33d |  |
| 1501 |  | Improved command line parameters for artists to start in various world locations | 1d? | 2003-02-10 | 2003-02-11 | 1500 | 33d |  |
| 1502 |  | Mission icon scaling based on distance | 1d? | 2003-02-11 | 2003-02-12 | 1501 | 33d | start no earlier than 2002-10-15 |
| 1503 |  | Help getting new level art in the game | 1d? | 2003-02-12 | 2003-02-13 | 1502 | 33d |  |
| 1504 |  | Mission restart correctly resets the players position, mission elements, and returns to mission instruction screen | 1d? | 2003-02-13 | 2003-02-14 | 1503 | 33d | start no earlier than 2002-09-16 |
| 1505 |  | Missions: Work with mission team to make sure they work | 1d? | 2003-02-14 | 2003-02-15 | 1504 | 33d |  |
| 1506 |  | Artist pipeline support | 1d? | 2003-02-15 | 2003-02-17 | 1505 | 33d |  |
| 1507 |  | Artist memory budget enforcement | 1d? | 2003-02-17 | 2003-02-18 | 1506 | 33d |  |
| 1508 |  | Audio for gag NISes | 1d? | 2003-02-18 | 2003-02-19 | 1507 | 33d | start no earlier than 2002-10-15 |
| 1509 |  | Engine sounds working correctly - Final pass | 1d? | 2003-02-19 | 2003-02-20 | 1508 | 33d |  |
| 1510 |  | Dialog system: eye blinking and mouth flapping | 1d? | 2003-02-20 | 2003-02-21 | 1509 | 33d |  |
| 1511 |  | Interior sound effects - Final pass | 1d? | 2003-02-21 | 2003-02-24 | 1510 | 33d |  |
| 1512 |  | PS2 mipmap tuning | 1d? | 2003-02-24 | 2003-02-25 | 1511 | 33d |  |
| 1513 |  | Addition of some final sound effects - Final pass | 1d? | 2003-02-25 | 2003-02-26 | 1512 | 33d |  |
| 1514 |  | Reverb | 1d? | 2003-02-26 | 2003-02-27 | 1513 | 33d |  |
| 1515 |  | Generic traffic audio | 1d? | 2003-02-27 | 2003-02-28 | 1514 | 33d |  |
| 1516 |  | Interior gag audio | 1d? | 2003-02-28 | 2003-03-03 | 1515 | 33d | start no earlier than 2002-10-15 |
| 1517 |  | Mini driving games working | 1d? | 2003-03-03 | 2003-03-04 | 1516 | 33d |  |
| 1518 |  | FMVs playing in game (in between missions) | 1d? | 2003-03-04 | 2003-03-05 | 1517 | 33d |  |
| 1519 |  | General memory management ongoing tasks | 1d? | 2003-03-05 | 2003-03-06 | 1518 | 33d |  |
| 1520 |  | DSG cleanup / abstract base class for DSG objects | 1d? | 2003-03-06 | 2003-03-07 | 1519 | 33d | start no earlier than 2002-10-15 |
| 1521 |  | General dynamic loading ongoing tasks | 1d? | 2003-03-07 | 2003-03-10 | 1520 | 33d |  |
| 1522 |  | Dymamic loading compression incorporated | 1d? | 2003-03-10 | 2003-03-11 | 1521 | 33d |  |
| 1523 |  | Load cancels working (dependent on P3D providing this) | 1d? | 2003-03-11 | 2003-03-12 | 1522 | 33d |  |
| 1524 |  | Final rendered trigger volumes | 1d? | 2003-03-12 | 2003-03-13 | 1523 | 33d |  |
| 1525 |  | Incorporation of P3D tool to auto-optimize meshes | 1d? | 2003-03-13 | 2003-03-14 | 1524 | 33d |  |
| 1526 |  | Boulevard heap integration | 1d? | 2003-03-14 | 2003-03-15 | 1525 | 33d |  |
| 1527 |  | Mission vehicle AI improvements | 1d? | 2003-03-15 | 2003-03-17 | 1526 | 33d | start no earlier than 2002-10-15 |
| 1528 |  | Pedestrians diving out of the way | 1d? | 2003-03-17 | 2003-03-18 | 1527 | 33d |  |
| 1529 |  | Pedestrians hit by car response | 1d? | 2003-03-18 | 2003-03-19 | 1528 | 33d |  |
| 1530 |  | Car reset | 1d? | 2003-03-19 | 2003-03-20 | 1529 | 33d | start no earlier than 2002-10-15 |
| 1531 |  | Car moves correctly on moveable platforms | 1d? | 2003-03-20 | 2003-03-21 | 1530 | 33d |  |
| 1532 |  | Dynamic object rest tests | 1d? | 2003-03-21 | 2003-03-24 | 1531 | 33d |  |
| 1533 |  | Full use of physics properties from the database | 1d? | 2003-03-24 | 2003-03-25 | 1532 | 33d |  |
| 1534 |  | Car door opens and closes properly on character entry/exit | 1d? | 2003-03-25 | 2003-03-26 | 1533 | 33d |  |
| 1535 |  | Improved collision response | 1d? | 2003-03-26 | 2003-03-27 | 1534 | 33d |  |
| 1536 |  | Death volume handling for car | 1d? | 2003-03-27 | 2003-03-28 | 1535 | 33d |  |
| 1537 |  | Simple car reset | 1d? | 2003-03-28 | 2003-03-31 | 1536 | 33d |  |
| 1538 |  | Dynamic object removal from DSG | 1d? | 2003-03-31 | 2003-04-01 | 1537 | 33d |  |
| 1539 |  | Disable character collision while character in the car | 1d? | 2003-04-01 | 2003-04-02 | 1538 | 33d |  |
| 1540 |  | Vehicle brake lights | 1d? | 2003-04-02 | 2003-04-03 | 1539 | 33d |  |
| 1541 |  | In car character animations | 1d? | 2003-04-03 | 2003-04-04 | 1540 | 33d |  |
| 1542 |  | Steep terrain handling | 1d? | 2003-04-04 | 2003-04-07 | 1541 | 33d |  |
| 1543 |  | Terrain type tags in the pipeline, with an interface to access them at runtime | 1d? | 2003-04-07 | 2003-04-08 | 1542 | 33d | start no earlier than 2002-10-15 |
| 1544 |  | Lens flare / corona working | 1d? | 2003-04-08 | 2003-04-09 | 1543 | 33d |  |
| 1545 |  | Blobby shadows added for NPCs, pedestrians, non-player cars | 1d? | 2003-04-09 | 2003-04-10 | 1544 | 33d |  |
| 1546 |  | 2 weeks vacation | 1d? | 2003-04-10 | 2003-04-11 | 1545 | 33d |  |
| 1547 |  | Ongoing rendering effects task | 1d? | 2003-04-11 | 2003-04-14 | 1546 | 33d |  |
| 1548 |  | Better FMVs for Xbox and GC | 1d? | 2003-04-14 | 2003-04-15 | 1547 | 33d | start no earlier than 2002-10-15 |
| 1549 |  | Create final logo FMVs for all 6 platforms | 1d? | 2003-04-15 | 2003-04-16 | 1548 | 33d |  |

| ID | WBS | Task | Duration | Start | Finish | Predecessors | Total float | Constraint |
| --- | --- | --- | --- | --- | --- | --- | --- | --- |
| 1550 |  | Xbox ripping | 1d? | 2003-04-16 | 2003-04-17 | 1549 | 33d |  |
| 1551 |  | All water effects complete | 1d? | 2003-04-17 | 2003-04-18 | 1550 | 33d | start no earlier than 2002-10-15 |
| 1552 |  | Different skid mark types working | 1d? | 2003-04-18 | 2003-04-21 | 1551 | 33d |  |
| 1553 |  | Button press flash effect | 1d? | 2003-04-21 | 2003-04-22 | 1552 | 33d |  |
| 1554 |  | Food icon effects | 1d? | 2003-04-22 | 2003-04-23 | 1553 | 33d |  |
| 1555 |  | Nuclear glow bubbles effects | 1d? | 2003-04-23 | 2003-04-24 | 1554 | 33d | start no earlier than 2002-09-16 |
| 1556 |  | Power coupling electrical effects | 1d? | 2003-04-24 | 2003-04-25 | 1555 | 33d |  |
| 1557 |  | Power coupling destroy effects | 1d? | 2003-04-25 | 2003-04-28 | 1556 | 33d |  |
| 1558 |  | World animation effects | 1d? | 2003-04-28 | 2003-04-29 | 1557 | 33d |  |
| 1559 |  | Effects iteration ongoing task | 1d? | 2003-04-29 | 2003-04-30 | 1558 | 33d |  |
| 1560 |  | Drivers in the taxi vehicles | 1d? | 2003-04-30 | 2003-05-01 | 1559 | 33d | start no earlier than 2002-10-15 |
| 1561 |  | Car door opens and closes properly on character entry/exit | 1d? | 2003-05-01 | 2003-05-02 | 1560 | 33d |  |
| 1562 |  | Support for leaving the car door open if running on exit | 1d? | 2003-05-02 | 2003-05-05 | 1561 | 33d |  |
| 1563 |  | Death volume handling for on foot | 1d? | 2003-05-05 | 2003-05-06 | 1562 | 33d |  |
| 1564 |  | In car character animations | 1d? | 2003-05-06 | 2003-05-07 | 1563 | 33d |  |
| 1565 |  | Currency system incorporated into game | 1d? | 2003-05-07 | 2003-05-08 | 1564 | 33d |  |
| 1566 |  | On foot gameplay ongoing task | 1d? | 2003-05-08 | 2003-05-09 | 1565 | 33d |  |
| 1567 |  | 2D mini games investigation (spend 3-4 days determining what is possible) | 1d? | 2003-05-09 | 2003-05-12 | 1566 | 33d | start no earlier than 2002-10-15 |
| 1568 |  | Integration of stylized HUD map | 1d? | 2003-05-12 | 2003-05-13 | 1567 | 33d |  |
| 1569 |  | Front end and HUD work for currency | 1d? | 2003-05-13 | 2003-05-14 | 1568 | 33d |  |
| 1570 |  | Mini driving games presentation and HUD screens | 1d? | 2003-05-14 | 2003-05-15 | 1569 | 33d | start no earlier than 2002-09-16 |
| 1571 |  | Mission presentation HUD art iteration ongoing task | 1d? | 2003-05-15 | 2003-05-16 | 1570 | 33d |  |
| 1572 |  | Can load/save games on memory card | 1d? | 2003-05-16 | 2003-05-19 | 1571 | 33d |  |
| 1573 |  | Memory card screens | 1d? | 2003-05-19 | 2003-05-20 | 1572 | 33d |  |
| 1574 |  | Submit build to EA CQC process (PAL) | 1d? | 2003-03-14 | 2003-03-15 |  | 80d | start no earlier than 2003-03-14 |
| 1575 | 3.11 | **Milestone 17 - Final (March 30th) (Temp)** | 90d? | 2003-03-03 | 2003-07-04 |  | 0d |  |
| 1576 |  | Death volume support in the world builder tool (complete by October 25) | 8d | 2003-03-03 | 2003-03-13 |  | 0d | start no earlier than 2003-03-03 |
| 1577 |  | Missions: Work with mission team to make sure they work | 1d? | 2003-03-13 | 2003-03-14 | 1576 | 0d |  |
| 1578 |  | Camera collisions: on foot | 1d? | 2003-03-14 | 2003-03-15 | 1577 | 0d |  |
| 1579 |  | Camera collisions: driving | 1d? | 2003-03-15 | 2003-03-17 | 1578 | 0d |  |
| 1580 |  | Camera collisions: interiors | 1d? | 2003-03-17 | 2003-03-18 | 1579 | 0d |  |
| 1581 |  | Camera shake | 1d? | 2003-03-18 | 2003-03-19 | 1580 | 0d |  |
| 1582 |  | Interior rail camera improvements | 1d? | 2003-03-19 | 2003-03-20 | 1581 | 0d |  |
| 1583 |  | Improved camera setup for mission conversations | 1d? | 2003-03-20 | 2003-03-21 | 1582 | 0d |  |
| 1584 |  | Help getting new level art in the game | 1d? | 2003-03-21 | 2003-03-24 | 1583 | 0d |  |
| 1585 |  | Help getting new missions in the game | 1d? | 2003-03-24 | 2003-03-25 | 1584 | 0d |  |
| 1586 |  | Improved command line parameters for artists to start in various world locations | 1d? | 2003-03-25 | 2003-03-26 | 1585 | 0d |  |
| 1587 |  | Mission icon scaling based on distance | 1d? | 2003-03-26 | 2003-03-27 | 1586 | 0d | start no earlier than 2002-10-15 |
| 1588 |  | Help getting new level art in the game | 1d? | 2003-03-27 | 2003-03-28 | 1587 | 0d |  |
| 1589 |  | Mission restart correctly resets the players position, mission elements, and returns to mission instruction screen | 1d? | 2003-03-28 | 2003-03-31 | 1588 | 0d | start no earlier than 2002-09-16 |
| 1590 |  | Missions: Work with mission team to make sure they work | 1d? | 2003-03-31 | 2003-04-01 | 1589 | 0d |  |
| 1591 |  | Artist pipeline support | 1d? | 2003-04-01 | 2003-04-02 | 1590 | 0d |  |
| 1592 |  | Artist memory budget enforcement | 1d? | 2003-04-02 | 2003-04-03 | 1591 | 0d |  |
| 1593 |  | Audio for gag NISes | 1d? | 2003-04-03 | 2003-04-04 | 1592 | 0d | start no earlier than 2002-10-15 |
| 1594 |  | Engine sounds working correctly - Final pass | 1d? | 2003-04-04 | 2003-04-07 | 1593 | 0d |  |
| 1595 |  | Dialog system: eye blinking and mouth flapping | 1d? | 2003-04-07 | 2003-04-08 | 1594 | 0d |  |
| 1596 |  | Interior sound effects - Final pass | 1d? | 2003-04-08 | 2003-04-09 | 1595 | 0d |  |
| 1597 |  | PS2 mipmap tuning | 1d? | 2003-04-09 | 2003-04-10 | 1596 | 0d |  |
| 1598 |  | Addition of some final sound effects - Final pass | 1d? | 2003-04-10 | 2003-04-11 | 1597 | 0d |  |
| 1599 |  | Reverb | 1d? | 2003-04-11 | 2003-04-14 | 1598 | 0d |  |
| 1600 |  | Generic traffic audio | 1d? | 2003-04-14 | 2003-04-15 | 1599 | 0d |  |
| 1601 |  | Interior gag audio | 1d? | 2003-04-15 | 2003-04-16 | 1600 | 0d | start no earlier than 2002-10-15 |
| 1602 |  | Mini driving games working | 1d? | 2003-04-16 | 2003-04-17 | 1601 | 0d |  |
| 1603 |  | FMVs playing in game (in between missions) | 1d? | 2003-04-17 | 2003-04-18 | 1602 | 0d |  |
| 1604 |  | General memory management ongoing tasks | 1d? | 2003-04-18 | 2003-04-21 | 1603 | 0d |  |
| 1605 |  | DSG cleanup / abstract base class for DSG objects | 1d? | 2003-04-21 | 2003-04-22 | 1604 | 0d | start no earlier than 2002-10-15 |
| 1606 |  | General dynamic loading ongoing tasks | 1d? | 2003-04-22 | 2003-04-23 | 1605 | 0d |  |
| 1607 |  | Dymamic loading compression incorporated | 1d? | 2003-04-23 | 2003-04-24 | 1606 | 0d |  |
| 1608 |  | Load cancels working (dependent on P3D providing this) | 1d? | 2003-04-24 | 2003-04-25 | 1607 | 0d |  |
| 1609 |  | Final rendered trigger volumes | 1d? | 2003-04-25 | 2003-04-28 | 1608 | 0d |  |
| 1610 |  | Incorporation of P3D tool to auto-optimize meshes | 1d? | 2003-04-28 | 2003-04-29 | 1609 | 0d |  |
| 1611 |  | Boulevard heap integration | 1d? | 2003-04-29 | 2003-04-30 | 1610 | 0d |  |
| 1612 |  | Mission vehicle AI improvements | 1d? | 2003-04-30 | 2003-05-01 | 1611 | 0d | start no earlier than 2002-10-15 |
| 1613 |  | Pedestrians diving out of the way | 1d? | 2003-05-01 | 2003-05-02 | 1612 | 0d |  |
| 1614 |  | Pedestrians hit by car response | 1d? | 2003-05-02 | 2003-05-05 | 1613 | 0d |  |
| 1615 |  | Car reset | 1d? | 2003-05-05 | 2003-05-06 | 1614 | 0d | start no earlier than 2002-10-15 |
| 1616 |  | Car moves correctly on moveable platforms | 1d? | 2003-05-06 | 2003-05-07 | 1615 | 0d |  |
| 1617 |  | Dynamic object rest tests | 1d? | 2003-05-07 | 2003-05-08 | 1616 | 0d |  |
| 1618 |  | Full use of physics properties from the database | 1d? | 2003-05-08 | 2003-05-09 | 1617 | 0d |  |
| 1619 |  | Car door opens and closes properly on character entry/exit | 1d? | 2003-05-09 | 2003-05-12 | 1618 | 0d |  |

| ID | WBS | Task | Duration | Start | Finish | Predecessors | Complete | Total float | Constraint |
| --- | --- | --- | --- | --- | --- | --- | --- | --- | --- |
| 1620 |  | Improved collision response | 1d? | 2003-05-12 | 2003-05-13 | 1619 |  | 0d |  |
| 1621 |  | Death volume handling for car | 1d? | 2003-05-13 | 2003-05-14 | 1620 |  | 0d |  |
| 1622 |  | Simple car reset | 1d? | 2003-05-14 | 2003-05-15 | 1621 |  | 0d |  |
| 1623 |  | Dynamic object removal from DSG | 1d? | 2003-05-15 | 2003-05-16 | 1622 |  | 0d |  |
| 1624 |  | Disable character collision while character in the car | 1d? | 2003-05-16 | 2003-05-19 | 1623 |  | 0d |  |
| 1625 |  | Vehicle brake lights | 1d? | 2003-05-19 | 2003-05-20 | 1624 |  | 0d |  |
| 1626 |  | In car character animations | 1d? | 2003-05-20 | 2003-05-21 | 1625 |  | 0d |  |
| 1627 |  | Steep terrain handling | 1d? | 2003-05-21 | 2003-05-22 | 1626 |  | 0d |  |
| 1628 |  | Terrain type tags in the pipeline, with an interface to access them at runtime | 1d? | 2003-05-22 | 2003-05-23 | 1627 |  | 0d | start no earlier than 2002-10-15 |
| 1629 |  | Lens flare / corona working | 1d? | 2003-05-23 | 2003-05-26 | 1628 |  | 0d |  |
| 1630 |  | Blobby shadows added for NPCs, pedestrians, non-player cars | 1d? | 2003-05-26 | 2003-05-27 | 1629 |  | 0d |  |
| 1631 |  | 2 weeks vacation | 1d? | 2003-05-27 | 2003-05-28 | 1630 |  | 0d |  |
| 1632 |  | Ongoing rendering effects task | 1d? | 2003-05-28 | 2003-05-29 | 1631 |  | 0d |  |
| 1633 |  | Better FMVs for Xbox and GC | 1d? | 2003-05-29 | 2003-05-30 | 1632 |  | 0d | start no earlier than 2002-10-15 |
| 1634 |  | Create final logo FMVs for all 6 platforms | 1d? | 2003-05-30 | 2003-06-02 | 1633 |  | 0d |  |
| 1635 |  | Xbox ripping | 1d? | 2003-06-02 | 2003-06-03 | 1634 |  | 0d |  |
| 1636 |  | All water effects complete | 1d? | 2003-06-03 | 2003-06-04 | 1635 |  | 0d | start no earlier than 2002-10-15 |
| 1637 |  | Different skid mark types working | 1d? | 2003-06-04 | 2003-06-05 | 1636 |  | 0d |  |
| 1638 |  | Button press flash effect | 1d? | 2003-06-05 | 2003-06-06 | 1637 |  | 0d |  |
| 1639 |  | Food icon effects | 1d? | 2003-06-06 | 2003-06-09 | 1638 |  | 0d |  |
| 1640 |  | Nuclear glow bubbles effects | 1d? | 2003-06-09 | 2003-06-10 | 1639 |  | 0d | start no earlier than 2002-09-16 |
| 1641 |  | Power coupling electrical effects | 1d? | 2003-06-10 | 2003-06-11 | 1640 |  | 0d |  |
| 1642 |  | Power coupling destroy effects | 1d? | 2003-06-11 | 2003-06-12 | 1641 |  | 0d |  |
| 1643 |  | World animation effects | 1d? | 2003-06-12 | 2003-06-13 | 1642 |  | 0d |  |
| 1644 |  | Effects iteration ongoing task | 1d? | 2003-06-13 | 2003-06-16 | 1643 |  | 0d |  |
| 1645 |  | Drivers in the taxi vehicles | 1d? | 2003-06-16 | 2003-06-17 | 1644 |  | 0d | start no earlier than 2002-10-15 |
| 1646 |  | Car door opens and closes properly on character entry/exit | 1d? | 2003-06-17 | 2003-06-18 | 1645 |  | 0d |  |
| 1647 |  | Support for leaving the car door open if running on exit | 1d? | 2003-06-18 | 2003-06-19 | 1646 |  | 0d |  |
| 1648 |  | Death volume handling for on foot | 1d? | 2003-06-19 | 2003-06-20 | 1647 |  | 0d |  |
| 1649 |  | In car character animations | 1d? | 2003-06-20 | 2003-06-23 | 1648 |  | 0d |  |
| 1650 |  | Currency system incorporated into game | 1d? | 2003-06-23 | 2003-06-24 | 1649 |  | 0d |  |
| 1651 |  | On foot gameplay ongoing task | 1d? | 2003-06-24 | 2003-06-25 | 1650 |  | 0d |  |
| 1652 |  | 2D mini games investigation (spend 3-4 days determining what is possible) | 1d? | 2003-06-25 | 2003-06-26 | 1651 |  | 0d | start no earlier than 2002-10-15 |
| 1653 |  | Integration of stylized HUD map | 1d? | 2003-06-26 | 2003-06-27 | 1652 |  | 0d |  |
| 1654 |  | Front end and HUD work for currency | 1d? | 2003-06-27 | 2003-06-30 | 1653 |  | 0d |  |
| 1655 |  | Mini driving games presentation and HUD screens | 1d? | 2003-06-30 | 2003-07-01 | 1654 |  | 0d | start no earlier than 2002-09-16 |
| 1656 |  | Mission presentation HUD art iteration ongoing task | 1d? | 2003-07-01 | 2003-07-02 | 1655 |  | 0d |  |
| 1657 |  | Can load/save games on memory card | 1d? | 2003-07-02 | 2003-07-03 | 1656 |  | 0d |  |
| 1658 |  | Memory card screens | 1d? | 2003-07-03 | 2003-07-04 | 1657 |  | 0d |  |
| 1659 |  | EA CQC approval received (PAL)/Submit to Sony, Microsoft and Nintendo (PAL) | 1d? | 2003-04-15 | 2003-04-16 |  |  | 56d | start no earlier than 2003-04-15 |
| 1660 |  | Sony, Microsoft and Nintendo approval received (NTSC) | 1d? | 2003-05-01 | 2003-05-02 | 1659 |  | 45d | start no earlier than 2003-05-01 |
| 1661 |  | Sony, Microsoft and Nintendo approval received (PAL) | 1d? | 2003-05-15 | 2003-05-16 | 1660 |  | 36d | start no earlier than 2003-05-15 |
| 1662 | 4 | **Sound Tasks** | 262d? | 2002-04-16 A | 2003-04-16 |  | 28% | 57d |  |
| 1663 | 4.1 | **Milestone 13** | 1d? | 2002-10-30 A | 2002-10-31 A |  | 100% |  |  |
| 1664 |  | First Pass collision sounds | 1d? | 2002-10-30 A | 2002-10-31 A |  | 100% |  | start no earlier than 2002-10-30 |
| 1665 |  | NIS gags placeholder for sync test | 1d? | 2002-10-30 A | 2002-10-31 A |  | 100% |  | start no earlier than 2002-10-30 |
| 1666 | 4.2 | **Milestone 14** | 19.12d? | 2002-11-19 A | 2002-12-16 |  | 50% | 146d |  |
| 1667 |  | Design New Car Engine Sound System | 2d | 2002-11-19 A | 2002-11-20 |  | 90% | 157.72d | start no earlier than 2002-11-19 |
| 1668 |  | Finish on foot music, generic and Character based ( I will need to do a session with a Baritone Sax player for Lisa) | 10d | 2002-11-21 A | 2002-12-04 | 1667 | 50% | 152.72d | start no earlier than 2002-11-19 |
| 1669 |  | Implement On foot music (edit Music script) | 2d | 2002-12-05 A | 2002-12-06 | 1668 | 80% | 151.12d | start no earlier than 2002-11-19 |
| 1670 |  | First Pass of Volume trigger for ambience, reverb and landmark sounds in World Builder | 10d | 2002-11-25 A | 2002-12-09 |  | 49% | 141.88d | start no earlier than 2002-11-25 |
| 1671 |  | Ambience script update for new ambience regions | 11.12d? | 2002-11-25 A | 2002-12-10 | 1670 | 45% | 147d | start no earlier than 2002-11-19 |
| 1672 |  | Start adding Postional sounds (if time permits) | 3d | 2002-12-10 | 2002-12-13 | 1671 |  | 147d | start no earlier than 2002-11-19 |
| 1673 |  | Nis Gags | 1d? | 2002-12-13 A | 2002-12-16 A | 1672 | 100% |  | start no earlier than 2002-11-27 |
| 1674 |  | Meeting with Jeff Plumley re: list of cars, etc. | 1d | 2002-11-21 | 2002-11-22 |  |  | 154.8d | start no earlier than 2002-11-21 |
| 1675 |  | Collect engine sound for all cars | 4d | 2002-11-22 A | 2002-11-28 | 1674 | 70% | 153d | start no earlier than 2002-11-21 |
| 1676 |  | First pass implementation of engine sounds (code dependent) | 10d | 2002-11-28 A | 2002-12-12 | 1675 | 50% | 148d | start no earlier than 2002-11-19 |
| 1677 | 4.3 | **Milestone 15** | 42.12d? | 2002-11-19 | 2003-01-16 |  |  | 123d |  |
| 1678 |  | All sfx in the game | 1d? | 2003-01-15 | 2003-01-16 |  |  | 123d | start no earlier than 2003-01-15 |
| 1679 |  | Placeholder interactive music for all missions | 1d? | 2003-01-15 | 2003-01-16 |  |  | 123d | start no earlier than 2003-01-15 |
| 1680 |  | Placeholder audio for all gags and FMVs | 1d? | 2003-01-15 | 2003-01-16 |  |  | 123d | start no earlier than 2003-01-15 |
| 1681 |  | Level mission Music | 1d? | 2002-11-19 | 2002-11-19 |  |  | 164.12d | start no earlier than 2002-11-19 |
| 1682 |  | Second Pass Collision Sounds | 1d? | 2002-11-19 | 2002-11-19 |  |  | 164.12d | start no earlier than 2002-11-19 |
| 1683 |  | Dialogue | 1d? | 2002-12-18 | 2002-12-18 |  |  | 143.12d | start no earlier than 2002-12-18 |
| 1684 | 4.4 | **Milestone 16** | 21.12d? | 2003-01-20 | 2003-02-17 |  |  | 100d |  |
| 1685 | 4.4.1 | **Positional Sound:** | 1d? | 2003-01-20 | 2003-01-20 |  |  | 120.12d |  |
| 1686 |  | Fixed Objects, fountains, etc.. | 1d? | 2003-01-20 | 2003-01-20 |  |  | 120.12d | start no earlier than 2003-01-20 |
| 1687 |  | AI Traffic - engine & car horns | 1d? | 2003-01-20 | 2003-01-20 |  |  | 120.12d | start no earlier than 2003-01-20 |
| 1688 |  | Dialogue ? (selected lines ie. gags) | 1d? | 2003-01-20 | 2003-01-20 |  |  | 120.12d | start no earlier than 2003-01-20 |
| 1689 |  | Interactive props (implement & test) | 1d? | 2003-01-20 | 2003-01-20 |  |  | 120.12d | start no earlier than 2003-01-20 |

| ID | WBS | Task | Duration | Start | Finish | Predecessors | Complete | Total float | Constraint |
| --- | --- | --- | --- | --- | --- | --- | --- | --- | --- |
| 1690 | 4.4.2 | **Tuning** | 1d? | 2003-01-20 | 2003-01-20 |  |  | 120.12d |  |
| 1691 |  | Reverb, ambiences (levels), master volumes (dialogue vs music, etc) | 1d? | 2003-01-20 | 2003-01-20 |  |  | 120.12d | start no earlier than 2003-01-20 |
| 1692 |  | Engine Sounds | 1d? | 2003-01-20 | 2003-01-20 |  |  | 120.12d | start no earlier than 2003-01-20 |
| 1693 |  | Code (ducking, separate submaster for car sounds) | 1d? | 2003-01-20 | 2003-01-20 |  |  | 120.12d | start no earlier than 2003-01-20 |
| 1694 |  | Events - car door, engine start up, | 1d? | 2003-01-20 | 2003-01-20 |  |  | 120.12d | start no earlier than 2003-01-20 |
| 1695 |  | QA - bug checking | 1d? | 2003-01-20 | 2003-01-20 |  |  | 120.12d | start no earlier than 2003-01-20 |
| 1696 |  | FMV's | 1d? | 2003-01-20 | 2003-01-20 |  |  | 120.12d | start no earlier than 2003-01-20 |
| 1697 | 4.4.6 | **Music - Missions** | 1d? | 2003-01-20 | 2003-01-20 |  |  | 120.12d |  |
| 1698 |  | Enhancements to Allan's tracks | 1d? | 2003-01-20 | 2003-01-20 |  |  | 120.12d | start no earlier than 2003-01-20 |
| 1699 |  | Land of Chocolate | 1d? | 2003-01-20 | 2003-01-20 |  |  | 120.12d | start no earlier than 2003-01-20 |
| 1700 |  | StarTreck | 1d? | 2003-01-20 | 2003-01-20 |  |  | 120.12d | start no earlier than 2003-01-20 |
| 1701 |  | Comic Book Guy | 1d? | 2003-01-20 | 2003-01-20 |  |  | 120.12d | start no earlier than 2003-01-20 |
| 1702 | 4.4.7 | **Sound Fx content** | 21.12d? | 2003-01-20 | 2003-02-17 |  |  | 100d |  |
| 1703 |  | misc. sounds - coin pu, door bells, platforms moving, etc. | 1d? | 2003-01-20 | 2003-01-20 |  |  | 120.12d | start no earlier than 2003-01-20 |
| 1704 |  | Halloween level - over the top fx ie. owls, frogs | 1d? | 2003-01-20 | 2003-01-20 |  |  | 120.12d | start no earlier than 2003-01-20 |
| 1705 |  | Milestone Delivery | 1d? | 2003-02-15 | 2003-02-17 |  |  | 100d | start no earlier than 2003-02-15 |
| 1706 | 4.5 | **Milestone 17** | 239d? | 2002-04-16 A | 2003-03-15 |  | 17% | 80d |  |
| 1707 | 4.5.1 | **Positional Sound:** | 6d? | 2003-02-17 A | 2003-02-24 |  | 33% | 94.12d |  |
| 1708 |  | Fixed Objects, fountains, etc.. | 1d? | 2003-02-17 | 2003-02-17 |  |  | 99.12d | start no earlier than 2003-02-17 |
| 1709 |  | AI Traffic - engine & car horns | 1d? | 2003-02-17 | 2003-02-17 |  |  | 99.12d | start no earlier than 2003-02-17 |
| 1710 |  | Dialogue ? (selected lines ie. gags) | 1d? | 2003-02-17 | 2003-02-17 |  |  | 99.12d | start no earlier than 2003-02-17 |
| 1711 |  | Interactive props (implement & test) | 6d | 2003-02-17 A | 2003-02-24 |  | 50% | 94.12d | start no earlier than 2003-02-17 |
| 1712 | 4.5.2 | **Tuning** | 1d? | 2003-02-17 | 2003-02-17 |  |  | 99.12d |  |
| 1713 |  | Reverb, ambiences (levels), master volumes (dialogue vs music, etc) | 1d? | 2003-02-17 | 2003-02-17 |  |  | 99.12d | start no earlier than 2003-02-17 |
| 1714 |  | Engine Sounds | 1d? | 2003-02-17 | 2003-02-17 |  |  | 99.12d | start no earlier than 2003-02-17 |
| 1715 |  | Code (ducking, separate submaster for car sounds) | 1d? | 2003-02-17 | 2003-02-17 |  |  | 99.12d | start no earlier than 2003-02-17 |
| 1716 |  | Events - car door, engine start up, | 1d? | 2003-02-17 | 2003-02-17 |  |  | 99.12d | start no earlier than 2003-02-17 |
| 1717 |  | QA - bug checking | 1d? | 2003-02-17 | 2003-02-17 |  |  | 99.12d | start no earlier than 2003-02-17 |
| 1718 |  | FMV's | 1d? | 2003-02-17 | 2003-02-17 |  |  | 99.12d | start no earlier than 2003-02-17 |
| 1719 | 4.5.3 | **Music - Missions** | 1.12d? | 2003-02-17 | 2003-02-18 |  |  | 99d |  |
| 1720 |  | Enhancements to Allan's tracks | 1d? | 2003-02-17 | 2003-02-17 |  |  | 99.12d | start no earlier than 2003-02-17 |
| 1721 |  | Bollywood 1 | 1d? | 2003-02-17 | 2003-02-17 |  |  | 99.12d | start no earlier than 2003-02-17 |
| 1722 |  | Bollywood 2 | 1d? | 2003-02-17 | 2003-02-17 |  |  | 99.12d | start no earlier than 2003-02-17 |
| 1723 |  | Marge Mission 2 | 1d? | 2003-02-17 | 2003-02-18 |  |  | 99d | start no earlier than 2003-02-17 |
| 1724 | 4.5.4 | **Sound Fx content** | 17d? | 2003-02-20 A | 2003-03-15 |  | 23% | 80d |  |
| 1725 |  | misc. sounds - coins, door bells, platforms moving, etc. - 1st pass | 1d? | 2003-02-20 | 2003-02-21 |  |  | 96d | start no earlier than 2003-02-20 |
| 1726 |  | Halloween level - over the top fx ie. owls, frogs - 1st pass | 1d? | 2003-02-27 | 2003-02-28 |  |  | 83d | start no earlier than 2003-02-27 |
| 1727 |  | revisit collision sounds - generic collision sounds | 2d | 2003-02-28 | 2003-03-04 | 1726 |  | 83d | start no earlier than 2003-02-17 |
| 1728 |  | Bee sounds final pass | 2d | 2003-03-04 | 2003-03-06 | 1727 |  | 83d | start no earlier than 2003-02-17 |
| 1729 |  | Car door sounds - generic | 1d? | 2003-03-06 | 2003-03-07 | 1728 |  | 83d | start no earlier than 2003-01-20 |
| 1730 |  | Interactive gags | 6d | 2003-03-07 A | 2003-03-15 | 1729 | 50% | 80d | start no earlier than 2003-02-17 |
| 1731 | 4.5.5 | **Engine Sounds** | 219.88d? | 2002-04-16 | 2003-02-17 |  |  | 99.12d |  |
| 1732 |  | Tuning - gear shift, acceleration, etc. | 1d? | 2002-04-16 | 2002-04-17 |  |  | 318d |  |
| 1733 |  | New engine sounds | 1d? | 2003-02-17 | 2003-02-17 |  |  | 99.12d | start no earlier than 2003-02-17 |
| 1734 | 4.5.6 | **Dialogue** | 1d? | 2003-02-17 | 2003-02-17 |  |  | 99.12d |  |
| 1735 |  | Normalize Skate dialogue | 1d? | 2003-02-17 | 2003-02-17 |  |  | 99.12d | start no earlier than 2003-02-17 |
| 1736 |  | Milestone Delivery | 1d? | 2003-02-17 | 2003-02-17 |  |  | 99.12d | start no earlier than 2003-02-17 |
| 1737 | 4.6 | **Milestone 18 - Alpha** | 64.12d? | 2003-01-20 | 2003-04-16 |  |  | 57d |  |
| 1738 |  | Recording | 1d? | 2003-01-20 | 2003-01-20 |  |  | 120.12d | start no earlier than 2003-01-20 |
| 1739 |  | Music Mix | 1d? | 2003-01-20 | 2003-01-20 |  |  | 120.12d | start no earlier than 2003-01-20 |
| 1740 |  | Mastering | 1d? | 2003-01-20 | 2003-01-20 |  |  | 120.12d | start no earlier than 2003-01-20 |
| 1741 |  | Final Tuning | 1d? | 2003-01-20 | 2003-01-20 |  |  | 120.12d | start no earlier than 2003-01-20 |
| 1742 |  | Milestone Delivery Date | 1d? | 2003-04-15 | 2003-04-16 |  |  | 57d | start no earlier than 2003-04-15 |
| 1745 |  | Localization | 1d? | 2003-01-20 | 2003-01-20 |  |  | 120.12d | start no earlier than 2003-01-20 |
| 1746 |  | Dialogue Mastering | 1d? | 2003-01-20 | 2003-01-20 |  |  | 120.12d | start no earlier than 2003-01-20 |
| 1747 |  | Milestone Delivery Date | 1d? | 2003-03-15 | 2003-03-17 |  |  | 79d | start no earlier than 2003-03-15 |
| 1774 | 5 | **Dropped or Moved Tasks** | 154.88d? | 2002-04-16 A | 2002-11-19 |  | 2% | 164.12d |  |
| 1775 | 5.1 | **Milestone 13** | 141.88d? | 2002-04-16 A | 2002-10-31 |  | 3% | 177.12d |  |
| 1776 |  | Engine sounds working correctly - Final pass | 1d? | 2002-04-16 | 2002-04-17 |  |  | 318d |  |
| 1777 |  | PS2 mipmap tuning | 1d? | 2002-04-16 | 2002-04-17 |  |  | 318d |  |
| 1778 |  | Generic traffic audio | 1d? | 2002-04-16 | 2002-04-17 |  |  | 318d |  |
| 1779 |  | DSG cleanup / abstract base class for DSG objects | 1d? | 2002-04-16 | 2002-04-17 |  |  | 318d |  |
| 1780 |  | Final rendering of visible collision volumes | 1d? | 2002-04-16 | 2002-04-17 |  |  | 318d |  |
| 1781 |  | Occlusion volume runtime | 1d? | 2002-04-16 | 2002-04-17 |  |  | 318d |  |
| 1782 |  | Investigate dynamic loading of characters | 1d? | 2002-04-16 | 2002-04-17 |  |  | 318d |  |
| 1783 |  | Dynamic loading compression incorporated | 1d? | 2002-10-16 | 2002-10-17 |  |  | 188d | start no earlier than 2002-10-16 |
| 1784 |  | Interior gag audio (?who is doing this?) | 1d? | 2002-10-16 | 2002-10-17 |  |  | 188d | start no earlier than 2002-10-16 |
| 1785 |  | Mini driving games working (? Who is doing this?) | 1d? | 2002-04-16 | 2002-04-17 |  |  | 318d |  |
| 1786 |  | FMVs playing in game (in between missions) (?who is doing this_ | 1d? | 2002-04-16 | 2002-04-17 |  |  | 318d |  |
| 1787 |  | General memory management ongoing tasks (?who is doing this?) | 1d? | 2002-04-16 | 2002-04-17 |  |  | 318d |  |

| ID | WBS | Task | Duration | Start | Finish | Complete | Total float | Constraint |
| --- | --- | --- | --- | --- | --- | --- | --- | --- |
| 1788 |  | Full use of physics properties from the database | 1d? | 2002-10-22 A | 2002-10-22 | 30% | 184.12d |  |
| 1789 |  | Vehicle to vehicle collision improvements | 1d? | 2002-10-31 A | 2002-10-31 | 25% | 177.12d |  |
| 1790 |  | Cleanup of dynaphys DSG transforms | 1d? | 2002-04-16 | 2002-04-17 |  | 318d |  |
| 1791 |  | In car character animation triggering | 1d? | 2002-04-16 | 2002-04-17 |  | 318d |  |
| 1792 | 5.2 | **Milestone 14** | 1.88d? | 2002-11-18 A | 2002-11-19 |  | 164.12d |  |
| 1793 |  | Ensure all Halloween specific functionality gets in the game | 1d? | 2002-11-18 | 2002-11-19 |  | 165d | start no earlier than 2002-11-18 |
| 1794 |  | Per level light files | 1d? | 2002-11-18 A | 2002-11-19 |  | 165d | start no earlier than 2002-11-18 |
| 1795 |  | Support artists for time-of-day specific rendering issues | 1d? | 2002-11-18 | 2002-11-19 |  | 165d | start no earlier than 2002-11-18 |
| 1796 |  | PS2 Timing Hang investigation | 1d? | 2002-11-19 | 2002-11-19 |  | 164.12d | start no earlier than 2002-11-19 |
| 1797 |  | Tree allocations fixed/moved offline. | 1d? | 2002-11-19 | 2002-11-19 |  | 164.12d | start no earlier than 2002-11-19 |
| 1798 |  | Occlusion volumes | 1d? | 2002-11-19 | 2002-11-19 |  | 164.12d | start no earlier than 2002-11-19 |
| 1799 |  | Tree datastructure revised | 1d? | 2002-11-19 | 2002-11-19 |  | 164.12d | start no earlier than 2002-11-19 |
| 1800 |  | Rendering Performance | 1d? | 2002-11-19 | 2002-11-19 |  | 164.12d | start no earlier than 2002-11-19 |
| 1801 |  | Interior enter/exit presentation with iris transition (partially completed by Darwin) | 1d? | 2002-11-18 | 2002-11-19 |  | 165d | start no earlier than 2002-11-18 |
| 1802 |  | Presentation manager changes required for presentation enhancements | 1d? | 2002-11-18 | 2002-11-19 |  | 165d | start no earlier than 2002-11-18 |
| 1803 |  | Ensure all interactive gags get into the game and can be triggered correctly | 1d? | 2002-11-18 | 2002-11-19 |  | 165d | start no earlier than 2002-11-18 |

## Version 2 (data date 2002-10-28, saved 2003-04-03, file Simpsons 2 Production Schedule 18.3.mpp)

Last finish 2003-07-04 → 2003-08-16 (+43d). Complete tasks 179 → 201.

Added:

| ID | Task | Duration | Start | Finish | Predecessors | Constraint | Resources |
| --- | --- | --- | --- | --- | --- | --- | --- |
| 1 | **Milestones** | 572d? | 2001-11-15 | 2003-08-16 |  |  |  |
| 2 | Milestones 1 | 1d | 2001-11-15 | 2001-11-16 |  | start no earlier than 2001-11-15 |  |
| 3 | Milestones 2 | 1d | 2001-12-15 | 2001-12-16 |  | start no earlier than 2001-12-15 |  |
| 4 | Milestones 3 | 1d | 2002-01-15 | 2002-01-16 |  | start no earlier than 2002-01-15 |  |
| 5 | Milestones 4 | 1d | 2002-02-15 | 2002-02-16 |  | start no earlier than 2002-02-15 |  |
| 6 | Milestones 5 | 1d | 2002-03-15 | 2002-03-16 |  | start no earlier than 2002-03-15 |  |
| 7 | Milestones 6 | 1d | 2002-04-15 | 2002-04-16 |  | start no earlier than 2002-04-15 |  |
| 8 | Milestones 7 | 1d | 2002-05-15 | 2002-05-16 |  | start no earlier than 2002-05-15 |  |
| 9 | Milestones 8 | 1d | 2002-06-15 | 2002-06-17 |  | start no earlier than 2002-06-15 |  |
| 10 | Milestones 9 | 1d | 2002-07-15 | 2002-07-16 |  | start no earlier than 2002-07-15 |  |
| 11 | Milestones 10 | 1d | 2002-08-15 | 2002-08-16 |  | start no earlier than 2002-08-15 |  |
| 12 | Milestones 11 | 1d | 2002-09-15 | 2002-09-16 |  | start no earlier than 2002-09-15 |  |
| 13 | Milestones 12 | 1d | 2002-10-15 | 2002-10-16 |  | start no earlier than 2002-10-15 |  |
| 14 | Milestones 13 | 1d | 2002-11-15 | 2002-11-16 |  | start no earlier than 2002-11-15 |  |
| 15 | Milestones 14 | 1d | 2002-12-15 | 2002-12-16 |  | start no earlier than 2002-12-15 |  |
| 16 | Milestones 15 | 1d | 2003-01-15 | 2003-01-16 |  | start no earlier than 2003-01-15 |  |
| 17 | Milestones 16 | 1d | 2003-02-15 | 2003-02-16 |  | start no earlier than 2003-02-15 |  |
| 18 | Milestones 17 | 1d | 2003-03-15 | 2003-03-16 |  | start no earlier than 2003-03-15 |  |
| 19 | **Milestones 18 - Alpha** | 31d | 2003-03-17 | 2003-04-16 |  |  |  |
| 20 | **Feature List: All Teams** | 23d | 2003-03-17 | 2003-04-16 |  |  |  |
| 21 | Side Cameras | 5d | 2003-03-17 | 2003-03-21 |  | finish no earlier than 2003-03-21 |  |
| 22 | Light Volumes | 5d | 2003-03-17 | 2003-03-21 |  | start no earlier than 2003-03-17 |  |
| 23 | Play through Levels 1 - 2 | 5d | 2003-03-17 | 2003-03-21 |  | start no earlier than 2003-03-17 |  |
| 24 | Static Heap | 5d | 2003-03-17 | 2003-03-21 |  | start no earlier than 2003-03-17 |  |
| 25 | All Idles | 5d | 2003-03-17 | 2003-03-21 |  | start no earlier than 2003-03-17 |  |
| 26 | Interior Lighting (all levels) | 5d | 2003-03-17 | 2003-03-21 |  | start no earlier than 2003-03-17 |  |
| 27 | Races | 5d | 2003-03-24 | 2003-03-28 |  | finish no earlier than 2003-03-28 |  |
| 28 | Play through Levels 1 - 4 | 5d | 2003-03-24 | 2003-03-28 |  | finish no earlier than 2003-03-28 |  |
| 29 | All Interactive Gags | 5d | 2003-03-24 | 2003-03-28 |  | finish no earlier than 2003-03-28 |  |
| 30 | Hit & Run Meter | 5d | 2003-03-24 | 2003-03-28 |  | finish no earlier than 2003-03-28 |  |
| 31 | Forced vehicle Success/Failure | 5d | 2003-03-24 | 2003-03-28 |  | finish no earlier than 2003-03-28 |  |
| 32 | ATG Integration | 5d | 2003-03-24 | 2003-03-28 |  | finish no earlier than 2003-03-28 |  |
| 33 | All Pop In Resolved | 5d | 2003-03-24 | 2003-03-28 |  | finish no earlier than 2003-03-28 |  |
| 34 | FMV Intro, 1A, 3, 6 | 5d | 2003-03-24 | 2003-03-28 |  | finish no earlier than 2003-03-28 |  |
| 35 | World Art Level 4 & 6 | 5d | 2003-03-24 | 2003-03-28 |  | finish no earlier than 2003-03-28 |  |
| 36 | All Engine Sounds Complete | 5d | 2003-03-24 | 2003-03-28 |  | finish no earlier than 2003-03-28 |  |
| 37 | All Mission music composition complete | 5d | 2003-03-24 | 2003-03-28 |  | finish no earlier than 2003-03-28 |  |
| 38 | Gambling Races | 5d | 2003-03-31 | 2003-04-04 |  | finish no earlier than 2003-04-04 |  |
| 39 | Improved pedestrians/NPC's | 5d | 2003-03-31 | 2003-04-04 |  | start no earlier than 2003-03-31 |  |
| 40 | Scrapbook | 5d | 2003-03-31 | 2003-04-04 |  | start no earlier than 2003-03-31 |  |
| 41 | Bonus (mini) game complete | 5d | 2003-03-31 | 2003-04-04 |  | start no earlier than 2003-03-31 |  |
| 42 | Play through levels 1 - 6 | 5d | 2003-03-31 | 2003-04-04 |  | start no earlier than 2003-03-31 |  |
| 43 | All wasp art complete | 5d | 2003-03-31 | 2003-04-04 |  | start no earlier than 2003-03-31 |  |
| 44 | All 2D & 3D mission art (Hud icons, briefing images, in game assets) | 5d | 2003-03-31 | 2003-04-04 |  | start no earlier than 2003-03-31 |  |
| 45 | All in game sound fx complete | 5d | 2003-03-31 | 2003-04-04 |  | start no earlier than 2003-03-31 |  |
| 46 | All character music composition complete | 5d | 2003-03-31 | 2003-04-04 |  | start no earlier than 2003-03-31 |  |
| 47 | Camera Collisions | 5d | 2003-04-07 | 2003-04-11 |  | finish no earlier than 2003-04-11 |  |
| 48 | Progressive Scan | 5d | 2003-04-07 | 2003-04-11 |  | finish no earlier than 2003-04-11 |  |
| 49 | World Art Level 5 & 7 | 5d | 2003-04-07 | 2003-04-11 |  | finish no earlier than 2003-04-11 |  |
| 50 | Credits | 5d | 2003-04-07 | 2003-04-11 |  | finish no earlier than 2003-04-11 |  |
| 51 | Memory card screens & icons | 5d | 2003-04-07 | 2003-04-11 |  | finish no earlier than 2003-04-11 |  |
| 52 | Purchase & reward screens | 5d | 2003-04-07 | 2003-04-11 |  | finish no earlier than 2003-04-11 |  |
| 53 | Begin FMV sound fx | 5d | 2003-04-07 | 2003-04-11 |  | finish no earlier than 2003-04-11 |  |
| 54 | Begin FMV composition | 5d | 2003-04-07 | 2003-04-11 |  | finish no earlier than 2003-04-11 |  |
| 55 | Mastered English Dialogue complete | 5d | 2003-04-07 | 2003-04-11 |  | finish no earlier than 2003-04-11 |  |
| 56 | Integration Week | 3d | 2003-04-12 | 2003-04-16 | 55 | finish no earlier than 2003-04-15 | Simpsons |
| 57 | **E3 Build** | 1d? | 2003-04-01 | 2003-04-01 |  |  |  |
| 58 | Xbox build | 1d? | 2003-04-01 | 2003-04-01 |  | start no earlier than 2003-04-01 |  |
| 59 | Sony build | 1d? | 2003-04-01 | 2003-04-01 |  | start no earlier than 2003-04-01 |  |
| 60 | Milestones 19 - Beta | 1d | 2003-05-30 | 2003-05-31 |  | start no earlier than 2003-05-30 |  |
| 61 | Milestones 20 - Final | 1d | 2003-06-30 | 2003-07-01 |  | start no earlier than 2003-06-30 |  |
| 62 | Milestones 21 | 1d | 2003-07-15 | 2003-07-16 |  | start no earlier than 2003-07-15 |  |
| 63 | Milestones 22 | 1d | 2003-08-15 | 2003-08-16 |  | start no earlier than 2003-08-15 |  |
| 65 | **Fox Deliverables** | 23d? | 2003-02-28 | 2003-04-01 |  |  |  |
| 66 | Front End, Character Model and animation approval | 1d? | 2003-02-28 | 2003-03-03 |  | start no earlier than 2003-02-28 |  |
| 67 | English dialog delivered to Radical, world art, signage,HUD, vehicle approvals | 1d? | 2003-03-15 | 2003-03-17 |  | start no earlier than 2003-03-15 |  |
| 68 | Localized text & dialogue delivered to Radical | 1d? | 2003-03-31 | 2003-04-01 |  | start no earlier than 2003-03-31 |  |
| 908 | **Milestone 18 - Alpha April 15** | 21d? | 2003-03-17 A | 2003-04-14 |  |  |  |
| 909 | **Effects: (Aryan, Brad, Mike M.)** | 16d? | 2003-03-18 | 2003-04-08 |  |  |  |
| 910 | All general in-game effects complete (In-game) | 1d? | 2003-03-18 | 2003-03-18 |  | start no earlier than 2003-03-18 | Aryan Hanbeck [26.7%]; Brad Dixon [26.7%]; Mike Maraffa [26.7%] |
| 911 | General in-game effects review | 1d? | 2003-03-18 | 2003-03-19 |  | start no earlier than 2003-03-18 | Aryan Hanbeck [26.7%]; Brad Dixon [26.7%]; Mike Maraffa [26.7%] |
| 912 | All interactive gag props complete (In-game) | 1d? | 2003-03-18 | 2003-03-19 |  | start no earlier than 2003-03-18 | Aryan Hanbeck [26.7%]; Brad Dixon [26.7%]; Mike Maraffa [26.7%] |
| 913 | Interactive gag props review | 1d? | 2003-03-19 | 2003-03-20 |  | start no earlier than 2003-03-19 | Aryan Hanbeck [26.7%]; Brad Dixon [26.7%]; Mike Maraffa [26.7%] |
| 914 | 3 variations of Game-play icon effects to send to FOX (Yayoi/Aryan) | 1d? | 2003-03-20 | 2003-03-21 |  | start no earlier than 2003-03-20 | Aryan Hanbeck [26.7%]; Brad Dixon [26.7%]; Mike Maraffa [26.7%] |
| 915 | Define Full design for coin collection game play (Designers) | 1d? | 2003-03-20 | 2003-03-21 |  | start no earlier than 2003-03-20 | Aryan Hanbeck [26.7%]; Brad Dixon [26.7%]; Mike Maraffa [26.7%] |
| 916 | Interactive gag props final for all levels | 5d | 2003-03-24 | 2003-03-28 |  | finish no earlier than 2003-03-28 | Aryan Hanbeck [27%]; Brad Dixon [27%]; Mike Maraffa [27%] |
| 917 | All general in-game effects complete following review | 5d | 2003-03-24 | 2003-03-28 |  | finish no earlier than 2003-03-28 | Aryan Hanbeck [27%]; Brad Dixon [27%]; Mike Maraffa [27%] |
| 918 | Current Mission collectible icons complete (See April 4th) | 5d | 2003-03-24 | 2003-03-28 |  | finish no earlier than 2003-03-28 | Aryan Hanbeck [27%]; Brad Dixon [27%]; Mike Maraffa [27%] |
| 919 | Current Mission Icon screenshots (See April 4th) | 5d | 2003-03-24 | 2003-03-28 |  | finish no earlier than 2003-03-28 | Aryan Hanbeck [27%]; Brad Dixon [27%]; Mike Maraffa [27%] |
| 920 | Rotating Signs 3 per level (Complete in all levels) | 5d | 2003-03-31 | 2003-04-04 |  | finish no earlier than 2003-04-04 | Aryan Hanbeck [27%]; Brad Dixon [27%]; Mike Maraffa [27%] |
| 921 | Gameplay icons complete (based on FOX feedback) | 5d | 2003-03-31 | 2003-04-04 |  | finish no earlier than 2003-04-04 | Aryan Hanbeck [27%]; Brad Dixon [27%]; Mike Maraffa [27%] |
| 922 | Any remaining Mission Collectible icons complete | 5d | 2003-03-31 | 2003-04-04 |  | finish no earlier than 2003-04-04 | Aryan Hanbeck [27%]; Brad Dixon [27%]; Mike Maraffa [27%] |
| 923 | Any remaining Mission icon screenshots | 5d | 2003-03-31 | 2003-04-04 |  | finish no earlier than 2003-04-04 | Aryan Hanbeck [27%]; Brad Dixon [27%]; Mike Maraffa [27%] |
| 924 | Wasp Art for all functionality complete (Fox feedback may come) | 5d | 2003-03-31 | 2003-04-04 |  | finish no earlier than 2003-04-04 | Aryan Hanbeck [27%]; Brad Dixon [27%]; Mike Maraffa [27%] |
| 925 | Coin art for all functionality complete (includes breakables etc..) | 5d | 2003-03-31 | 2003-04-04 |  | finish no earlier than 2003-04-04 | Aryan Hanbeck [27%]; Brad Dixon [27%]; Mike Maraffa [27%] |
| 926 | Purchase and reward screen designed (Yayoi) | 5d | 2003-03-31 | 2003-04-04 |  | finish no earlier than 2003-04-04 | Aryan Hanbeck [27%]; Brad Dixon [27%]; Mike Maraffa [27%] |
| 927 | Video of Gameplay icons | 1d? | 2003-03-21 | 2003-03-21 |  | finish no earlier than 2003-03-21 | Aryan Hanbeck [80%] |
| 928 | 2 dice icons for gambling | 5d | 2003-03-24 | 2003-03-28 |  | start no earlier than 2003-03-24 | Aryan Hanbeck [80%] |
| 929 | Navigation arrow redesign | 5d | 2003-03-24 | 2003-03-28 |  | start no earlier than 2003-03-24 | Aryan Hanbeck [80%] |
| 930 | 2 pedestrian model (Yy to determine) | 5d | 2003-03-31 | 2003-04-04 |  | finish no earlier than 2003-04-04 | Aryan Hanbeck [80%] |
| 931 | Highlight feature for FE | 5d | 2003-03-24 | 2003-03-28 |  | start no earlier than 2003-03-24 | Mike Maraffa |
| 932 | Clothing and Purchase screen | 5d | 2003-03-24 | 2003-03-28 |  | start no earlier than 2003-03-24 | Mike Maraffa |
| 933 | Halloween mission flow all art complete (Follow up with designers) | 2d | 2003-04-07 | 2003-04-08 |  | finish no earlier than 2003-04-08 | Aryan Hanbeck [27%]; Brad Dixon [27%]; Mike Maraffa [27%] |
| 934 | Memory card icons (PS2) and Xbox | 2d | 2003-04-07 | 2003-04-08 |  | finish no earlier than 2003-04-08 | Aryan Hanbeck [27%]; Brad Dixon [27%]; Mike Maraffa [27%] |
| 935 | **Animation: (Jeremy, Ron, Trevor, Yousuf)** | 14d? | 2003-03-18 | 2003-04-04 |  |  |  |
| 936 | Confirm remaining dialogue when to be delivered (Vlad) | 1d? | 2003-03-18 | 2003-03-18 |  | start no earlier than 2003-03-18 | Jeremy Mesana [20%]; Ron Sombilon [20%]; Trevor Lim [20%]; Yousuf Mapara [20%] |
| 937 | All idles complete | 1d? | 2003-03-18 | 2003-03-19 |  | start no earlier than 2003-03-18 | Jeremy Mesana [20%]; Ron Sombilon [20%]; Trevor Lim [20%]; Yousuf Mapara [20%] |
| 938 | Idles type-up list for FOX (Jeremy) | 1d? | 2003-03-18 | 2003-03-19 |  | start no earlier than 2003-03-18 | Jeremy Mesana [20%]; Ron Sombilon [20%]; Trevor Lim [20%]; Yousuf Mapara [20%] |
| 939 | Idle animation video tape for FOX | 1d? | 2003-03-20 | 2003-03-21 |  | start no earlier than 2003-03-20 | Jeremy Mesana [20%]; Ron Sombilon [20%]; Trevor Lim [20%]; Yousuf Mapara [20%] |
| 940 | Itchy and Scratchy Story Board (Pending Fox approval) | 1d? | 2003-03-20 | 2003-03-21 |  | start no earlier than 2003-03-20 | Jeremy Mesana [20%]; Ron Sombilon [20%]; Trevor Lim [20%]; Yousuf Mapara [20%] |
| 941 | FMVS: Intro, 1A, 3, and 6 complete for FOX review | 5d | 2003-03-24 | 2003-03-28 |  | finish no earlier than 2003-03-28 | Jeremy Mesana [20%]; Ron Sombilon [20%]; Trevor Lim [20%]; Yousuf Mapara [20%] |
| 942 | Gag animations complete for Review | 3d | 2003-03-24 | 2003-03-26 |  | start no earlier than 2003-03-24 | Jeremy Mesana [20%]; Ron Sombilon [20%]; Trevor Lim [20%]; Yousuf Mapara [20%] |
| 943 | Gag animations review | 4d | 2003-03-24 | 2003-03-27 |  | start no earlier than 2003-03-24 | Jeremy Mesana [20%]; Ron Sombilon [20%]; Trevor Lim [20%]; Yousuf Mapara [20%] |
| 944 | Itchy and Scratch Scene set up | 5d | 2003-03-24 | 2003-03-28 |  | start no earlier than 2003-03-24 | Jeremy Mesana [20%]; Ron Sombilon [20%]; Trevor Lim [20%]; Yousuf Mapara [20%] |
| 945 | All in-game animations complete | 5d | 2003-03-31 | 2003-04-04 |  | finish no earlier than 2003-04-04 | Jeremy Mesana [20%]; Ron Sombilon [20%]; Trevor Lim [20%]; Yousuf Mapara [20%] |
| 946 | Wasp animation complete (Functionality complete) | 5d | 2003-03-31 | 2003-04-04 |  | finish no earlier than 2003-04-04 | Jeremy Mesana [20%]; Ron Sombilon [20%]; Trevor Lim [20%]; Yousuf Mapara [20%] |
| 947 | **Levels: (Sarah, Vincent, Bob, Ross, Sanela, Dustin, Eric)** | 17d? | 2003-03-17 A | 2003-04-08 |  |  |  |
| 948 | Phone booth placement design from designers | 1d? | 2003-03-17 A | 2003-03-17 |  | finish no earlier than 2003-03-17 | Sarah Meagher [13.3%]; Vincent Chin [13.3%]; Robert Peet [13.3%]; Ross Young [13.3%]; Sanela Mickovic [13.3%]; Eric Madill [13.3%] |
| 949 | Phone booth placement for 1, 2, 3 in game complete | 1d? | 2003-03-20 A | 2003-03-21 |  | start no earlier than 2003-03-20 | Sarah Meagher [16.3%]; Vincent Chin [16.3%]; Robert Peet [16.3%]; Ross Young [16.3%]; Sanela Mickovic [16.3%] |
| 950 | Bart interior in 1st pass | 1d? | 2003-03-21 | 2003-03-21 |  | finish no earlier than 2003-03-21 | Eric Madill [80%] |
| 951 | Bart interior complete | 5d | 2003-03-24 | 2003-03-28 |  | start no earlier than 2003-03-24 | Eric Madill [80%] |
| 952 | All halloween interior and lighting complete | 5d | 2003-03-31 | 2003-04-04 |  | finish no earlier than 2003-04-04 | Eric Madill [80%] |
| 953 | **Levels 1 2 3 complete** | 5d | 2003-03-24 | 2003-03-28 |  |  |  |
| 954 | Level 1 | 5d | 2003-03-24 | 2003-03-28 |  | start no earlier than 2003-03-24 | Sanela Mickovic [40%]; Vincent Chin [40%] |
| 955 | Level 2 | 5d | 2003-03-24 | 2003-03-28 |  | start no earlier than 2003-03-24 | Sarah Meagher [40%]; Robert Peet [40%] |
| 956 | Level 3 | 5d | 2003-03-24 | 2003-03-28 |  | start no earlier than 2003-03-24 | Ross Young [80%] |
| 957 | Remaining 4 minitrack Designs complete from Designers | 1d? | 2003-03-17 | 2003-03-17 |  | finish no earlier than 2003-03-17 | Sarah Meagher [16%]; Vincent Chin [16%]; Robert Peet [16%]; Ross Young [16%]; Sanela Mickovic [16%] |
| 958 | 4 minitracks 1st pass game flow complete for testing | 1d? | 2003-03-20 | 2003-03-21 |  | start no earlier than 2003-03-20 | Sarah Meagher [16%]; Vincent Chin [16%]; Robert Peet [16%]; Ross Young [16%]; Sanela Mickovic [16%] |
| 959 | Jump cameras for all levels complete | 1d? | 2003-03-20 | 2003-03-21 |  | start no earlier than 2003-03-20 | Sarah Meagher [13.3%]; Vincent Chin [13.3%]; Robert Peet [13.3%]; Ross Young [13.3%]; Sanela Mickovic [13.3%]; Eric Madill [13.3%] |
| 960 | Interior and interactive gag cameras for all levels complete | 1d? | 2003-03-20 | 2003-03-21 |  | start no earlier than 2003-03-20 | Sarah Meagher [13.3%]; Vincent Chin [13.3%]; Robert Peet [13.3%]; Ross Young [13.3%]; Sanela Mickovic [13.3%]; Eric Madill [13.3%] |
| 962 | Race circuit design from game designers (Joe) finalized | 1d? | 2003-03-20 | 2003-03-21 |  | start no earlier than 2003-03-20 | Sarah Meagher [16%]; Vincent Chin [16%]; Robert Peet [16%]; Ross Young [16%]; Sanela Mickovic [16%] |
| 963 | First 3 minitrack designed locked down by designers | 1d? | 2003-03-20 | 2003-03-21 |  | start no earlier than 2003-03-20 | Sarah Meagher [15.6%]; Vincent Chin [15.6%]; Robert Peet [15.6%]; Ross Young [15.6%]; Sanela Mickovic [15.6%] |
| 964 | **Levels 4 and 6 complete** | 5d | 2003-03-31 | 2003-04-04 |  |  |  |
| 965 | Level 4 | 5d | 2003-03-31 | 2003-04-04 |  | finish no earlier than 2003-04-04 | Sanela Mickovic [40%]; Vincent Chin [40%] |
| 966 | Level 6 | 5d | 2003-03-31 | 2003-04-04 |  | finish no earlier than 2003-04-04 | Ross Young [80%] |
| 967 | First 3 mini tracks 2nd pass complete | 5d | 2003-03-24 | 2003-03-28 |  | finish no earlier than 2003-03-28 | Sarah Meagher [15.6%]; Vincent Chin [15.6%]; Robert Peet [15.6%]; Ross Young [15.6%]; Sanela Mickovic [15.6%] |
| 968 | Race circuit for levels 1 and 2 complete | 5d | 2003-03-24 | 2003-03-28 |  | finish no earlier than 2003-03-28 | Sarah Meagher [13%]; Vincent Chin [13%]; Robert Peet [13%]; Ross Young [13%]; Sanela Mickovic [13%]; Eric Madill [13%] |
| 969 | Race circuit for levels 3 and 4 and 5 complete (Ross to assist) | 5d | 2003-03-31 | 2003-04-04 |  | finish no earlier than 2003-04-04 | Sarah Meagher [13%]; Vincent Chin [13%]; Robert Peet [13%]; Ross Young [13%]; Sanela Mickovic [13%]; Eric Madill [13%] |
| 970 | 4 remaining mini-tracks 2nd pass complete | 5d | 2003-03-31 | 2003-04-04 |  | start no earlier than 2003-03-31 | Sarah Meagher [15.6%]; Vincent Chin [15.6%]; Robert Peet [15.6%]; Ross Young [15.6%]; Sanela Mickovic [15.6%] |
| 971 | **Levels 5 and 7 complete** | 5d | 2003-04-02 | 2003-04-08 |  |  |  |
| 972 | Level 5 | 5d | 2003-04-02 | 2003-04-08 |  | finish no earlier than 2003-04-08 | Sarah Meagher [40%]; Robert Peet [40%] |
| 973 | Level 7 | 5d | 2003-04-02 | 2003-04-08 |  | finish no earlier than 2003-04-08 | Vincent Chin [40%]; Sanela Mickovic [40%] |
| 974 | Race Circuit for Level 7 complete | 2d | 2003-04-07 | 2003-04-08 |  | finish no earlier than 2003-04-08 | Sarah Meagher [13%]; Vincent Chin [13%]; Robert Peet [13%]; Ross Young [13%]; Sanela Mickovic [13%]; Eric Madill [13%] |
| 975 | **Front end, HUD and Presentation: (Ting, Dallas, Mike M)** | 20d | 2003-03-18 A | 2003-04-14 |  |  |  |
| 976 | Scrapbook images for Character, postcard, vehicle complete | 4d | 2003-03-18 A | 2003-03-21 A |  | finish no earlier than 2003-03-21 | Ting Ting Chen [26.7%]; Mike Maraffa [26.7%] |
| 977 | Pause menu Layout, Card gallery, Stat screen layout | 4d | 2003-03-18 | 2003-03-21 |  | start no earlier than 2003-03-18 | Ting Ting Chen [40%]; Mike Maraffa [40%] |
| 978 | 3d Minitrack in FE camera path complete | 4d | 2003-03-18 A | 2003-03-21 A |  | start no earlier than 2003-03-18 | Ting Ting Chen [40%]; Mike Maraffa [40%] |
| 979 | 3d Podium for Minitrack race complete presentation | 4d | 2003-03-18 A | 2003-03-21 A |  | start no earlier than 2003-03-18 | Ting Ting Chen [40%]; Mike Maraffa [40%] |
| 980 | Bonus mini-game FE screens layout interface | 5d | 2003-03-24 | 2003-03-28 |  | finish no earlier than 2003-03-28 | Ting Ting Chen [40.5%]; Mike Maraffa [40.5%] |
| 981 | Draw all remaining 2d mission image screens | 5d | 2003-03-26 | 2003-04-01 |  | finish no earlier than 2003-04-01 | Ting Ting Chen [40.5%]; Mike Maraffa [40.5%] |
| 982 | Hit and Run Logo design to send to FOX | 5d | 2003-03-24 | 2003-03-28 |  | finish no earlier than 2003-03-28 | Ting Ting Chen [40.5%]; Mike Maraffa [40.5%] |
| 983 | Demo movie Design (Chris) | 5d | 2003-03-24 | 2003-03-28 |  | finish no earlier than 2003-03-28 | Ting Ting Chen [40.5%]; Mike Maraffa [40.5%] |
| 984 | Credit Movie design (Chris) | 5d | 2003-03-24 | 2003-03-28 |  | finish no earlier than 2003-03-28 | Ting Ting Chen [40.5%]; Mike Maraffa [40.5%] |
| 985 | Halloween logo intro layout designed (Chris/Jeff P.) | 5d | 2003-03-24 | 2003-03-28 |  | finish no earlier than 2003-03-28 | Ting Ting Chen [40.5%]; Mike Maraffa [40.5%] |
| 986 | Navigation radar with hit and run metre | 5d | 2003-03-24 | 2003-03-28 |  | start no earlier than 2003-03-24 | Ting Ting Chen [80%] |
| 987 | Circuit Race screen | 5d | 2003-03-24 | 2003-03-28 |  | start no earlier than 2003-03-24 | Ting Ting Chen [80%] |
| 988 | Debreifing screen background | 5d | 2003-03-24 | 2003-03-28 |  | start no earlier than 2003-03-24 | Ting Ting Chen [80%] |
| 989 | Wager race Screen | 5d | 2003-03-31 | 2003-04-07 |  | start no earlier than 2003-03-31 | Ting Ting Chen [80%] |
| 990 | Create 5 2d images for Wager, Street Race screens for April 1st | 7d | 2003-03-24 | 2003-04-01 |  | finish no earlier than 2003-04-01 | Dallas Bolton |
| 991 | Tutorial 2d Image | 3d | 2003-03-24 | 2003-03-27 |  | start no earlier than 2003-03-24 | Dallas Bolton |
| 992 | Level 3 - 2d image 3d background | 3d | 2003-03-24 | 2003-03-27 |  | start no earlier than 2003-03-24 | Dallas Bolton |
| 993 | Level 3 image- 2d image complete | 5d | 2003-03-24 | 2003-03-28 |  | finish no earlier than 2003-03-28 | Dallas Bolton |
| 994 | **2d Images Mission Drawing All:** | 4d | 2003-03-26 | 2003-04-01 |  |  |  |
| 995 | Hit & Run | 4d | 2003-03-26 | 2003-04-01 |  | start no earlier than 2003-03-26 | Dallas Bolton |
| 996 | Newspaper screen | 4d | 2003-03-26 | 2003-04-01 |  | start no earlier than 2003-03-26 | Dallas Bolton |
| 997 | Halloween Logo | 4d | 2003-03-26 | 2003-04-01 |  | start no earlier than 2003-03-26 | Dallas Bolton |
| 998 | Krusty - Stamp of Approval | 4d | 2003-03-26 | 2003-04-01 |  | start no earlier than 2003-03-26 | Dallas Bolton |
| 999 | Tutorial 2d Image screen | 4d | 2003-03-26 | 2003-04-01 |  | start no earlier than 2003-03-26 | Dallas Bolton |
| 1000 | Five Images screen of Louie, Milhouse, Ralph, Patty Selma, Nelson | 4d | 2003-03-26 | 2003-04-01 |  | start no earlier than 2003-03-26 | Dallas Bolton |
| 1001 | Explosion Bitmap screen | 4d | 2003-03-31 | 2003-04-03 |  | start no earlier than 2003-03-31 | Dallas Bolton |
| 1003 | Work on all Mission Collectible icons for HUD | 2d | 2003-03-31 | 2003-04-01 |  | finish no earlier than 2003-04-01 | Ting Ting Chen [40.5%]; Mike Maraffa [40.5%] |
| 1004 | Radar icon design complete (Designers) | 2d | 2003-03-31 | 2003-04-01 |  | finish no earlier than 2003-04-01 | Ting Ting Chen [40.5%]; Mike Maraffa [40.5%] |
| 1005 | Radar icons complete | 5d | 2003-03-31 | 2003-04-04 |  | finish no earlier than 2003-04-04 | Ting Ting Chen [40.5%]; Mike Maraffa [40.5%] |
| 1006 | Current Mission Collectible icons for HUD complete (See April 18th) | 5d | 2003-04-07 | 2003-04-11 |  | finish no earlier than 2003-04-11 | Ting Ting Chen [40.5%]; Mike Maraffa [40.5%] |
| 1007 | Continuation of 2d mission images screens in colour | 5d | 2003-04-07 | 2003-04-11 |  | finish no earlier than 2003-04-11 | Ting Ting Chen [40.5%]; Mike Maraffa [40.5%] |
| 1008 | Finalize Design of Damage and Proximity meter (Designers) | 5d | 2003-04-07 | 2003-04-11 |  | finish no earlier than 2003-04-11 | Ting Ting Chen [40.5%]; Mike Maraffa [40.5%] |
| 1009 | 3d Background for Purchase and Reward screen & other 3d props | 5d | 2003-04-07 | 2003-04-11 |  | finish no earlier than 2003-04-11 | Ting Ting Chen [40.5%]; Mike Maraffa [40.5%] |
| 1010 | 2d mission image to Fox for approval | 4d | 2003-03-31 | 2003-04-04 |  | start no earlier than 2003-03-31 | Dallas Bolton |
| 1011 | 5 image drawings (after drawings of 2 mission image completed) | 5d | 2003-03-31 | 2003-04-04 |  | start no earlier than 2003-03-31 | Dallas Bolton |
| 1012 | Colour of level 4 & 5 & 3d background (3d background to be done by Mike M. ) | 5d | 2003-04-07 | 2003-04-11 |  | finish no earlier than 2003-04-11 | Dallas Bolton |
| 1013 | Newspaper Level 1 screen image | 5d | 2003-04-07 | 2003-04-11 |  | finish no earlier than 2003-04-11 | Dallas Bolton |
| 1014 | 2d Image screen 1 - 7 coloured complete | 4d | 2003-04-09 | 2003-04-14 |  | finish no earlier than 2003-04-14 | Dallas Bolton |
| 1015 | 3d background screenshots | 4d | 2003-04-07 | 2003-04-11 |  | finish no earlier than 2003-04-11 | Mike Maraffa |
| 1016 | Font Redesign for FE | 3d | 2003-04-12 | 2003-04-14 |  | finish no earlier than 2003-04-14 | Ting Ting Chen [40.5%]; Mike Maraffa [40.5%] |
| 1017 | Purchase and reward screen complete | 3d | 2003-04-12 | 2003-04-14 |  | finish no earlier than 2003-04-14 | Ting Ting Chen [40.5%]; Mike Maraffa [40.5%] |
| 1018 | Mission Briefing screen for Levels 1, 2, 3, 4, 5, 6 Complete | 3d | 2003-04-12 | 2003-04-14 |  | finish no earlier than 2003-04-14 | Ting Ting Chen [40.5%]; Mike Maraffa [40.5%] |
| 1019 | **Character Modeling: (Slava)** | 14d | 2003-03-18 | 2003-04-04 |  |  |  |
| 1020 | Reference material from Chris | 4d | 2003-03-18 | 2003-03-21 |  | start no earlier than 2003-03-18 | Jaroslav Chorny [80%] |
| 1021 | Itchy and scratchy model | 5d | 2003-03-24 | 2003-03-28 |  | finish no earlier than 2003-03-28 | Jaroslav Chorny [80%] |
| 1022 | Scratchy muscular model | 5d | 2003-03-24 | 2003-03-28 |  | finish no earlier than 2003-03-28 | Jaroslav Chorny [80%] |
| 1023 | fix halloween models - fox feedback | 5d | 2003-03-24 | 2003-03-28 |  | start no earlier than 2003-03-24 | Jaroslav Chorny [80%] |
| 1024 | Create 2 generic pedestrian - fox Feedback. | 5d | 2003-03-24 | 2003-03-28 |  | start no earlier than 2003-03-24 | Jaroslav Chorny [80%] |
| 1026 | Optimization of all vehicles | 5d | 2003-03-24 | 2003-03-28 |  | start no earlier than 2003-03-24 | Kevin Fink [80%] |
| 1027 | Scale (Testers have list) vehicles | 5d | 2003-03-24 | 2003-03-28 |  | start no earlier than 2003-03-24 | Kevin Fink [80%] |
| 1028 | Review of Vehicles | 5d | 2003-03-24 | 2003-03-28 |  | start no earlier than 2003-03-24 | Kevin Fink [80%] |
| 1029 | Fix NTSC on Vehicles | 5d | 2003-03-24 | 2003-03-28 |  | start no earlier than 2003-03-24 | Kevin Fink [80%] |
| 1030 | Fix environmental mapping | 5d | 2003-03-24 | 2003-03-28 |  | start no earlier than 2003-03-24 | Kevin Fink [80%] |
| 1031 | Add variation of higher poly characters | 5d | 2003-03-24 | 2003-03-28 |  | start no earlier than 2003-03-24 | Kevin Fink [80%] |
| 1032 | FMV MOdeling - YY to get list | 5d | 2003-03-31 | 2003-04-04 |  | finish no earlier than 2003-04-04 | Kevin Fink [80%] |
| 1033 | 4 variations of ALien FMV models | 5d | 2003-03-31 | 2003-04-04 |  | finish no earlier than 2003-04-04 | Kevin Fink [80%] |
| 1034 | Itchy and Scratchy Set models (Heart, World, Environment) | 5d | 2003-03-31 | 2003-04-04 |  | start no earlier than 2003-03-31 | Kevin Fink [80%] |
| 1035 | **Milestone 19 - Beta May 30** | 12.88d? | 2003-04-14 | 2003-04-30 |  |  |  |
| 1036 | Effects: (Aryan, Brad, Mike M.) | 5d? | 2003-04-16 | 2003-04-23 |  |  |  |
| 1056 | **Animation: (Jeremy, Ron, Trevor, Yousuf)** | 12.88d? | 2003-04-14 | 2003-04-30 |  |  |  |
| 1057 | FMVs: 2 and 4 complete for FOX review | 4d | 2003-04-14 | 2003-04-18 |  | start no earlier than 2003-04-14 | Jeremy Mesana [20%]; Ron Sombilon [20%]; Trevor Lim [20%]; Yousuf Mapara [20%] |
| 1058 | FMVs: 5 and 7 Complete for FOX Review | 4d | 2003-04-21 | 2003-04-25 |  | start no earlier than 2003-04-21 | Jeremy Mesana [20%]; Ron Sombilon [20%]; Trevor Lim [20%]; Yousuf Mapara [20%] |
| 1059 | FMVs: Itchy and Scratchy complete | 4d | 2003-04-21 | 2003-04-25 |  | start no earlier than 2003-04-21 | Jeremy Mesana [20%]; Ron Sombilon [20%]; Trevor Lim [20%]; Yousuf Mapara [20%] |
| 1060 | All FMVs on videotape for Groening review | 3d | 2003-04-28 | 2003-04-30 |  | finish no earlier than 2003-04-30 | Jeremy Mesana [20%]; Ron Sombilon [20%]; Trevor Lim [20%]; Yousuf Mapara [20%] |
| 1069 | Levels: (Sarah, Vincent, Bob, Ross, Sanela, Dustin, Eric) | 5d? | 2003-04-16 | 2003-04-23 |  |  | Eric Madill [80%] |
| 1087 | **Front end, HUD and Presentation: (Ting, Dallas, Mike M)** | 10d? | 2003-04-16 | 2003-04-30 |  |  |  |
| 1088 | Memory Card warning screen re-design complete | 2d | 2003-04-16 | 2003-04-18 |  | start no earlier than 2003-04-16 | Ting Ting Chen [26.7%]; Mike Maraffa [26.7%]; Dallas Bolton [26.7%] |
| 1089 | Continuation of 2d mission images screens in colour | 2d | 2003-04-16 | 2003-04-18 |  | start no earlier than 2003-04-16 | Ting Ting Chen [26.7%]; Mike Maraffa [26.7%]; Dallas Bolton [26.7%] |
| 1102 | Hit & Run Logo | 2d | 2003-04-16 | 2003-04-18 |  | start no earlier than 2003-04-16 | Dallas Bolton [81%] |
| 1103 | Halloween Logo | 5d | 2003-04-16 | 2003-04-23 |  | start no earlier than 2003-04-16 | Dallas Bolton [81%] |
| 1104 | Krusty Stamp of Approval | 5d | 2003-04-23 | 2003-04-30 |  | start no earlier than 2003-04-23 | Dallas Bolton [81%] |
| 1109 | Character Modeling: (Slava) | 5d | 2003-04-16 | 2003-04-23 |  |  |  |
| 1114 | **(GLOBAL Geoff and Shawn)** | 8d | 2003-04-21 | 2003-04-30 |  |  |  |
| 1115 | Demo movie complete | 8d | 2003-04-21 | 2003-04-30 |  | finish no earlier than 2003-04-30 |  |
| 1116 | Title Movie complete (Pending FOX approval) | 8d | 2003-04-21 | 2003-04-30 |  | finish no earlier than 2003-04-30 |  |
| 1117 | Radical logo movie complete | 8d | 2003-04-21 | 2003-04-30 |  | finish no earlier than 2003-04-30 |  |
| 1118 | Credit movie complete | 8d | 2003-04-21 | 2003-04-30 |  | finish no earlier than 2003-04-30 |  |
| 1839 | In car camera look control | 1d? | 2003-03-07 | 2003-03-10 | 1838 | start no earlier than 2003-02-20 | Cary Brisebois [80%] |
| 1840 | First person camera mode | 1d? | 2003-03-10 | 2003-03-11 | 1839 | start no earlier than 2003-02-20 | Cary Brisebois [80%] |
| 1841 | Camera/wall and camera/ground collision problems (with Greg) | 1d? | 2003-03-11 | 2003-03-12 | 1840 | start no earlier than 2003-02-20 | Cary Brisebois [80%] |
| 1848 | Reward system changes (reward status saved and loaded correctly) | 1d? | 2003-02-28 | 2003-03-03 | 1847 | start no earlier than 2003-02-20 | Chuck Chow [80%] |
| 1850 | Engine sound refinement (spinout pitch change, ignition sound, etc)/final engine sounds | 10d | 2003-02-26 | 2003-03-11 | 1849 | start no earlier than 2003-02-20 | Darren Esau |
| 1851 | Comments and honks from traffic vehicles when hi/ near miss traffic sounds - events | 2d | 2003-03-12 | 2003-03-13 | 1850 | start no earlier than 2003-02-20 | Darren Esau |
| 1852 | Wasp sounds | 3d | 2003-03-14 | 2003-03-17 | 1851 | start no earlier than 2003-02-20 | Darren Esau |
| 1857 | Doorbell triggered Dialogue | 1d | 2003-03-26 | 2003-03-26 | 1856 | start no earlier than 2003-02-20 | Darren Esau |
| 1858 | Explosion upon specific car collisions | 1d? | 2003-03-27 | 2003-03-27 | 1857 | start no earlier than 2003-02-21 |  |
| 1860 | PS2 mipmap tuning (MS 18) | 1d | 2003-04-02 | 2003-04-02 | 1859 | start no earlier than 2003-02-20 | Darren Esau |
| 1861 | Coin Sounds - pitch variation | 1d? | 2003-03-12 | 2003-03-12 |  | start no earlier than 2003-03-12 | Darren Esau |
| 1862 | Billboard quad rendering optimizations | 1d? | 2003-02-20 | 2003-02-21 |  | start no earlier than 2003-02-20 | Devin Murname [80%] |
| 1870 | Navigation system rewrite (for both in-car and on-foot) | 1d? | 2003-03-04 | 2003-03-05 | 1869 | start no earlier than 2003-02-20 | Devin Murname [80%] |
| 1871 | Bee camera video effects | 1d? | 2003-03-05 | 2003-03-06 | 1870 | start no earlier than 2003-02-20 | Devin Murname [80%] |
| 1872 | File compression (MS 18) | 1d? | 2003-03-06 | 2003-03-07 | 1871 | start no earlier than 2003-02-20 | Devin Murname [80%] |
| 1876 | Race trigger characters walk around zone | 1d? | 2003-02-25 | 2003-02-26 | 1875 | start no earlier than 2003-02-20 | Dusit Eakkachaichanvet [80%] |
| 1877 | Incline sliding | 1d? | 2003-02-26 | 2003-02-27 | 1876 | start no earlier than 2003-02-20 | Dusit Eakkachaichanvet [80%] |
| 1878 | Traffic doesn’t disable when hit slightly | 1d? | 2003-02-27 | 2003-02-28 | 1877 | start no earlier than 2003-02-20 | Dusit Eakkachaichanvet [80%] |
| 1879 | Traffic near miss events (for audio response) | 1d? | 2003-02-28 | 2003-03-03 | 1878 | start no earlier than 2003-02-20 | Dusit Eakkachaichanvet [80%] |
| 1880 | Pedestrians walk around in other places than just the sidewalk | 1d? | 2003-03-03 | 2003-03-04 | 1879 | start no earlier than 2003-02-20 | Dusit Eakkachaichanvet [80%] |
| 1881 | Pedestrians are afraid of you after you have kicked them (turn ‘n’ run) | 1d? | 2003-03-04 | 2003-03-05 | 1880 | start no earlier than 2003-02-20 | Dusit Eakkachaichanvet [80%] |
| 1882 | Pedestrians cross road | 1d? | 2003-03-05 | 2003-03-06 | 1881 | start no earlier than 2003-02-20 | Dusit Eakkachaichanvet [80%] |
| 1883 | Lots of kids in Cletus’s yard | 1d? | 2003-03-06 | 2003-03-07 | 1882 | start no earlier than 2003-02-20 | Dusit Eakkachaichanvet [80%] |
| 1887 | Damage Volumes | 1d? | 2003-02-25 | 2003-02-26 | 1886 | start no earlier than 2003-02-25 | Greg Mayer [80%] |
| 1894 | Disable collisions with some objects after they are hit and come to rest | 1d? | 2003-03-06 | 2003-03-07 | 1893 | start no earlier than 2003-02-20 | Greg Mayer [80%] |
| 1895 | Physics system performance improvements | 1d? | 2003-03-07 | 2003-03-10 | 1894 | start no earlier than 2003-02-20 | Greg Mayer [80%] |
| 1896 | Analyze profiler results for physics code | 1d? | 2003-03-10 | 2003-03-11 | 1895 | start no earlier than 2003-02-20 | Greg Mayer [80%] |
| 1897 | Interactive physics gags | 1d? | 2003-03-11 | 2003-03-12 | 1896 | start no earlier than 2003-02-20 | Greg Mayer [80%] |
| 1898 | Refraction shader performance improvements | 1d? | 2003-02-20 | 2003-02-21 |  | start no earlier than 2003-02-20 | Iain Gipson |
| 1899 | Eliminate or minimize load screen stutters | 1d? | 2003-02-21 | 2003-02-24 | 1898 | start no earlier than 2003-02-20 | Iain Gipson |
| 1900 | Mission presentation changes requested by designers | 1d? | 2003-02-24 | 2003-02-25 | 1899 | start no earlier than 2003-02-20 | Iain Gipson |
| 1901 | Improvements to conversation presentation requested by designers | 1d? | 2003-02-25 | 2003-02-26 | 1900 | start no earlier than 2003-02-20 | Iain Gipson |
| 1902 | Confirm eye-blinking working on all characters | 1d? | 2003-02-26 | 2003-02-27 | 1901 | start no earlier than 2003-02-20 | Iain Gipson |
| 1903 | Disable tutorial system for levels 2-7 | 1d? | 2003-02-27 | 2003-02-28 | 1902 | start no earlier than 2003-02-20 | Iain Gipson |
| 1904 | Mouth flapping iteration | 1d? | 2003-02-28 | 2003-03-03 | 1903 | start no earlier than 2003-02-20 | Iain Gipson |
| 1905 | Level end / game end presentation | 1d? | 2003-03-03 | 2003-03-04 | 1904 | start no earlier than 2003-02-20 | Iain Gipson |
| 1906 | Race specific presentation (e.g. Patty and Selma) | 1d? | 2003-03-04 | 2003-03-05 | 1905 | start no earlier than 2003-02-20 | Iain Gipson |
| 1907 | Car damage out presentation | 1d? | 2003-03-05 | 2003-03-06 | 1906 | start no earlier than 2003-02-20 | Iain Gipson |
| 1908 | Unused code removal (MS 18) | 1d? | 2003-03-06 | 2003-03-07 | 1907 | start no earlier than 2003-02-20 | Iain Gipson |
| 1914 | Coin system and coin behaviour | 1d? | 2003-02-27 | 2003-02-28 | 1913 | start no earlier than 2003-02-20 | James Harrison [80%] |
| 1915 | Some breakables maintain state on memory card | 1d? | 2003-02-28 | 2003-03-03 | 1914 | start no earlier than 2003-02-20 | James Harrison [80%] |
| 1916 | Fix all vehicle shadow sizes | 1d? | 2003-03-03 | 2003-03-04 | 1915 | start no earlier than 2003-02-20 | James Harrison [80%] |
| 1917 | Shadow volumes working correctly | 1d? | 2003-03-04 | 2003-03-05 | 1916 | start no earlier than 2003-02-20 | James Harrison [80%] |
| 1921 | Minimize size of TEMP heap (radScript buffer problems, mesh sizes in front end) | 1d? | 2003-02-25 | 2003-02-26 | 1920 | start no earlier than 2003-02-20 | Joel DeYoung [50%] |
| 1922 | Ongoing memory use audits and debugging (textures, animations) | 1d? | 2003-02-26 | 2003-02-27 | 1921 | start no earlier than 2003-02-20 | Joel DeYoung [50%] |
| 1923 | Memory leaks | 1d? | 2003-02-27 | 2003-02-28 | 1922 | start no earlier than 2003-02-20 | Joel DeYoung [50%] |
| 1938 | General cleanup of interior system architecture | 1d? | 2003-03-03 | 2003-03-04 | 1937 | start no earlier than 2003-02-20 | Nigel Brooke [80%] |
| 1939 | Ability to start missions in an interior | 1d? | 2003-03-04 | 2003-03-05 | 1938 | start no earlier than 2003-02-20 | Nigel Brooke [80%] |
| 1940 | Ability to have collectibles in an interior | 1d? | 2003-03-05 | 2003-03-06 | 1939 | start no earlier than 2003-02-20 | Nigel Brooke [80%] |
| 1941 | Improve handling of objects flying out of AI cars (make it easier to catch them without slowing down or going back) | 1d? | 2003-03-06 | 2003-03-07 | 1940 | start no earlier than 2003-02-20 | Nigel Brooke [80%] |
| 1942 | Fixes for characters on moving platform bugs | 1d? | 2003-03-07 | 2003-03-10 | 1941 | start no earlier than 2003-02-20 | Nigel Brooke [80%] |
| 1943 | Incorporate ATG light chooser for environmental lighting effects | 1d? | 2003-03-10 | 2003-03-11 | 1942 | start no earlier than 2003-02-20 | Nigel Brooke [80%] |
| 1944 | Victory animations | 1d? | 2003-03-11 | 2003-03-12 | 1943 | start no earlier than 2003-02-20 | Nigel Brooke [80%] |
| 1952 | Front end brightness control | 1d? | 2003-03-03 | 2003-03-04 | 1951 | start no earlier than 2003-02-20 | Tony Chu [80%] |
| 1953 | Memory card icons | 1d? | 2003-03-04 | 2003-03-05 | 1952 | start no earlier than 2003-02-20 | Tony Chu [80%] |
| 1954 | Mission objective text display | 1d? | 2003-03-05 | 2003-03-06 | 1953 | start no earlier than 2003-02-20 | Tony Chu [80%] |
| 1955 | Changes to audio options menu | 1d? | 2003-03-06 | 2003-03-07 | 1954 | start no earlier than 2003-02-20 | Tony Chu [80%] |
| 1956 | Bonus game HUD | 1d? | 2003-03-07 | 2003-03-10 | 1955 | start no earlier than 2003-02-20 | Tony Chu [80%] |
| 1957 | Bonus game UI | 1d? | 2003-03-10 | 2003-03-11 | 1956 | start no earlier than 2003-02-20 | Tony Chu [80%] |
| 1958 | Fix lighting on Homer in front end | 1d? | 2003-03-11 | 2003-03-12 | 1957 | start no earlier than 2003-02-20 | Tony Chu [80%] |
| 1959 | Make sure you can always call your default level vehicle from the phone booth | 1d? | 2003-03-12 | 2003-03-13 | 1958 | start no earlier than 2003-02-20 | Tony Chu [80%] |
| 1960 | Final cheat implementation (only shipping cheats #ifdef FINAL) | 1d? | 2003-03-13 | 2003-03-14 | 1959 | start no earlier than 2003-02-20 | Tony Chu [80%] |
| 1963 | **Milestone 18 - (April 15th) (Alpha)(Feature Complete)** | 21.12d? | 2003-03-17 A | 2003-04-15 |  |  |  |
| 1964 | Integrate changes from ATG | 3d | 2003-03-18 A | 2003-03-21 A |  | start no earlier than 2003-03-18 | Cary Brisebois |
| 1965 | Bonus game | 3d | 2003-03-18 A | 2003-03-21 A |  | start no earlier than 2003-03-18 | Cary Brisebois |
| 1966 | Side camera views | 3d | 2003-03-18 A | 2003-03-21 A |  | start no earlier than 2003-03-18 | Cary Brisebois |
| 1967 | Support for scriptable iris wpe | 3d | 2003-03-18 A | 2003-03-21 A |  | start no earlier than 2003-03-18 | Cary Brisebois |
| 1968 | World builder support for doorbells | 5d | 2003-03-24 | 2003-03-28 |  | start no earlier than 2003-03-24 | Cary Brisebois [80%] |
| 1969 | Better handling of forced vehicle mission success and failure conditions | 5d | 2003-03-24 | 2003-03-28 |  | finish no earlier than 2003-03-28 | Cary Brisebois |
| 1970 | Camera/wall and camera/ground collision problems (with Greg) | 5d | 2003-03-24 | 2003-03-28 |  | finish no earlier than 2003-03-28 | Cary Brisebois |
| 1971 | GameCube memory management / art reduction | 5d | 2003-04-07 | 2003-04-11 |  | finish no earlier than 2003-04-11 | Cary Brisebois |
| 1972 | Bonus game final changes | 5d | 2003-04-07 | 2003-04-11 |  | finish no earlier than 2003-04-11 | Cary Brisebois |
| 1973 | Pipeline support for props laid down for races | 3d | 2003-03-18 | 2003-03-21 |  | start no earlier than 2003-03-18 | Chuck Chow |
| 1974 | Command line parameters read from text file | 3d | 2003-03-18 | 2003-03-21 |  | start no earlier than 2003-03-18 | Chuck Chow |
| 1975 | Eliminate p3dshaderopt completely from the pipeline | 3d | 2003-03-18 | 2003-03-21 |  | start no earlier than 2003-03-18 | Chuck Chow |
| 1976 | Can play through levels 1-2 | 3d | 2003-03-18 | 2003-03-21 |  | start no earlier than 2003-03-18 | Chuck Chow |
| 1977 | Integrate all 21 races into the game | 5d | 2003-03-24 | 2003-03-28 |  | finish no earlier than 2003-03-28 | Chuck Chow |
| 1978 | Race circuit gambling functionality | 5d | 2003-03-24 | 2003-03-28 |  | finish no earlier than 2003-03-28 | Chuck Chow |
| 1979 | Can play through levels 1-4 | 5d | 2003-03-24 | 2003-03-28 |  | finish no earlier than 2003-03-28 | Chuck Chow [80%] |
| 1980 | Can play through levels 1-6 | 5d | 2003-03-31 | 2003-04-04 |  | finish no earlier than 2003-04-04 | Chuck Chow [80%] |
| 1981 | Can play through entire game | 5d | 2003-04-07 | 2003-04-11 |  | finish no earlier than 2003-04-11 | Chuck Chow [80%] |
| 1982 | Traffic driver sounds | 3.88d | 2003-03-18 A | 2003-03-21 A |  | start no earlier than 2003-03-18 | Darren Esau [77.4%] |
| 1983 | Engine sound refinement (spinout pitch change, ignition sound, etc) | 3.88d | 2003-03-18 A | 2003-03-21 A |  | start no earlier than 2003-03-18 | Darren Esau [77.4%] |
| 1984 | Ducking | 3d | 2003-03-18 A | 2003-03-21 |  | start no earlier than 2003-03-18 | Darren Esau [33.3%] |
| 1985 | Answering machine dialog when using a disabled phone booth | 5d | 2003-03-24 A | 2003-03-28 |  | finish no earlier than 2003-03-28 | Darren Esau |
| 1986 | Wasp sounds | 5d | 2003-03-24 A | 2003-03-28 |  | finish no earlier than 2003-03-28 | Darren Esau |
| 1987 | Positional collision sounds | 5d | 2003-03-24 A | 2003-03-28 A |  | finish no earlier than 2003-03-28 | Darren Esau |
| 1988 | Car jump landing sounds | 5d | 2003-03-24 | 2003-03-28 |  | finish no earlier than 2003-03-28 | Darren Esau |
| 1989 | Doorbell dialogue | 5d | 2003-03-31 A | 2003-04-04 |  | finish no earlier than 2003-04-04 | Darren Esau |
| 1990 | AI vehicle sounds | 5d | 2003-03-31 | 2003-04-04 |  | finish no earlier than 2003-04-04 | Darren Esau |
| 1991 | Final actor dialog integration | 5d | 2003-03-31 | 2003-04-07 |  | start no earlier than 2003-03-31 | Darren Esau |
| 1992 | Localized dialog pipeline | 5d | 2003-04-07 | 2003-04-11 |  | start no earlier than 2003-04-07 | Darren Esau |
| 1993 | Credits sounds | 5d | 2003-04-07 | 2003-04-11 |  | start no earlier than 2003-04-07 | Darren Esau |
| 1994 | Villain dialogue | 1d? | 2003-03-26 A | 2003-03-26 |  | start no earlier than 2003-03-26 | Darren Esau |
| 1995 | Coin sounds pitching up & simpsons theme - random | 1d? | 2003-03-26 A | 2003-03-26 |  | start no earlier than 2003-03-26 | Darren Esau |
| 1996 | Collision objects (ie. Lamp posts) need dynamics (vol decaying) | 1d? | 2003-03-26 | 2003-03-26 |  | start no earlier than 2003-03-26 | Darren Esau |
| 1997 | Doppler effect on engine sounds & horns | 1d? | 2003-03-26 A | 2003-03-26 A |  | start no earlier than 2003-03-26 | Darren Esau |
| 1998 | Pedestrian Dialogue | 1d? | 2003-04-04 | 2003-04-04 |  | finish no earlier than 2003-04-04 | Darren Esau |
| 1999 | Eliminate all draw order bugs | 5d | 2003-03-17 A | 2003-03-21 A |  | finish no earlier than 2003-03-21 | Devin Murname [80%] |
| 2000 | Eliminate occurrences of draw culling pop-in | 5d | 2003-03-24 | 2003-03-28 |  | finish no earlier than 2003-03-28 | Devin Murname |
| 2001 | Navigation arrows on closest road segment to player | 5d | 2003-03-24 | 2003-03-28 |  | start no earlier than 2003-03-24 | Devin Murname [80%] |
| 2002 | Eliminate occurrences of load pop-in (verify optimal load trigger placement, investigate impact of disc layout, DVD performance, and compression, etc.) | 5d | 2003-03-31 | 2003-04-04 |  | finish no earlier than 2003-04-04 | Devin Murname |
| 2003 | Vehicle art optimizations for performance improvement (reduce context switches) | 5d | 2003-03-31 | 2003-04-04 |  | start no earlier than 2003-03-31 | Devin Murname |
| 2004 | Fake flashing light effect on back of player’s vehicle when being chased | 5d | 2003-03-31 | 2003-04-04 |  | start no earlier than 2003-03-31 | Devin Murname |
| 2005 | PS2 CATS scan | 5d | 2003-04-07 | 2003-04-11 |  | finish no earlier than 2003-04-11 | Devin Murname |
| 2006 | Jump camera video effects | 5d | 2003-04-07 | 2003-04-11 |  | finish no earlier than 2003-04-11 | Devin Murname |
| 2007 | Improved race ranking results | 3d | 2003-03-18 A | 2003-03-21 A |  | start no earlier than 2003-03-18 | Dusit Eakkachaichanvet |
| 2008 | Fixes for traffic driver sound events for Darren | 3d | 2003-03-18 A | 2003-03-21 A |  | start no earlier than 2003-03-18 | Dusit Eakkachaichanvet |
| 2009 | Vehicle AI catch up logic | 3d | 2003-03-18 A | 2003-03-21 A |  | start no earlier than 2003-03-18 | Dusit Eakkachaichanvet |
| 2010 | Improved NPC character behaviour (they walk around) | 5d | 2003-03-24 A | 2003-03-28 A |  | finish no earlier than 2003-03-28 | Dusit Eakkachaichanvet [80%] |
| 2011 | Race trigger characters walk around zone | 5d | 2003-03-24 A | 2003-03-28 A |  | finish no earlier than 2003-03-28 | Dusit Eakkachaichanvet [80%] |
| 2012 | Simpsons characters as pedestrians | 5d | 2003-03-24 A | 2003-03-28 A |  | finish no earlier than 2003-03-28 | Dusit Eakkachaichanvet [80%] |
| 2013 | Panicked pedestrians | 5d | 2003-03-24 A | 2003-03-28 |  | finish no earlier than 2003-03-28 | Dusit Eakkachaichanvet [80%] |
| 2014 | All destroyed cars change to husks | 5d | 2003-03-24 | 2003-03-28 |  | finish no earlier than 2003-03-28 | Dusit Eakkachaichanvet [80%] |
| 2015 | Better handling of player being hit by a car | 5d | 2003-04-07 | 2003-04-11 |  | finish no earlier than 2003-04-11 | Dusit Eakkachaichanvet [80%] |
| 2016 | Traffic swerving and headlight flashing | 5d | 2003-04-07 | 2003-04-11 |  | start no earlier than 2003-04-07 | Dusit Eakkachaichanvet [80%] |
| 2017 | Tasks remaining for bonus game | 5d | 2003-04-07 | 2003-04-11 |  | finish no earlier than 2003-04-11 | Dusit Eakkachaichanvet [80%] |
| 2018 | **Driving engine improvements** | 3d | 2003-03-18 | 2003-03-21 |  |  | Greg Mayer |
| 2019 | Two levels of gas scale | 3d | 2003-03-18 | 2003-03-21 |  | start no earlier than 2003-03-18 | Greg Mayer |
| 2020 | E-brake low speed bug | 3d | 2003-03-18 | 2003-03-21 |  | start no earlier than 2003-03-18 | Greg Mayer |
| 2021 | D-pad steering bug | 3d | 2003-03-18 | 2003-03-21 |  | start no earlier than 2003-03-18 | Greg Mayer |
| 2022 | High speed instability handling | 3d | 2003-03-18 | 2003-03-21 |  | start no earlier than 2003-03-18 | Greg Mayer |
| 2023 | Make terrain type not affect locomotion, only friction | 3d | 2003-03-18 | 2003-03-21 |  | start no earlier than 2003-03-18 | Greg Mayer |
| 2024 | Investigate why it’s hard to drive up hills | 3d | 2003-03-18 | 2003-03-21 |  | start no earlier than 2003-03-18 | Greg Mayer |
| 2025 | Cleanup visual representation of E-brake | 3d | 2003-03-18 | 2003-03-21 |  | start no earlier than 2003-03-18 | Greg Mayer |
| 2026 | Car reset happens on nearest road segment | 5d | 2003-03-24 | 2003-03-28 |  | finish no earlier than 2003-03-28 | Greg Mayer |
| 2027 | **Jumps** | 5d | 2003-03-24 | 2003-03-28 |  |  | Greg Mayer |
| 2028 | Fix nose diving problem (Durango style stabilizer) | 5d | 2003-03-24 | 2003-03-28 |  | finish no earlier than 2003-03-28 | Greg Mayer |
| 2029 | Landing sound effect | 5d | 2003-03-24 | 2003-03-28 |  | start no earlier than 2003-03-24 | Greg Mayer |
| 2030 | Specific problematic jumps | 5d | 2003-03-24 | 2003-03-28 |  | start no earlier than 2003-03-24 | Greg Mayer [80%] |
| 2031 | Investigate damage issues (which collisions should actually cause damage) | 5d | 2003-03-24 | 2003-03-28 |  | start no earlier than 2003-03-24 | Greg Mayer [80%] |
| 2032 | Investigate which movables should continue to collide after coming to rest | 5d | 2003-03-24 | 2003-03-28 |  | start no earlier than 2003-03-24 | Greg Mayer [80%] |
| 2033 | Camera collision with walls and ground (with Cary) | 5d | 2003-03-31 | 2003-04-04 |  | finish no earlier than 2003-04-04 | Greg Mayer [80%] |
| 2034 | In car character bounce | 5d | 2003-03-31 | 2003-04-04 |  | finish no earlier than 2003-04-04 | Greg Mayer [80%] |
| 2035 | Improved burnout and skid thresholds | 5d | 2003-04-07 | 2003-04-11 |  | finish no earlier than 2003-04-11 | Greg Mayer |
| 2036 | Make bike lean in the correct direction | 5d | 2003-04-07 | 2003-04-11 |  | finish no earlier than 2003-04-11 | Greg Mayer |
| 2037 | Physics system performance improvements (if time) | 5d | 2003-04-07 | 2003-04-11 |  | finish no earlier than 2003-04-11 | Greg Mayer |
| 2038 | Phone booth car select presentation | 3d | 2003-03-18 | 2003-03-21 |  | start no earlier than 2003-03-18 | Iain Gipson |
| 2039 | Turn persistent heap into a static heap | 3d | 2003-03-18 | 2003-03-21 |  | start no earlier than 2003-03-18 | Iain Gipson |
| 2040 | Confirm eye-blinking working on all characters | 3d | 2003-03-18 | 2003-03-21 |  | start no earlier than 2003-03-18 | Iain Gipson |
| 2041 | Minimize size of TEMP heap (radScript buffer problems, mesh sizes in front end) | 5d | 2003-03-24 | 2003-03-28 |  | finish no earlier than 2003-03-28 | Iain Gipson |
| 2042 | Load time optimizations (compression, load during level intro cam, optimize amount loading for mission select, etc) | 5d | 2003-03-24 | 2003-03-28 |  | finish no earlier than 2003-03-28 | Iain Gipson |
| 2043 | Improved integration of tutorial HUD with other HUD elements | 5d | 2003-03-24 | 2003-03-28 |  | finish no earlier than 2003-03-28 | Iain Gipson |
| 2044 | Refraction shader performance improvements | 5d | 2003-03-24 | 2003-03-28 |  | finish no earlier than 2003-03-28 | Iain Gipson |
| 2045 | Race specific presentation (e.g. Patty and Selma) | 5d | 2003-03-31 | 2003-04-04 |  | finish no earlier than 2003-04-04 | Iain Gipson |
| 2046 | Phone booth car select presentation | 5d | 2003-03-31 | 2003-04-04 |  | finish no earlier than 2003-04-04 | Iain Gipson |
| 2047 | Unused code removal | 5d | 2003-04-07 | 2003-04-11 |  | finish no earlier than 2003-04-11 | Iain Gipson |
| 2048 | Procedural animations to save memory | 3d | 2003-03-18 | 2003-03-21 |  | start no earlier than 2003-03-18 | James Harrison |
| 2049 | Procedural particle systems to save memory | 3d | 2003-03-18 | 2003-03-21 |  | start no earlier than 2003-03-18 | James Harrison |
| 2050 | Fix all vehicle shadow sizes | 3d | 2003-03-18 | 2003-03-21 |  | start no earlier than 2003-03-18 | James Harrison |
| 2051 | Extend shadow volumes to support different light colours | 5d | 2003-03-24 | 2003-03-28 |  | finish no earlier than 2003-03-28 | James Harrison |
| 2052 | In-game movie presentation, including fading and brief HUD reload screen | 5d | 2003-03-24 | 2003-03-28 |  | finish no earlier than 2003-03-28 | James Harrison |
| 2053 | Reflection mapping looks good from the side | 5d | 2003-03-24 | 2003-03-28 |  | finish no earlier than 2003-03-28 | James Harrison [80%] |
| 2054 | Add support for a FMV-based attract mode (conditionally compiled) | 5d | 2003-03-24 | 2003-03-28 |  | finish no earlier than 2003-03-28 | James Harrison [80%] |
| 2055 | Artist support for NTSC illegal colour removal | 5d | 2003-03-31 | 2003-04-04 |  | finish no earlier than 2003-04-04 | James Harrison [80%] |
| 2056 | Final pass of game element state maintained on memory card | 5d | 2003-03-31 | 2003-04-04 |  | finish no earlier than 2003-04-04 | James Harrison [80%] |
| 2057 | Game end progression / presentation | 5d | 2003-03-31 | 2003-04-04 |  | finish no earlier than 2003-04-04 | James Harrison [80%] |
| 2058 | Maintain damage state for all vehicles and save on memory card | 5d | 2003-03-31 | 2003-04-04 |  | start no earlier than 2003-03-31 | James Harrison [80%] |
| 2059 | Changes to coin gameplay still needed to meet spec | 5d | 2003-04-07 | 2003-04-11 |  | finish no earlier than 2003-04-11 | James Harrison [80%] |
| 2060 | Ongoing memory leaks | 20d | 2003-03-18 | 2003-04-15 |  | start no earlier than 2003-03-18 | Joel DeYoung |
| 2061 | Ongoing memory usage audits | 18d | 2003-03-18 | 2003-04-11 |  | start no earlier than 2003-03-18 | Jesse Cluff |
| 2062 | Ongoing performance audits | 18d | 2003-03-18 | 2003-04-11 |  | start no earlier than 2003-03-18 | Jesse Cluff |
| 2063 | Duplicate texture removal | 5d | 2003-03-24 | 2003-03-28 |  | finish no earlier than 2003-03-28 | Jesse Cluff |
| 2064 | Car art optimizations for improved memory and frame rate | 5d | 2003-03-24 | 2003-03-28 |  | finish no earlier than 2003-03-28 | Jesse Cluff |
| 2065 | Hit & Run functionality | 5d | 2003-03-31 | 2003-04-04 |  | finish no earlier than 2003-04-04 | Jesse Cluff |
| 2066 | Progressive Scan | 5d | 2003-03-31 | 2003-04-04 |  | finish no earlier than 2003-04-04 | Jesse Cluff |
| 2067 | Ongoing special effects support for artists | 18d | 2003-03-18 | 2003-04-11 |  | start no earlier than 2003-03-18 | Michael Riegger |
| 2068 | Skid mark implementation cleanup | 3d | 2003-03-18 | 2003-03-21 |  | start no earlier than 2003-03-18 | Michael Riegger |
| 2069 | Level specific wasp gameplay | 3d | 2003-03-18 | 2003-03-21 |  | start no earlier than 2003-03-18 | Michael Riegger |
| 2070 | Can play through levels 1-2 | 3d | 2003-03-18 | 2003-03-21 |  | start no earlier than 2003-03-18 | Michael Riegger |
| 2071 | Final mission, including tractor beam | 5d | 2003-03-24 | 2003-03-28 |  | finish no earlier than 2003-03-28 | Michael Riegger |
| 2072 | Can play through levels 1-4 | 5d | 2003-03-24 | 2003-03-28 |  | finish no earlier than 2003-03-28 | Michael Riegger [80%] |
| 2073 | Can play through levels 1-6 | 5d | 2003-03-31 | 2003-04-04 |  | finish no earlier than 2003-04-04 | Michael Riegger [80%] |
| 2074 | Can play through the entire game | 5d | 2003-04-07 | 2003-04-11 |  | finish no earlier than 2003-04-11 | Michael Riegger [80%] |
| 2075 | Standard ambient characters always available for interaction (e.g. Apu, CBG, Moe) | 4d | 2003-03-18 | 2003-03-21 |  | finish no earlier than 2003-03-21 | Nigel Brooke |
| 2076 | Traffic avoidance for AI cars | 4d | 2003-03-18 | 2003-03-21 |  | finish no earlier than 2003-03-21 | Nigel Brooke |
| 2077 | On-foot damage animations and logic (falling from long distances, getting hit) | 5d | 2003-03-24 | 2003-03-28 |  | finish no earlier than 2003-03-28 | Nigel Brooke |
| 2078 | Character hands on steering wheel | 5d | 2003-03-24 | 2003-03-28 |  | finish no earlier than 2003-03-28 | Nigel Brooke |
| 2079 | Music synced animations | 5d | 2003-03-24 | 2003-03-28 |  | finish no earlier than 2003-03-28 | Nigel Brooke [80%] |
| 2080 | Support for fading spawned icons in dump and deliver missions | 5d | 2003-03-24 | 2003-03-28 |  | finish no earlier than 2003-03-28 | Nigel Brooke [80%] |
| 2081 | Add support for resetting mission inside an interior | 5d | 2003-03-24 | 2003-03-28 |  | finish no earlier than 2003-03-28 | Nigel Brooke [80%] |
| 2082 | Fixes for characters on moving platform bugs | 5d | 2003-03-31 | 2003-04-04 |  | finish no earlier than 2003-04-04 | Nigel Brooke [80%] |
| 2083 | Weighting probabilities of idle animations | 5d | 2003-03-31 | 2003-04-04 |  | finish no earlier than 2003-04-04 | Nigel Brooke [80%] |
| 2084 | Traffic surf animations | 5d | 2003-03-31 | 2003-04-04 |  | finish no earlier than 2003-04-04 | Nigel Brooke [80%] |
| 2085 | Get Bart’s Room interior into game | 5d | 2003-03-31 | 2003-04-04 |  | finish no earlier than 2003-04-04 | Nigel Brooke [80%] |
| 2086 | Mirror in Moe’s | 5d | 2003-04-07 | 2003-04-11 |  | finish no earlier than 2003-04-11 | Nigel Brooke [80%] |
| 2087 | Complete scrapbook implementation | 3d | 2003-03-18 | 2003-03-21 |  | start no earlier than 2003-03-18 | Tony Chu |
| 2088 | Pause menu changes | 3d | 2003-03-18 | 2003-03-21 |  | start no earlier than 2003-03-18 | Tony Chu |
| 2089 | Loading bar | 3d | 2003-03-18 | 2003-03-21 |  | start no earlier than 2003-03-18 | Tony Chu |
| 2090 | Implement UI for bonus game | 5d | 2003-03-24 | 2003-03-28 |  | finish no earlier than 2003-03-28 | Tony Chu [80%] |
| 2091 | Phone booth interface changes, including car repair functionality | 5d | 2003-03-24 | 2003-03-28 |  | finish no earlier than 2003-03-28 | Tony Chu [80%] |
| 2092 | End of level in-game screen (?) | 5d | 2003-03-24 | 2003-03-28 |  | finish no earlier than 2003-03-28 | Tony Chu [80%] |
| 2093 | Support for scriptable, dismissable generic text screen | 5d | 2003-03-24 | 2003-03-28 |  | start no earlier than 2003-03-24 | Tony Chu [80%] |
| 2094 | HUD for Hit & Run functionality | 5d | 2003-03-31 | 2003-04-04 |  | finish no earlier than 2003-04-04 | Tony Chu |
| 2095 | HUD for gambling in circuit races | 5d | 2003-03-31 | 2003-04-04 |  | finish no earlier than 2003-04-04 | Tony Chu |
| 2096 | Mission failure hint text display | 5d | 2003-03-31 | 2003-04-04 |  | finish no earlier than 2003-04-04 | Tony Chu [80%] |
| 2097 | PS2 Dev Con | 5d | 2003-03-31 | 2003-04-04 |  | finish no earlier than 2003-04-04 | Tony Chu [80%] |
| 2098 | Progressive scan screens for GameCube, PS2 | 5d | 2003-04-07 | 2003-04-11 |  | finish no earlier than 2003-04-11 | Tony Chu [80%] |
| 2099 | Memory card icons | 5d | 2003-04-07 | 2003-04-11 |  | finish no earlier than 2003-04-11 | Tony Chu [80%] |
| 2100 | Memory card TRC issues | 5d | 2003-04-07 | 2003-04-11 |  | finish no earlier than 2003-04-11 | Tony Chu [80%] |
| 2101 | Scrooby game credits | 5d | 2003-04-07 | 2003-04-11 |  | finish no earlier than 2003-04-11 | Tony Chu [80%] |
| 2102 | PS2 support for memory imaged sprite textures | 1d? | 2003-03-18 | 2003-03-18 |  | start no earlier than 2003-03-18 | ATG |
| 2103 | Progressive scan on all three platforms | 1d? | 2003-03-18 | 2003-03-18 |  | start no earlier than 2003-03-18 | ATG |
| 2104 | Reflection mapping popping bug (Amit) | 1d? | 2003-03-18 | 2003-03-18 |  | start no earlier than 2003-03-18 | ATG |
| 2105 | PS2 mipmap per-texture L&K values (Amit) | 1d? | 2003-03-18 | 2003-03-18 |  | start no earlier than 2003-03-18 | ATG |
| 2106 | PS2 support for PDDI extension doing more reliable visibility calculations (for lens flare) (Amit) | 1d? | 2003-03-18 | 2003-03-18 |  | start no earlier than 2003-03-18 | ATG |
| 2107 | radLoad enhancements to improve load times (Neall) | 1d? | 2003-03-18 | 2003-03-19 |  | start no earlier than 2003-03-18 | ATG |
| 2108 | Milestone 19 - (May 30th) (Beta)(Temp) | 8d? | 2003-04-16 | 2003-04-28 |  |  |  |
| 2243 | Milestone 20- (June 30th) (Final)(Temp) | 8d? | 2003-06-02 | 2003-06-12 |  |  |  |
| 2440 | Bollywood 3 | 1d? | 2003-02-24 | 2003-02-24 |  | start no earlier than 2003-02-24 |  |
| 2442 | **Mini Game music** | 1d? | 2003-02-24 | 2003-02-24 |  |  |  |
| 2443 | Casio Retro 1 | 1d? | 2003-02-24 | 2003-02-24 |  | start no earlier than 2003-02-24 |  |
| 2444 | Casio Retro 2 | 1d? | 2003-02-24 | 2003-02-24 |  | start no earlier than 2003-02-24 |  |
| 2445 | Casio Retro 3 | 1d? | 2003-02-24 | 2003-02-24 |  | start no earlier than 2003-02-24 |  |
| 2446 | Halloween style 4 | 1d? | 2003-02-24 | 2003-02-24 |  | start no earlier than 2003-02-24 |  |
| 2447 | Music - Contractor | 1d? | 2003-02-24 | 2003-02-24 |  | start no earlier than 2003-02-24 |  |
| 2455 | explosion sound for when those traffic cars blow up. | 1d? | 2003-02-20 | 2003-02-20 |  | start no earlier than 2003-02-20 | Cory Hawthorne |
| 2463 | **Music Composition:** | 10.88d? | 2003-03-17 A | 2003-03-31 |  |  |  |
| 2464 | Marge | 1d? | 2003-03-17 | 2003-03-18 |  | start no earlier than 2003-03-17 | Marc Baril [80%] |
| 2465 | Latino | 1d? | 2003-03-17 A | 2003-03-18 |  | start no earlier than 2003-03-17 | Jeff Tymoschuk |
| 2466 | Front End | 1d? | 2003-03-17 A | 2003-03-18 A |  | start no earlier than 2003-03-17 | Marc Baril [80%] |
| 2467 | Wasp Attack Music | 1d? | 2003-03-31 | 2003-03-31 |  | start no earlier than 2003-03-31 | Marc Baril [80%] |
| 2468 | Hit & Run Music | 1d? | 2003-03-31 | 2003-03-31 |  | start no earlier than 2003-03-31 | Marc Baril [80%] |
| 2469 | UFO Mission | 1d? | 2003-03-31 A | 2003-03-31 |  | start no earlier than 2003-03-31 | Marc Baril [80%] |
| 2470 | **On Foot - marg, apu, bart, halloween** | 1d? | 2003-03-17 | 2003-03-18 |  |  |  |
| 2471 | Halloween | 1d? | 2003-03-17 | 2003-03-18 |  | start no earlier than 2003-03-17 | Jeff Tymoschuk |
| 2472 | Marge | 1d? | 2003-03-17 | 2003-03-18 |  | start no earlier than 2003-03-17 | Jeff Tymoschuk |
| 2473 | Apu | 1d? | 2003-03-17 | 2003-03-18 |  | start no earlier than 2003-03-17 | Marc Baril [80%] |
| 2474 | Bart | 1d? | 2003-03-17 | 2003-03-18 |  | start no earlier than 2003-03-17 | Marc Baril [80%] |
| 2475 | Generic underscore music | 1d? | 2003-03-17 | 2003-03-18 |  | start no earlier than 2003-03-17 | Marc Baril [80%] |
| 2476 | Street Races | 1d? | 2003-03-17 | 2003-03-18 |  | start no earlier than 2003-03-17 | Allan Levy |
| 2477 | **Sound Fx** | 1d? | 2003-04-01 A | 2003-04-01 |  |  |  |
| 2478 | **Final Pass on all Art content** | 1d? | 2003-04-01 A | 2003-04-01 |  |  |  |
| 2479 | Wasp sounds | 1d? | 2003-04-01 A | 2003-04-01 |  | start no earlier than 2003-04-01 | Cory Hawthorne |
| 2480 | UFO level 7 | 1d? | 2003-04-01 A | 2003-04-01 |  | start no earlier than 2003-04-01 | Cory Hawthorne |
| 2481 | **Revisit Collision sounds/optimization** | 1d? | 2003-04-01 A | 2003-04-01 A |  |  |  |
| 2482 | 3 different levels of | 1d? | 2003-04-01 A | 2003-04-01 A |  | start no earlier than 2003-04-01 | Cory Hawthorne |
| 2483 | Collect sounds | 1d? | 2003-04-01 A | 2003-04-01 |  | start no earlier than 2003-04-01 | Cory Hawthorne |
| 2484 | Coin sounds | 1d? | 2003-04-01 A | 2003-04-01 |  | start no earlier than 2003-04-01 | Cory Hawthorne |
| 2485 | Flamenco guitar (El Camino) | 1d? | 2003-04-01 A | 2003-04-01 A |  | start no earlier than 2003-04-01 | Cory Hawthorne |
| 2486 | New Ambience | 1d? | 2003-04-01 A | 2003-04-01 A |  | start no earlier than 2003-04-01 | Cory Hawthorne |
| 2487 | **Cinematics** | 1d? | 2003-03-17 | 2003-03-18 |  |  |  |
| 2488 | Audio Post - sound fx | 1d? | 2003-03-17 | 2003-03-18 |  | start no earlier than 2003-03-17 | Cory Hawthorne |
| 2489 | Mixes | 1d? | 2003-03-17 | 2003-03-18 |  | start no earlier than 2003-03-17 | Jeff Young |
| 2490 | Music | 1d? | 2003-03-17 | 2003-03-18 |  | start no earlier than 2003-03-17 | Marc Baril [80%] |
| 2497 | **Additional Sound Code Functionality Alpha - Beta** | 1d? | 2003-03-12 | 2003-03-12 |  |  |  |
| 2498 | Stone Cutter Tunnel - music | 1d? | 2003-03-12 | 2003-03-12 |  | start no earlier than 2003-03-12 |  |
| 2499 | Unlockables | 1d? | 2003-03-12 | 2003-03-12 |  | start no earlier than 2003-03-12 |  |
| 2500 | **Music - additional** | 15d? | 2003-03-12 | 2003-03-31 |  |  |  |
| 2501 | Soprano spoof | 1d? | 2003-03-12 | 2003-03-12 |  | start no earlier than 2003-03-12 |  |
| 2502 | Stone Cutter spoof | 1d? | 2003-03-12 | 2003-03-12 |  | start no earlier than 2003-03-12 |  |
| 2503 | AC/DC track | 1d? | 2003-03-12 | 2003-03-12 |  | start no earlier than 2003-03-12 |  |
| 2504 | Live Music Recordings | 1d? | 2003-03-31 | 2003-03-31 |  | start no earlier than 2003-03-31 |  |
| 2513 | **Cinematics Schedule** | 75.12d? | 2003-01-20 | 2003-05-01 |  |  |  |
| 2514 | FMV 1 - intro | 1d? | 2003-03-31 | 2003-04-01 |  | start no earlier than 2003-03-31 |  |
| 2515 | FMV 1A (30 sec) | 1d? | 2003-03-31 | 2003-04-01 |  | start no earlier than 2003-03-31 |  |
| 2516 | FMV 2 | 1d? | 2003-04-18 | 2003-04-21 |  | start no earlier than 2003-04-18 |  |
| 2517 | FMV 3 | 1d? | 2003-04-07 | 2003-04-08 |  | start no earlier than 2003-04-07 |  |
| 2518 | FMV 4 | 1d? | 2003-03-12 | 2003-03-12 |  | start no earlier than 2003-03-12 |  |
| 2519 | FMV 5 | 1d? | 2003-03-12 | 2003-03-12 |  | start no earlier than 2003-03-12 |  |
| 2520 | FMV 6 | 1d? | 2003-03-12 | 2003-03-12 |  | start no earlier than 2003-03-12 |  |
| 2521 | FMV 7 | 1d? | 2003-03-12 | 2003-03-12 |  | start no earlier than 2003-03-12 |  |
| 2522 | FMV 8 | 1d? | 2003-03-12 | 2003-03-12 |  | start no earlier than 2003-03-12 |  |
| 2523 | Due date for all FMV's for approval by Fox | 1d? | 2003-04-30 | 2003-05-01 |  | start no earlier than 2003-04-30 |  |
| 2524 | FMV 9 - Itchy & Scratcy | 1d? | 2003-03-12 | 2003-03-12 |  | start no earlier than 2003-03-12 |  |
| 2529 | Art Beta | 1d? | 2003-04-15 | 2003-04-16 |  | start no earlier than 2003-04-15 |  |

Removed: 1467 Radmusic integration; 1468 Memory optimization; 1469 Develop Dialogue test program/set up Roman; 1470 Assist Cory wrt positional sounds not playing; 1471 Add events/code for additional Sound FX; 1473 Car Engine:; 1474 Car engine level controls; 1475 Car ignition startup & engine reving; 1476 Car engine spin out; 1477 Damage clip volume control; 1478 Loading optimization; 1479 Additional dialogue - events & triggers; 1480 Events & Triggers; 1481 Cleanup debug display; 1482 Ambience Event Cleanup; 1483 Interactive Gags - events & triggers; 1484 Positional collisions - events & triggers; 1485 Integration week; 1487 Dialogue Localization - pipeline; 1491 Death volume support in the world builder tool (complete by October 25); 1492 Missions: Work with mission team to make sure they work; 1493 Camera collisions: on foot; 1494 Camera collisions: driving; 1495 Camera collisions: interiors; 1496 Camera shake; 1497 Interior rail camera improvements; 1498 Improved camera setup for mission conversations; 1499 Help getting new level art in the game; 1500 Help getting new missions in the game; 1501 Improved command line parameters for artists to start in various world locations; 1502 Mission icon scaling based on distance; 1503 Help getting new level art in the game; 1504 Mission restart correctly resets the players position, mission elements, and returns to mission instruction screen; 1505 Missions: Work with mission team to make sure they work; 1506 Artist pipeline support; 1507 Artist memory budget enforcement; 1508 Audio for gag NISes; 1509 Engine sounds working correctly - Final pass; 1510 Dialog system: eye blinking and mouth flapping; 1511 Interior sound effects - Final pass; 1512 PS2 mipmap tuning; 1513 Addition of some final sound effects - Final pass; 1514 Reverb; 1515 Generic traffic audio; 1516 Interior gag audio; 1517 Mini driving games working; 1518 FMVs playing in game (in between missions); 1519 General memory management ongoing tasks; 1520 DSG cleanup / abstract base class for DSG objects; 1521 General dynamic loading ongoing tasks; 1522 Dymamic loading compression incorporated; 1523 Load cancels working (dependent on P3D providing this); 1524 Final rendered trigger volumes; 1525 Incorporation of P3D tool to auto-optimize meshes; 1526 Boulevard heap integration; 1527 Mission vehicle AI improvements; 1528 Pedestrians diving out of the way; 1529 Pedestrians hit by car response; 1530 Car reset; 1531 Car moves correctly on moveable platforms; 1532 Dynamic object rest tests; 1533 Full use of physics properties from the database; 1534 Car door opens and closes properly on character entry/exit; 1535 Improved collision response; 1536 Death volume handling for car; 1537 Simple car reset; 1538 Dynamic object removal from DSG; 1539 Disable character collision while character in the car; 1540 Vehicle brake lights; 1541 In car character animations; 1542 Steep terrain handling; 1543 Terrain type tags in the pipeline, with an interface to access them at runtime; 1544 Lens flare / corona working; 1545 Blobby shadows added for NPCs, pedestrians, non-player cars; 1546 2 weeks vacation; 1547 Ongoing rendering effects task; 1548 Better FMVs for Xbox and GC; 1549 Create final logo FMVs for all 6 platforms; 1550 Xbox ripping; 1551 All water effects complete; 1552 Different skid mark types working; 1553 Button press flash effect; 1554 Food icon effects; 1555 Nuclear glow bubbles effects; 1556 Power coupling electrical effects; 1557 Power coupling destroy effects; 1558 World animation effects; 1559 Effects iteration ongoing task; 1560 Drivers in the taxi vehicles; 1561 Car door opens and closes properly on character entry/exit; 1562 Support for leaving the car door open if running on exit; 1563 Death volume handling for on foot; 1564 In car character animations; 1565 Currency system incorporated into game; 1566 On foot gameplay ongoing task; 1567 2D mini games investigation (spend 3-4 days determining what is possible); 1568 Integration of stylized HUD map; 1569 Front end and HUD work for currency; 1570 Mini driving games presentation and HUD screens; 1571 Mission presentation HUD art iteration ongoing task; 1572 Can load/save games on memory card; 1573 Memory card screens; 1574 Submit build to EA CQC process (PAL); 1596 Interior sound effects - Final pass; 1598 Addition of some final sound effects - Final pass; 1599 Reverb; 1600 Generic traffic audio; 1601 Interior gag audio; 1602 Mini driving games working; 1603 FMVs playing in game (in between missions); 1604 General memory management ongoing tasks; 1619 Car door opens and closes properly on character entry/exit; 1621 Death volume handling for car; 1622 Simple car reset; 1624 Disable character collision while character in the car; 1643 World animation effects; 1644 Effects iteration ongoing task; 1659 EA CQC approval received (PAL)/Submit to Sony, Microsoft and Nintendo (PAL); 1660 Sony, Microsoft and Nintendo approval received (NTSC); 1661 Sony, Microsoft and Nintendo approval received (PAL)

Changed:

| ID | Task | Start | Finish | Duration | Complete | Total float | Predecessors | Other |
| --- | --- | --- | --- | --- | --- | --- | --- | --- |
| 70 | **DESIGN TASKS** |  |  | 200.88d? → 201.88d? |  | 118.12d → 149d |  |  |
| 223 | **Milestone 14 (Dec 15th)** |  |  | 154d? → 155d? |  | 165d → 195.88d |  |  |
| 303 | **ART TASKS** |  |  | 280d? → 281d? | 18% → 10% | 39d → 69.88d |  |  |
| 365 | **Milestone 12 (Oct 15th)** |  |  | 131d? → 132d? |  | 188d → 218.88d |  |  |
| 409 | **Suburbs Level:** |  |  | 124d? → 125d? |  | 195d → 225.88d |  |  |
| 743 | **Milestone 15 - (Old Alpha (Jan 15th) (Temp))** |  |  |  |  | 95d → 125.88d |  | was named Milestone 15 - Alpha (Jan 15th) (Temp) |
| 798 | **Milestone 16 - (Old Beta ) (Temp)** |  |  |  |  | 72d → 102.88d |  | was named Milestone 16 - Beta (Feb 28th) (Temp) |
| 853 | **Milestone 17 - (old Final (March 30th) (Temp))** |  |  |  |  | 39d → 69.88d |  | was named Milestone 17 - Final (March 30th) (Temp) |
| 1119 | **CODING TASKS** |  | 2003-07-04 → 2003-06-12 (-22d) | 319d? → 304d? | 20% → 15% | 0d → 46.88d |  |  |
| 1437 | **Milestone 13 (Nov 15th)** |  |  | 166.75d? → 167.75d? |  | 152.25d → 183.12d |  |  |
| 1654 | **Milestone 15 - Alpha (Jan 16th) (Temp)** |  | 2003-04-24 → 2003-01-02 (-112d) | 95d? → 13d? |  | 51d → 163.88d |  |  |
| 1655 | Death volume support in the world builder tool (complete by October 25) |  | 2002-12-26 → 2002-12-17 (-9d) | 8d → 1d |  | 51d → 165.88d |  |  |
| 1656 | Missions: Work with mission team to make sure they work | 2002-12-26 → 2002-12-17 (-9d) | 2002-12-27 → 2002-12-18 (-9d) |  |  | 51d → 165.88d |  | constraint none → start no earlier than 2002-12-16 |
| 1657 | Camera collisions: on foot | 2002-12-27 → 2002-12-18 (-9d) | 2002-12-30 → 2002-12-19 (-11d) |  |  | 51d → 165.88d |  | constraint none → start no earlier than 2002-12-16 |
| 1658 | Camera collisions: driving | 2002-12-30 → 2002-12-19 (-11d) | 2002-12-31 → 2002-12-20 (-11d) |  |  | 51d → 165.88d |  | constraint none → start no earlier than 2002-12-16 |
| 1659 | Camera collisions: interiors | 2002-12-31 → 2002-12-20 (-11d) | 2003-01-01 → 2002-12-23 (-9d) |  |  | 51d → 165.88d |  | constraint none → start no earlier than 2002-12-16 |
| 1660 | Camera shake | 2003-01-01 → 2002-12-23 (-9d) | 2003-01-02 → 2002-12-24 (-9d) |  |  | 51d → 165.88d |  | constraint none → start no earlier than 2002-12-16 |
| 1661 | Interior rail camera improvements | 2003-01-02 → 2002-12-24 (-9d) | 2003-01-03 → 2002-12-25 (-9d) |  |  | 51d → 165.88d |  | constraint none → start no earlier than 2002-12-16 |
| 1662 | Improved camera setup for mission conversations | 2003-01-03 → 2002-12-25 (-9d) | 2003-01-06 → 2002-12-26 (-11d) |  |  | 51d → 165.88d |  | constraint none → start no earlier than 2002-12-16 |
| 1663 | Help getting new level art in the game | 2003-01-06 → 2002-12-26 (-11d) | 2003-01-07 → 2002-12-27 (-11d) |  |  | 51d → 165.88d |  | constraint none → start no earlier than 2002-12-16 |
| 1664 | Help getting new missions in the game | 2003-01-07 → 2002-12-27 (-11d) | 2003-01-08 → 2002-12-30 (-9d) |  |  | 51d → 165.88d |  | constraint none → start no earlier than 2002-12-16 |
| 1665 | Improved command line parameters for artists to start in various world locations | 2003-01-08 → 2002-12-30 (-9d) | 2003-01-09 → 2002-12-31 (-9d) |  |  | 51d → 165.88d |  | constraint none → start no earlier than 2002-12-16 |
| 1666 | Mission icon scaling based on distance | 2003-01-09 → 2002-12-16 (-24d) | 2003-01-10 → 2002-12-17 (-24d) |  |  | 51d → 165.88d | 1665 → none | constraint start no earlier than 2002-10-15 → start no earlier than 2002-12-16 |
| 1667 | Help getting new level art in the game | 2003-01-10 → 2002-12-17 (-24d) | 2003-01-13 → 2002-12-18 (-26d) |  |  | 51d → 165.88d |  | constraint none → start no earlier than 2002-12-16 |
| 1668 | Mission restart correctly resets the players position, mission elements, and returns to mission instruction screen | 2003-01-13 → 2002-12-18 (-26d) | 2003-01-14 → 2002-12-19 (-26d) |  |  | 51d → 165.88d |  | constraint start no earlier than 2002-09-16 → start no earlier than 2002-12-16 |
| 1669 | Missions: Work with mission team to make sure they work | 2003-01-14 → 2002-12-19 (-26d) | 2003-01-15 → 2002-12-20 (-26d) |  |  | 51d → 165.88d |  | constraint none → start no earlier than 2002-12-16 |
| 1670 | Artist pipeline support | 2003-01-15 → 2002-12-20 (-26d) | 2003-01-16 → 2002-12-23 (-24d) |  |  | 51d → 165.88d |  | constraint none → start no earlier than 2002-12-16 |
| 1671 | Artist memory budget enforcement | 2003-01-16 → 2002-12-23 (-24d) | 2003-01-17 → 2002-12-24 (-24d) |  |  | 51d → 165.88d |  | constraint none → start no earlier than 2002-12-16 |
| 1672 | Engine sounds working correctly - Final pass | 2003-01-17 → 2002-12-24 (-24d) | 2003-01-20 → 2002-12-25 (-26d) |  |  | 51d → 165.88d |  | constraint start no earlier than 2002-12-18 → start no earlier than 2002-12-16 |
| 1673 | Reverb | 2003-01-20 → 2002-12-25 (-26d) | 2003-01-21 → 2002-12-26 (-26d) |  |  | 51d → 165.88d |  | constraint start no earlier than 2002-12-18 → start no earlier than 2002-12-16 |
| 1674 | Dialog system: eye blinking and mouth flapping | 2003-01-21 → 2002-12-26 (-26d) | 2003-01-22 → 2002-12-27 (-26d) |  |  | 51d → 165.88d |  | constraint start no earlier than 2002-12-18 → start no earlier than 2002-12-16 |
| 1675 | Music Events - on foot, street racing, etc. | 2003-01-22 → 2002-12-27 (-26d) | 2003-01-23 → 2002-12-30 (-24d) |  |  | 51d → 165.88d |  | constraint start no earlier than 2002-12-18 → start no earlier than 2002-12-16 |
| 1676 | Positional Sound | 2003-01-23 → 2002-12-30 (-24d) | 2003-01-24 → 2002-12-31 (-24d) |  |  | 51d → 165.88d |  | constraint start no earlier than 2002-12-18 → start no earlier than 2002-12-16 |
| 1677 | Audio for gag NISes | 2003-01-24 → 2002-12-16 (-39d) | 2003-01-27 → 2002-12-17 (-41d) |  |  | 51d → 168.88d | 1676 → none | constraint start no earlier than 2002-10-15 → start no earlier than 2002-12-16 |
| 1679 | Dialog system: eye blinking and mouth flapping | 2003-01-28 → 2002-12-18 (-41d) | 2003-01-29 → 2002-12-19 (-41d) |  |  | 51d → 168.88d |  | constraint none → start no earlier than 2002-12-16 |
| 1680 | Interior sound effects - Final pass | 2003-01-29 → 2002-12-19 (-41d) | 2003-01-30 → 2002-12-20 (-41d) |  |  | 51d → 168.88d |  | constraint none → start no earlier than 2002-12-16 |
| 1681 | PS2 mipmap tuning | 2003-01-30 → 2002-12-20 (-41d) | 2003-01-31 → 2002-12-23 (-39d) |  |  | 51d → 168.88d |  | constraint none → start no earlier than 2002-12-16 |
| 1682 | Addition of some final sound effects - Final pass | 2003-01-31 → 2002-12-23 (-39d) | 2003-02-03 → 2002-12-24 (-41d) |  |  | 51d → 168.88d |  | constraint none → start no earlier than 2002-12-16 |
| 1684 | Generic traffic audio | 2003-02-04 → 2002-12-25 (-41d) | 2003-02-05 → 2002-12-26 (-41d) |  |  | 51d → 168.88d |  | constraint none → start no earlier than 2002-12-16 |
| 1685 | Interior gag audio | 2003-02-05 → 2002-12-16 (-51d) | 2003-02-06 → 2002-12-17 (-51d) |  |  | 51d → 172.88d | 1684 → none | constraint start no earlier than 2002-10-15 → start no earlier than 2002-12-16 |
| 1686 | Mini driving games working | 2003-02-06 → 2002-12-17 (-51d) | 2003-02-07 → 2002-12-18 (-51d) |  |  | 51d → 172.88d |  | constraint none → start no earlier than 2002-12-16 |
| 1687 | FMVs playing in game (in between missions) | 2003-02-07 → 2002-12-18 (-51d) | 2003-02-10 → 2002-12-19 (-53d) |  |  | 51d → 172.88d |  | constraint none → start no earlier than 2002-12-16 |
| 1688 | General memory management ongoing tasks | 2003-02-10 → 2002-12-19 (-53d) | 2003-02-11 → 2002-12-20 (-53d) |  |  | 51d → 172.88d |  | constraint none → start no earlier than 2002-12-16 |
| 1689 | DSG cleanup / abstract base class for DSG objects | 2003-02-11 → 2002-12-16 (-57d) | 2003-02-12 → 2002-12-17 (-57d) |  |  | 51d → 169.88d | 1688 → none | constraint start no earlier than 2002-10-15 → start no earlier than 2002-12-16 |
| 1690 | General dynamic loading ongoing tasks | 2003-02-12 → 2002-12-17 (-57d) | 2003-02-13 → 2002-12-18 (-57d) |  |  | 51d → 169.88d |  | constraint none → start no earlier than 2002-12-16 |
| 1691 | Dymamic loading compression incorporated | 2003-02-13 → 2002-12-18 (-57d) | 2003-02-14 → 2002-12-19 (-57d) |  |  | 51d → 169.88d |  | constraint none → start no earlier than 2002-12-16 |
| 1692 | Load cancels working (dependent on P3D providing this) | 2003-02-14 → 2002-12-19 (-57d) | 2003-02-15 → 2002-12-20 (-57d) |  |  | 51d → 169.88d |  | constraint none → start no earlier than 2002-12-16 |
| 1693 | Final rendered trigger volumes | 2003-02-15 → 2002-12-20 (-57d) | 2003-02-17 → 2002-12-23 (-56d) |  |  | 51d → 169.88d |  | constraint none → start no earlier than 2002-12-16 |
| 1694 | Incorporation of P3D tool to auto-optimize meshes | 2003-02-17 → 2002-12-23 (-56d) | 2003-02-18 → 2002-12-24 (-56d) |  |  | 51d → 169.88d |  | constraint none → start no earlier than 2002-12-16 |
| 1695 | Boulevard heap integration | 2003-02-18 → 2002-12-24 (-56d) | 2003-02-19 → 2002-12-25 (-56d) |  |  | 51d → 169.88d |  | constraint none → start no earlier than 2002-12-16 |
| 1696 | Mission vehicle AI improvements | 2003-02-19 → 2002-12-16 (-65d) | 2003-02-20 → 2002-12-17 (-65d) |  |  | 51d → 173.88d | 1695 → none | constraint start no earlier than 2002-10-15 → start no earlier than 2002-12-16 |
| 1697 | Pedestrians diving out of the way | 2003-02-20 → 2002-12-17 (-65d) | 2003-02-21 → 2002-12-18 (-65d) |  |  | 51d → 173.88d |  | constraint none → start no earlier than 2002-12-16 |
| 1698 | Pedestrians hit by car response | 2003-02-21 → 2002-12-18 (-65d) | 2003-02-24 → 2002-12-19 (-67d) |  |  | 51d → 173.88d |  | constraint none → start no earlier than 2002-12-16 |
| 1699 | Car reset | 2003-02-24 → 2002-12-16 (-70d) | 2003-02-25 → 2002-12-17 (-70d) |  |  | 51d → 163.88d | 1698 → none | constraint start no earlier than 2002-10-15 → start no earlier than 2002-12-16 |
| 1700 | Car moves correctly on moveable platforms | 2003-02-25 → 2002-12-17 (-70d) | 2003-02-26 → 2002-12-18 (-70d) |  |  | 51d → 163.88d |  | constraint none → start no earlier than 2002-12-16 |
| 1701 | Dynamic object rest tests | 2003-02-26 → 2002-12-18 (-70d) | 2003-02-27 → 2002-12-19 (-70d) |  |  | 51d → 163.88d |  | constraint none → start no earlier than 2002-12-16 |
| 1702 | Full use of physics properties from the database | 2003-02-27 → 2002-12-19 (-70d) | 2003-02-28 → 2002-12-20 (-70d) |  |  | 51d → 163.88d |  | constraint none → start no earlier than 2002-12-16 |
| 1703 | Car door opens and closes properly on character entry/exit | 2003-02-28 → 2002-12-20 (-70d) | 2003-03-03 → 2002-12-23 (-70d) |  |  | 51d → 163.88d |  | constraint none → start no earlier than 2002-12-16 |
| 1704 | Improved collision response | 2003-03-03 → 2002-12-23 (-70d) | 2003-03-04 → 2002-12-24 (-70d) |  |  | 51d → 163.88d |  | constraint none → start no earlier than 2002-12-16 |
| 1705 | Death volume handling for car | 2003-03-04 → 2002-12-24 (-70d) | 2003-03-05 → 2002-12-25 (-70d) |  |  | 51d → 163.88d |  | constraint none → start no earlier than 2002-12-16 |
| 1706 | Simple car reset | 2003-03-05 → 2002-12-25 (-70d) | 2003-03-06 → 2002-12-26 (-70d) |  |  | 51d → 163.88d |  | constraint none → start no earlier than 2002-12-16 |
| 1707 | Dynamic object removal from DSG | 2003-03-06 → 2002-12-26 (-70d) | 2003-03-07 → 2002-12-27 (-70d) |  |  | 51d → 163.88d |  | constraint none → start no earlier than 2002-12-16 |
| 1708 | Disable character collision while character in the car | 2003-03-07 → 2002-12-27 (-70d) | 2003-03-10 → 2002-12-30 (-70d) |  |  | 51d → 163.88d |  | constraint none → start no earlier than 2002-12-16 |
| 1709 | Vehicle brake lights | 2003-03-10 → 2002-12-30 (-70d) | 2003-03-11 → 2002-12-31 (-70d) |  |  | 51d → 163.88d |  | constraint none → start no earlier than 2002-12-16 |
| 1710 | In car character animations | 2003-03-11 → 2002-12-31 (-70d) | 2003-03-12 → 2003-01-01 (-70d) |  |  | 51d → 163.88d |  | constraint none → start no earlier than 2002-12-16 |
| 1711 | Steep terrain handling | 2003-03-12 → 2003-01-01 (-70d) | 2003-03-13 → 2003-01-02 (-70d) |  |  | 51d → 163.88d |  | constraint none → start no earlier than 2002-12-16 |
| 1712 | Terrain type tags in the pipeline, with an interface to access them at runtime | 2003-03-13 → 2002-12-16 (-87d) | 2003-03-14 → 2002-12-17 (-87d) |  |  | 51d → 171.88d | 1711 → none | constraint start no earlier than 2002-10-15 → start no earlier than 2002-12-16 |
| 1713 | Lens flare / corona working | 2003-03-14 → 2002-12-17 (-87d) | 2003-03-15 → 2002-12-18 (-87d) |  |  | 51d → 171.88d |  | constraint none → start no earlier than 2002-12-16 |
| 1714 | Blobby shadows added for NPCs, pedestrians, non-player cars | 2003-03-15 → 2002-12-18 (-87d) | 2003-03-17 → 2002-12-19 (-88d) |  |  | 51d → 171.88d |  | constraint none → start no earlier than 2002-12-16 |
| 1715 | 2 weeks vacation | 2003-03-17 → 2002-12-19 (-88d) | 2003-03-18 → 2002-12-20 (-88d) |  |  | 51d → 171.88d |  | constraint none → start no earlier than 2002-12-16 |

| ID | Task | Start | Finish | Duration | Total float | Predecessors | Other |
| --- | --- | --- | --- | --- | --- | --- | --- |
| 1716 | Ongoing rendering effects task | 2003-03-18 → 2002-12-20 (-88d) | 2003-03-19 → 2002-12-23 (-86d) |  | 51d → 171.88d |  | constraint none → start no earlier than 2002-12-16 |
| 1717 | Better FMVs for Xbox and GC | 2003-03-19 → 2002-12-16 (-93d) | 2003-03-20 → 2002-12-17 (-93d) |  | 51d → 173.88d | 1716 → none | constraint start no earlier than 2002-10-15 → start no earlier than 2002-12-16 |
| 1718 | Create final logo FMVs for all 6 platforms | 2003-03-20 → 2002-12-17 (-93d) | 2003-03-21 → 2002-12-18 (-93d) |  | 51d → 173.88d |  | constraint none → start no earlier than 2002-12-16 |
| 1719 | Xbox ripping | 2003-03-21 → 2002-12-18 (-93d) | 2003-03-24 → 2002-12-19 (-95d) |  | 51d → 173.88d |  | constraint none → start no earlier than 2002-12-16 |
| 1720 | All water effects complete | 2003-03-24 → 2002-12-16 (-98d) | 2003-03-25 → 2002-12-17 (-98d) |  | 51d → 167.88d | 1719 → none | constraint start no earlier than 2002-10-15 → start no earlier than 2002-12-16 |
| 1721 | Different skid mark types working | 2003-03-25 → 2002-12-17 (-98d) | 2003-03-26 → 2002-12-18 (-98d) |  | 51d → 167.88d |  | constraint none → start no earlier than 2002-12-16 |
| 1722 | Button press flash effect | 2003-03-26 → 2002-12-18 (-98d) | 2003-03-27 → 2002-12-19 (-98d) |  | 51d → 167.88d |  | constraint none → start no earlier than 2002-12-16 |
| 1723 | Food icon effects | 2003-03-27 → 2002-12-19 (-98d) | 2003-03-28 → 2002-12-20 (-98d) |  | 51d → 167.88d |  | constraint none → start no earlier than 2002-12-16 |
| 1724 | Nuclear glow bubbles effects | 2003-03-28 → 2002-12-20 (-98d) | 2003-03-31 → 2002-12-23 (-98d) |  | 51d → 167.88d |  | constraint start no earlier than 2002-09-16 → start no earlier than 2002-12-16 |
| 1725 | Power coupling electrical effects | 2003-03-31 → 2002-12-23 (-98d) | 2003-04-01 → 2002-12-24 (-98d) |  | 51d → 167.88d |  | constraint none → start no earlier than 2002-12-16 |
| 1726 | Power coupling destroy effects | 2003-04-01 → 2002-12-24 (-98d) | 2003-04-02 → 2002-12-25 (-98d) |  | 51d → 167.88d |  | constraint none → start no earlier than 2002-12-16 |
| 1727 | World animation effects | 2003-04-02 → 2002-12-25 (-98d) | 2003-04-03 → 2002-12-26 (-98d) |  | 51d → 167.88d |  | constraint none → start no earlier than 2002-12-16 |
| 1728 | Effects iteration ongoing task | 2003-04-03 → 2002-12-26 (-98d) | 2003-04-04 → 2002-12-27 (-98d) |  | 51d → 167.88d |  | constraint none → start no earlier than 2002-12-16 |
| 1729 | Drivers in the taxi vehicles | 2003-04-04 → 2002-12-16 (-109d) | 2003-04-07 → 2002-12-17 (-111d) |  | 51d → 169.88d | 1728 → none | constraint start no earlier than 2002-10-15 → start no earlier than 2002-12-16 |
| 1730 | Car door opens and closes properly on character entry/exit | 2003-04-07 → 2002-12-17 (-111d) | 2003-04-08 → 2002-12-18 (-111d) |  | 51d → 169.88d |  | constraint none → start no earlier than 2002-12-16 |
| 1731 | Support for leaving the car door open if running on exit | 2003-04-08 → 2002-12-18 (-111d) | 2003-04-09 → 2002-12-19 (-111d) |  | 51d → 169.88d |  | constraint none → start no earlier than 2002-12-16 |
| 1732 | Death volume handling for on foot | 2003-04-09 → 2002-12-19 (-111d) | 2003-04-10 → 2002-12-20 (-111d) |  | 51d → 169.88d |  | constraint none → start no earlier than 2002-12-16 |
| 1733 | In car character animations | 2003-04-10 → 2002-12-20 (-111d) | 2003-04-11 → 2002-12-23 (-109d) |  | 51d → 169.88d |  | constraint none → start no earlier than 2002-12-16 |
| 1734 | Currency system incorporated into game | 2003-04-11 → 2002-12-23 (-109d) | 2003-04-14 → 2002-12-24 (-111d) |  | 51d → 169.88d |  | constraint none → start no earlier than 2002-12-16 |
| 1735 | On foot gameplay ongoing task | 2003-04-14 → 2002-12-24 (-111d) | 2003-04-15 → 2002-12-25 (-111d) |  | 51d → 169.88d |  | constraint none → start no earlier than 2002-12-16 |
| 1736 | 2D mini games investigation (spend 3-4 days determining what is possible) | 2003-04-15 → 2002-12-16 (-120d) | 2003-04-16 → 2002-12-17 (-120d) |  | 51d → 169.88d | 1735 → none | constraint start no earlier than 2002-10-15 → start no earlier than 2002-12-16 |
| 1737 | Integration of stylized HUD map | 2003-04-16 → 2002-12-17 (-120d) | 2003-04-17 → 2002-12-18 (-120d) |  | 51d → 169.88d |  | constraint none → start no earlier than 2002-12-16 |
| 1738 | Front end and HUD work for currency | 2003-04-17 → 2002-12-18 (-120d) | 2003-04-18 → 2002-12-19 (-120d) |  | 51d → 169.88d |  | constraint none → start no earlier than 2002-12-16 |
| 1739 | Mini driving games presentation and HUD screens | 2003-04-18 → 2002-12-19 (-120d) | 2003-04-21 → 2002-12-20 (-122d) |  | 51d → 169.88d |  | constraint start no earlier than 2002-09-16 → start no earlier than 2002-12-16 |
| 1740 | Mission presentation HUD art iteration ongoing task | 2003-04-21 → 2002-12-20 (-122d) | 2003-04-22 → 2002-12-23 (-120d) |  | 51d → 169.88d |  | constraint none → start no earlier than 2002-12-16 |
| 1741 | Can load/save games on memory card | 2003-04-22 → 2002-12-23 (-120d) | 2003-04-23 → 2002-12-24 (-120d) |  | 51d → 169.88d |  | constraint none → start no earlier than 2002-12-16 |
| 1742 | Memory card screens | 2003-04-23 → 2002-12-24 (-120d) | 2003-04-24 → 2002-12-25 (-120d) |  | 51d → 169.88d |  | constraint none → start no earlier than 2002-12-16 |
| 1743 | Milestone 16 - (Feb 15th) (Temp) |  | 2003-05-20 → 2003-01-28 (-112d) | 90d? → 8d? | 33d → 145.88d |  | was named Milestone 16 - Beta (Feb 28th) (Temp) |
| 1827 | **Milestone 17 - (March 14th)** | 2003-03-03 → 2003-02-20 (-11d) | 2003-07-04 → 2003-04-02 (-93d) | 90d? → 31d? | 0d → 97d |  | was named Milestone 17 - Final (March 30th) (Temp) |
| 1828 | Improved race ranking results | 2003-03-03 → 2003-02-20 (-11d) | 2003-03-13 → 2003-02-21 (-20d) | 8d → 1d | 0d → 113.88d |  | was named Death volume support in the world builder tool (complete by October 25); constraint start no earlier than 2003-03-03 → start no earlier than 2003-02-20 |
| 1829 | GameCube issues | 2003-03-13 → 2003-02-21 (-20d) | 2003-03-14 → 2003-02-24 (-18d) |  | 0d → 113.88d |  | was named Missions: Work with mission team to make sure they work; constraint none → start no earlier than 2003-02-20 |
| 1830 | Complete support for forced vehicle missions | 2003-03-14 → 2003-02-24 (-18d) | 2003-03-15 → 2003-02-25 (-18d) |  | 0d → 113.88d |  | was named Camera collisions: on foot; constraint none → start no earlier than 2003-02-20 |
| 1831 | Delegate mission loading and playing bugs | 2003-03-15 → 2003-02-25 (-18d) | 2003-03-17 → 2003-02-26 (-19d) |  | 0d → 113.88d |  | was named Camera collisions: driving; constraint none → start no earlier than 2003-02-20 |
| 1832 | Integrate changes from ATG | 2003-03-17 → 2003-02-26 (-19d) | 2003-03-18 → 2003-02-27 (-19d) |  | 0d → 113.88d |  | was named Camera collisions: interiors; constraint none → start no earlier than 2003-02-20 |
| 1833 | Super Off Road mini game | 2003-03-18 → 2003-02-27 (-19d) | 2003-03-19 → 2003-02-28 (-19d) |  | 0d → 113.88d |  | was named Camera shake; constraint none → start no earlier than 2003-02-20 |
| 1834 | Hybrid mission support (dump and deliver objectives and associated AI) | 2003-03-19 → 2003-02-28 (-19d) | 2003-03-20 → 2003-03-03 (-17d) |  | 0d → 113.88d |  | was named Interior rail camera improvements; constraint none → start no earlier than 2003-02-20 |
| 1835 | Figure out how to fit characters in traffic cars | 2003-03-20 → 2003-03-03 (-17d) | 2003-03-21 → 2003-03-04 (-17d) |  | 0d → 113.88d |  | was named Improved camera setup for mission conversations; constraint none → start no earlier than 2003-02-20 |
| 1836 | Level start walk animation presentation | 2003-03-21 → 2003-03-04 (-17d) | 2003-03-24 → 2003-03-05 (-19d) |  | 0d → 113.88d |  | was named Help getting new level art in the game; constraint none → start no earlier than 2003-02-20 |
| 1837 | Teleporting support | 2003-03-24 → 2003-03-05 (-19d) | 2003-03-25 → 2003-03-06 (-19d) |  | 0d → 113.88d |  | was named Help getting new missions in the game; constraint none → start no earlier than 2003-02-20 |
| 1838 | Brightness control support | 2003-03-25 → 2003-03-06 (-19d) | 2003-03-26 → 2003-03-07 (-19d) |  | 0d → 113.88d |  | was named Improved command line parameters for artists to start in various world locations; constraint none → start no earlier than 2003-02-20 |
| 1842 | Art-related mission problems | 2003-03-26 → 2003-02-20 (-34d) | 2003-03-27 → 2003-02-21 (-34d) |  | 0d → 120.88d | 1838 → none | was named Mission icon scaling based on distance; constraint start no earlier than 2002-10-15 → start no earlier than 2003-02-20 |
| 1843 | Art-related level art problems | 2003-03-27 → 2003-02-21 (-34d) | 2003-03-28 → 2003-02-24 (-32d) |  | 0d → 120.88d |  | was named Help getting new level art in the game; constraint none → start no earlier than 2003-02-20 |
| 1844 | Wrench functionality | 2003-03-28 → 2003-02-24 (-32d) | 2003-03-31 → 2003-02-25 (-34d) |  | 0d → 120.88d |  | was named Mission restart correctly resets the players position, mission elements, and returns to mission instruction screen; constraint start no earlier than 2002-09-16 → start no earlier than 2003-02-20 |
| 1845 | World animation memory usage audit | 2003-03-31 → 2003-02-25 (-34d) | 2003-04-01 → 2003-02-26 (-34d) |  | 0d → 120.88d |  | was named Missions: Work with mission team to make sure they work; constraint none → start no earlier than 2003-02-20 |
| 1846 | Cleanup mission heap usage so that it can be easily emptied for FMV use in-game | 2003-04-01 → 2003-02-26 (-34d) | 2003-04-02 → 2003-02-27 (-34d) |  | 0d → 120.88d |  | was named Artist pipeline support; constraint none → start no earlier than 2003-02-20 |
| 1847 | Race circuit special geometry loading and rendering | 2003-04-02 → 2003-02-27 (-34d) | 2003-04-03 → 2003-02-28 (-34d) |  | 0d → 120.88d |  | was named Artist memory budget enforcement; constraint none → start no earlier than 2003-02-20 |
| 1849 | Ducking | 2003-01-30 → 2003-02-20 (+21d) | 2003-02-04 → 2003-02-25 (+21d) | 3d → 4d | 85.38d → 97d | Add events/code for additional Sound FX → none | constraint start no earlier than 2003-01-22 → start no earlier than 2003-02-20 |
| 1853 | Answering machine dialog when using a disabled phone booth | 2003-04-03 → 2003-03-18 (-16d) | 2003-04-04 → 2003-03-18 (-17d) | 1d? → 1d | 0d → 97d | 1847 → 1852 | was named Audio for gag NISes; constraint start no earlier than 2002-10-15 → start no earlier than 2003-02-20 |
| 1854 | Terrain based sounds (in car and on foot) | 2003-04-04 → 2003-03-19 (-16d) | 2003-04-07 → 2003-03-19 (-19d) | 1d? → 1d | 0d → 97d |  | was named Engine sounds working correctly - Final pass; constraint none → start no earlier than 2003-02-20 |
| 1855 | Positional collision sound | 2003-04-07 → 2003-03-20 (-18d) | 2003-04-08 → 2003-03-21 (-18d) | 1d? → 2d | 0d → 97d |  | was named Dialog system: eye blinking and mouth flapping; constraint none → start no earlier than 2003-02-20 |
| 1856 | Dialog script commands requested by designers | 2003-04-09 → 2003-03-24 (-16d) | 2003-04-10 → 2003-03-25 (-16d) | 1d? → 2d | 0d → 97d | Interior sound effects - Final pass → 1855 | was named PS2 mipmap tuning; constraint none → start no earlier than 2003-02-20 |
| 1859 | Xbox ripping | 2003-02-21 → 2003-03-28 (+35d) | 2003-02-28 → 2003-04-01 (+32d) | 5d → 3d | 85.38d → 97d | Integration week → 1858 | constraint start no earlier than 2003-01-24 → start no earlier than 2003-02-20 |
| 1863 | Eliminate all draw order bugs | 2003-04-21 → 2003-02-21 (-59d) | 2003-04-22 → 2003-02-24 (-57d) |  | 0d → 116.88d | General memory management ongoing tasks → 1862 | was named DSG cleanup / abstract base class for DSG objects; constraint start no earlier than 2002-10-15 → start no earlier than 2003-02-20 |
| 1864 | Eliminate occurrences of draw culling pop-in | 2003-04-22 → 2003-02-24 (-57d) | 2003-04-23 → 2003-02-25 (-57d) |  | 0d → 116.88d |  | was named General dynamic loading ongoing tasks; constraint none → start no earlier than 2003-02-20 |
| 1865 | Eliminate occurrences of load pop-in (verify optimal load trigger placement, investigate impact of disc layout, DVD performance, and compression, etc.) | 2003-04-23 → 2003-02-25 (-57d) | 2003-04-24 → 2003-02-26 (-57d) |  | 0d → 116.88d |  | was named Dymamic loading compression incorporated; constraint none → start no earlier than 2003-02-20 |
| 1866 | Vehicle art optimizations for performance improvement (reduce context switches) | 2003-04-24 → 2003-02-26 (-57d) | 2003-04-25 → 2003-02-27 (-57d) |  | 0d → 116.88d |  | was named Load cancels working (dependent on P3D providing this); constraint none → start no earlier than 2003-02-20 |
| 1867 | Load time optimizations (compression, load during level intro cam, optimize amount loading for mission select, etc) | 2003-04-25 → 2003-02-27 (-57d) | 2003-04-28 → 2003-02-28 (-59d) |  | 0d → 116.88d |  | was named Final rendered trigger volumes; constraint none → start no earlier than 2003-02-20 |
| 1868 | Fake flashing light effect on back of player’s vehicle when being chased | 2003-04-28 → 2003-02-28 (-59d) | 2003-04-29 → 2003-03-03 (-57d) |  | 0d → 116.88d |  | was named Incorporation of P3D tool to auto-optimize meshes; constraint none → start no earlier than 2003-02-20 |
| 1869 | PS2 CATS scan | 2003-04-29 → 2003-03-03 (-57d) | 2003-04-30 → 2003-03-04 (-57d) |  | 0d → 116.88d |  | was named Boulevard heap integration; constraint none → start no earlier than 2003-02-20 |
| 1873 | Vehicle AI improvements (working with Nigel) | 2003-04-30 → 2003-02-20 (-69d) | 2003-05-01 → 2003-02-21 (-69d) |  | 0d → 116.88d | 1869 → none | was named Mission vehicle AI improvements; constraint start no earlier than 2002-10-15 → start no earlier than 2003-02-20 |
| 1874 | Can surf on traffic cars | 2003-05-01 → 2003-02-21 (-69d) | 2003-05-02 → 2003-02-24 (-67d) |  | 0d → 116.88d |  | was named Pedestrians diving out of the way; constraint none → start no earlier than 2003-02-20 |
| 1875 | Improved NPC character behaviour (they walk around) | 2003-05-02 → 2003-02-24 (-67d) | 2003-05-05 → 2003-02-25 (-69d) |  | 0d → 116.88d |  | was named Pedestrians hit by car response; constraint none → start no earlier than 2003-02-20 |
| 1884 | Improved jumps | 2003-05-05 → 2003-02-20 (-74d) | 2003-05-06 → 2003-02-21 (-74d) |  | 0d → 113.88d | 1875 → none | was named Car reset; constraint start no earlier than 2002-10-15 → start no earlier than 2003-02-20 |
| 1885 | Remove destroyed AI cars from mission | 2003-05-06 → 2003-02-21 (-74d) | 2003-05-07 → 2003-02-24 (-72d) |  | 0d → 113.88d |  | was named Car moves correctly on moveable platforms; constraint none → start no earlier than 2003-02-20 |
| 1886 | Fix large car collision impulses | 2003-05-07 → 2003-02-24 (-72d) | 2003-05-08 → 2003-02-25 (-72d) |  | 0d → 113.88d |  | was named Dynamic object rest tests; constraint none → start no earlier than 2003-02-20 |
| 1888 | Camera collision with walls and ground (with Cary) | 2003-05-08 → 2003-02-26 (-71d) | 2003-05-09 → 2003-02-27 (-71d) |  | 0d → 113.88d | 1886 → 1887 | was named Full use of physics properties from the database; constraint none → start no earlier than 2003-02-20 |
| 1889 | Low speed steering lag adjustments | 2003-05-12 → 2003-02-27 (-74d) | 2003-05-13 → 2003-02-28 (-74d) |  | 0d → 113.88d | Car door opens and closes properly on character entry/exit → 1888 | was named Improved collision response; constraint none → start no earlier than 2003-02-20 |
| 1890 | Car auto-reset | 2003-05-15 → 2003-02-28 (-76d) | 2003-05-16 → 2003-03-03 (-74d) |  | 0d → 113.88d | Simple car reset → 1889 | was named Dynamic object removal from DSG; constraint none → start no earlier than 2003-02-20 |
| 1891 | Improved vehicle-vehicle collisions | 2003-05-19 → 2003-03-03 (-77d) | 2003-05-20 → 2003-03-04 (-77d) |  | 0d → 113.88d | Disable character collision while character in the car → 1890 | was named Vehicle brake lights; constraint none → start no earlier than 2003-02-20 |
| 1892 | Get driver and passenger skeletons to react to movement of the car | 2003-05-20 → 2003-03-04 (-77d) | 2003-05-21 → 2003-03-05 (-77d) |  | 0d → 113.88d |  | was named In car character animations; constraint none → start no earlier than 2003-02-20 |

| ID | Task | Start | Finish | Duration | Complete | Total float | Predecessors | Other |
| --- | --- | --- | --- | --- | --- | --- | --- | --- |
| 1893 | Car teeter mechanism (for righting the car when on its size) | 2003-05-21 → 2003-03-05 (-77d) | 2003-05-22 → 2003-03-06 (-77d) |  |  | 0d → 113.88d |  | was named Steep terrain handling; constraint none → start no earlier than 2003-02-20; resources Greg Mayer → Greg Mayer [80%] |
| 1909 | Ability to play movies during the game | 2003-05-22 → 2003-02-20 (-91d) | 2003-05-23 → 2003-02-21 (-91d) |  |  | 0d → 118.88d | 1893 → none | was named Terrain type tags in the pipeline, with an interface to access them at runtime; constraint start no earlier than 2002-10-15 → start no earlier than 2003-02-20 |
| 1910 | In-game movie presentation, including fading and brief HUD reload screen | 2003-05-23 → 2003-02-21 (-91d) | 2003-05-26 → 2003-02-24 (-91d) |  |  | 0d → 118.88d |  | was named Lens flare / corona working; constraint none → start no earlier than 2003-02-20 |
| 1911 | Disable in-game simulation when showing in-game FMV | 2003-05-26 → 2003-02-24 (-91d) | 2003-05-27 → 2003-02-25 (-91d) |  |  | 0d → 118.88d |  | was named Blobby shadows added for NPCs, pedestrians, non-player cars; constraint none → start no earlier than 2003-02-20 |
| 1912 | Crate art review (memory, frame rate) | 2003-05-27 → 2003-02-25 (-91d) | 2003-05-28 → 2003-02-26 (-91d) |  |  | 0d → 118.88d |  | was named 2 weeks vacation; constraint none → start no earlier than 2003-02-20 |
| 1913 | FMV related out of memory bugs | 2003-05-28 → 2003-02-26 (-91d) | 2003-05-29 → 2003-02-27 (-91d) |  |  | 0d → 118.88d |  | was named Ongoing rendering effects task; constraint none → start no earlier than 2003-02-20 |
| 1918 | Thread safe group IDs and flags | 2003-05-29 → 2003-02-20 (-98d) | 2003-05-30 → 2003-02-21 (-98d) |  |  | 0d → 121.88d | 1913 → none | was named Better FMVs for Xbox and GC; constraint start no earlier than 2002-10-15 → start no earlier than 2003-02-20 |
| 1919 | Command line parameters read from text file | 2003-05-30 → 2003-02-21 (-98d) | 2003-06-02 → 2003-02-24 (-98d) |  |  | 0d → 121.88d |  | was named Create final logo FMVs for all 6 platforms; constraint none → start no earlier than 2003-02-20 |
| 1920 | Firewire | 2003-06-02 → 2003-02-24 (-98d) | 2003-06-03 → 2003-02-25 (-98d) |  |  | 0d → 121.88d |  | was named Xbox ripping; constraint none → start no earlier than 2003-02-20 |
| 1924 | Wasp system, including wasp AI | 2003-06-03 → 2003-02-20 (-103d) | 2003-06-04 → 2003-02-21 (-103d) |  |  | 0d → 120.88d | 1920 → none | was named All water effects complete; constraint start no earlier than 2002-10-15 → start no earlier than 2003-02-20 |
| 1925 | Wasp skeleton art review | 2003-06-04 → 2003-02-21 (-103d) | 2003-06-05 → 2003-02-24 (-101d) |  |  | 0d → 120.88d |  | was named Different skid mark types working; constraint none → start no earlier than 2003-02-20 |
| 1926 | Ongoing special effects | 2003-06-05 → 2003-02-24 (-101d) | 2003-06-06 → 2003-02-25 (-101d) |  |  | 0d → 120.88d |  | was named Button press flash effect; constraint none → start no earlier than 2003-02-20 |
| 1927 | Improved lens flare implementation from ATG | 2003-06-06 → 2003-02-25 (-101d) | 2003-06-09 → 2003-02-26 (-103d) |  |  | 0d → 120.88d |  | was named Food icon effects; constraint none → start no earlier than 2003-02-20 |
| 1928 | State prop integration | 2003-06-09 → 2003-02-26 (-103d) | 2003-06-10 → 2003-02-27 (-103d) |  |  | 0d → 120.88d |  | was named Nuclear glow bubbles effects; constraint start no earlier than 2002-09-16 → start no earlier than 2003-02-20 |
| 1929 | Fix excessive size in particle systems (e.g. shrubs) | 2003-06-10 → 2003-02-27 (-103d) | 2003-06-11 → 2003-02-28 (-103d) |  |  | 0d → 120.88d |  | was named Power coupling electrical effects; constraint none → start no earlier than 2003-02-20 |
| 1930 | All code needed for final mission, including tractor beam | 2003-06-11 → 2003-02-28 (-103d) | 2003-06-12 → 2003-03-03 (-101d) |  |  | 0d → 120.88d |  | was named Power coupling destroy effects; constraint none → start no earlier than 2003-02-20 |
| 1931 | Vehicle AI improvements (working with Dusit) | 2003-06-16 → 2003-02-20 (-116d) | 2003-06-17 → 2003-02-21 (-116d) |  |  | 0d → 113.88d | Effects iteration ongoing task → none | was named Drivers in the taxi vehicles; constraint start no earlier than 2002-10-15 → start no earlier than 2003-02-20 |
| 1932 | Optimize choreo memory usage (for both characters and vehicles) | 2003-06-17 → 2003-02-21 (-116d) | 2003-06-18 → 2003-02-24 (-114d) |  |  | 0d → 113.88d |  | was named Car door opens and closes properly on character entry/exit; constraint none → start no earlier than 2003-02-20 |
| 1933 | Double-jump-slam and jump-kick animations work as designed | 2003-06-18 → 2003-02-24 (-114d) | 2003-06-19 → 2003-02-25 (-114d) |  |  | 0d → 113.88d |  | was named Support for leaving the car door open if running on exit; constraint none → start no earlier than 2003-02-20 |
| 1934 | Complete driver and passenger animations | 2003-06-19 → 2003-02-25 (-114d) | 2003-06-20 → 2003-02-26 (-114d) |  |  | 0d → 113.88d |  | was named Death volume handling for on foot; constraint none → start no earlier than 2003-02-20 |
| 1935 | Interactive gags dyna load based on distance | 2003-06-20 → 2003-02-26 (-114d) | 2003-06-23 → 2003-02-27 (-116d) |  |  | 0d → 113.88d |  | was named In car character animations; constraint none → start no earlier than 2003-02-20 |
| 1936 | Fix outstanding interior bugs | 2003-06-23 → 2003-02-27 (-116d) | 2003-06-24 → 2003-02-28 (-116d) |  |  | 0d → 113.88d |  | was named Currency system incorporated into game; constraint none → start no earlier than 2003-02-20 |
| 1937 | On-foot damage animations (falling from long distances, getting hit) | 2003-06-24 → 2003-02-28 (-116d) | 2003-06-25 → 2003-03-03 (-114d) |  |  | 0d → 113.88d |  | was named On foot gameplay ongoing task; constraint none → start no earlier than 2003-02-20 |
| 1945 | Front end changes | 2003-06-25 → 2003-02-20 (-125d) | 2003-06-26 → 2003-02-21 (-125d) |  |  | 0d → 111.88d | 1937 → none | was named 2D mini games investigation (spend 3-4 days determining what is possible); constraint start no earlier than 2002-10-15 → start no earlier than 2003-02-20 |
| 1946 | Several specific HUD presentation changes (e.g. card collection, coin collection) | 2003-06-26 → 2003-02-21 (-125d) | 2003-06-27 → 2003-02-24 (-123d) |  |  | 0d → 111.88d |  | was named Integration of stylized HUD map; constraint none → start no earlier than 2003-02-20 |
| 1947 | New HUD implementation | 2003-06-27 → 2003-02-24 (-123d) | 2003-06-30 → 2003-02-25 (-125d) |  |  | 0d → 111.88d |  | was named Front end and HUD work for currency; constraint none → start no earlier than 2003-02-20 |
| 1948 | Answering machine behaviour when using phone booth during mission | 2003-06-30 → 2003-02-25 (-125d) | 2003-07-01 → 2003-02-26 (-125d) |  |  | 0d → 111.88d |  | was named Mini driving games presentation and HUD screens; constraint start no earlier than 2002-09-16 → start no earlier than 2003-02-20 |
| 1949 | Pause menu changes | 2003-07-01 → 2003-02-26 (-125d) | 2003-07-02 → 2003-02-27 (-125d) |  |  | 0d → 111.88d |  | was named Mission presentation HUD art iteration ongoing task; constraint none → start no earlier than 2003-02-20 |
| 1950 | New scrapbook implementation | 2003-07-02 → 2003-02-27 (-125d) | 2003-07-03 → 2003-02-28 (-125d) |  |  | 0d → 111.88d |  | was named Can load/save games on memory card; constraint none → start no earlier than 2003-02-20 |
| 1951 | New reward UI (screens for skins and vehicles, etc) | 2003-07-03 → 2003-02-28 (-125d) | 2003-07-04 → 2003-03-03 (-123d) |  |  | 0d → 111.88d |  | was named Memory card screens; constraint none → start no earlier than 2003-02-20 |
| 2379 | **Sound** |  |  | 262d? → 263d? |  | 57d → 87.88d |  | was named Sound Tasks |
| 2380 | **Front end brightness control** |  |  |  |  |  |  | was named Milestone 13 |
| 2383 | **Memory card icons** |  |  |  |  | 146d → 176.88d |  | was named Milestone 14 |
| 2394 | **Mission objective text display** |  |  |  |  | 123d → 153.88d |  | was named Milestone 15 |
| 2401 | **Changes to audio options menu** |  |  |  |  | 100d → 130.88d |  | was named Milestone 16 |
| 2402 | **Bonus game HUD** |  |  |  |  | 120.12d → 151d |  | was named Positional Sound: |
| 2403 | Bonus game UI |  |  |  |  | 120.12d → 151d |  | was named Fixed Objects, fountains, etc.. |
| 2404 | Fix lighting on Homer in front end |  |  |  |  | 120.12d → 151d |  | was named AI Traffic - engine & car horns |
| 2405 | Make sure you can always call your default level vehicle from the phone booth |  |  |  |  | 120.12d → 151d |  | was named Dialogue ? (selected lines ie. gags) |
| 2406 | Final cheat implementation (only shipping cheats #ifdef FINAL) |  |  |  |  | 120.12d → 151d |  | was named Interactive props (implement & test) |
| 2423 | **Milestone 17** |  |  | 239d? → 240d? | 17% → 14% | 80d → 110.88d |  |  |
| 2436 | **Music - Missions** |  | 2003-02-18 → 2003-02-24 (+6d) | 1.12d? → 6d? |  | 99d → 125d |  |  |
| 2448 | **Sound Fx content** |  |  | 17d? → 17.12d? | 23% → 20% | 80d → 110.88d |  |  |
| 2449 | misc. sounds - coins, door bells, platforms moving, etc. - 1st pass |  | 2003-02-21 → 2003-02-24 (+3d) | 1d? → 2d? |  | 96d → 125.88d |  | resources Roman Tomazin → Roman Tomazin [50%]; Cory Hawthorne [50%] |
| 2456 | **Engine Sounds** |  |  | 219.88d? → 220.88d? |  | 99.12d → 130d |  |  |
| 2462 | **Milestone 18 - Alpha** | 2003-01-20 A |  |  | 0% → 27% | 57d → 87.88d |  |  |
| 2491 | Recording |  |  |  |  | 120.12d → 151d |  | resources Marc Baril [80%] → TBA [80%] |
| 2528 | **Milestone Delivery Date** | 2003-03-15 → 2003-04-15 (+31d) | 2003-03-17 → 2003-04-16 (+30d) |  |  | 79d → 87.88d |  | constraint start no earlier than 2003-03-15 → none |
| 2555 | **Dropped or Moved Tasks** |  |  | 154.88d? → 155.88d? |  | 164.12d → 195d |  |  |
| 2556 | **Milestone 13** |  |  | 141.88d? → 142.88d? |  | 177.12d → 208d |  |  |
